# caCORE Tools Project

How a schedule from MS Project changed from version to version. A marks actual dates.

## Version 1 (data date 2012-07-27, saved 2013-07-26)

Note of the change: Adding caCORE project schedule plan

| ID | WBS | Task | Duration | Start | Finish | Predecessors | Complete | Total float | Constraint |
| --- | --- | --- | --- | --- | --- | --- | --- | --- | --- |
| 1 | 1 | **caCORE Tools Project** | 419d? | 2012-02-06 A | 2013-09-30 |  | 88% | 0d |  |
| 2 | 1.1 | **Milestones** | 413d? | 2012-02-13 A | 2013-09-30 |  | 81% | 1d |  |
| 3 |  | Start Project | 0d | 2012-02-13 A | 2012-02-13 A |  | 100% |  |  |
| 4 |  | Kickoff Meeting | 0d | 2012-03-02 A | 2012-03-02 A |  | 100% |  | start no earlier than 2012-03-02 |
| 5 |  | Finalize PMP | 39d | 2012-06-27 A | 2012-08-23 A |  | 100% |  | start no earlier than 2012-05-01 |
| 6 |  | Tech Stack Upgrades Release | 0d | 2012-04-20 A | 2012-04-20 A |  | 100% |  | start no earlier than 2012-04-20 |
| 7 |  | UPT Enhancements (CSM5.0) Release | 106d | 2012-04-25 A | 2012-09-27 A |  | 100% |  | start no earlier than 2012-04-25 |
| 8 |  | SDK RESTFul implementation (SDK 4.5) Release | 103d | 2012-04-30 A | 2012-09-27 A |  | 100% |  | start no earlier than 2012-04-30 |
| 9 |  | Semantic SDK 4.5.1 Release | 109d | 2012-10-02 A | 2013-03-14 A |  | 100% |  | finish no earlier than 2013-03-14 |
| 10 |  | SDK RESTFul Wrapper 1.0 Release | 109d | 2012-10-02 A | 2013-03-14 A |  | 100% |  | finish no earlier than 2013-03-14 |
| 11 |  | CSM/UPT 5.1 Release | 55d? | 2013-07-15 A | 2013-09-27 |  |  | 1d | finish no earlier than 2013-09-30 |
| 12 |  | AndroMDA pilot Project | 55d? | 2013-07-15 | 2013-09-30 |  |  | 1d | finish no earlier than 2013-09-30 |
| 13 |  | Deliverables Review | 0d | 2013-03-14 | 2013-03-15 |  |  | 142d | finish no earlier than 2013-03-15 |
| 14 |  | Project Completion | 0d | 2013-03-15 | 2013-03-15 | 13 |  | 142d | start no earlier than 2013-03-15 |
| 15 | 1.2 | **Tasks** | 419d? | 2012-02-06 A | 2013-09-30 |  | 90% | 0d |  |
| 16 | 1.2.1 | **Program Management** | 216d | 2012-05-01 A | 2013-03-15 A |  | 100% |  |  |
| 17 |  | Define Program Plan (Draft) | 19d | 2012-05-01 A | 2012-05-29 A |  | 100% |  | finish no earlier than 2012-05-29 |
| 18 |  | Finalize Program Plan | 9d | 2012-06-15 A | 2012-06-28 A |  | 100% |  | start no earlier than 2012-06-15 |
| 19 |  | Project Summary Report | 9d | 2013-03-01 A | 2013-03-15 A |  | 100% |  | finish no earlier than 2013-03-15 |
| 20 | 1.2.2 | **Operations and maintenance support** | 363d? | 2012-02-06 A | 2013-07-15 |  | 95% | 56d |  |
| 21 | 1.2.2.1 | **Bug/Issue fix,Enhancement and Support** | 218d? | 2012-08-31 A | 2013-07-15 A |  | 100% |  |  |
| 22 | 1.2.2.1.1 | **AppScan Security Fix 4.2.3.1** | 218d? | 2012-08-31 A | 2013-07-15 A |  | 100% |  |  |
| 23 |  | ARC/PTE | 0d? | 2012-08-31 A | 2012-08-31 A |  | 100% |  | start no earlier than 2012-08-31 |
| 24 |  | Code development | 0d? | 2012-09-24 A | 2012-09-24 A | 23 | 100% |  | start no earlier than 2012-09-24 |
| 25 |  | QA Support | 17d? | 2012-10-03 A | 2012-10-26 A | 24 | 100% |  | finish no earlier than 2012-10-26 |
| 26 |  | Documentation | 1d | 2012-10-29 A | 2012-10-30 A | 25 | 100% |  | start no earlier than 2012-10-29 |
| 27 | 1.2.2.1.1.5 | **QA Tasks** | 85d? | 2012-09-26 A | 2013-02-01 A |  | 100% |  |  |
| 28 |  | QA environment setup | 3d? | 2012-09-26 A | 2012-10-03 A | 24 | 100% |  | finish no earlier than 2012-10-03 |
| 29 |  | QA | 4d? | 2012-10-03 A | 2012-10-09 A | 28 | 100% |  | finish no earlier than 2012-10-05 |
| 30 |  | Stage environment setup | 2d? | 2012-12-10 A | 2012-12-12 A | 29 | 100% |  | finish no earlier than 2012-12-12 |
| 31 |  | AppScan - Stage box | 5d | 2012-12-17 A | 2012-12-28 A | 30 | 100% |  | finish no earlier than 2012-12-28 |
| 32 |  | Fix App Scan reported issues | 1d | 2013-01-07 A | 2013-01-08 A |  | 100% |  | finish no earlier than 2013-01-04 |
| 33 |  | QA App scan fixes | 3d | 2013-01-14 A | 2013-01-18 A |  | 100% |  | finish no earlier than 2013-01-16 |
| 34 |  | QA Peer Review | 0d? | 2013-01-22 A | 2013-01-22 A | 33 | 100% |  | finish no earlier than 2013-01-22 |
| 35 |  | Stage Deployment | 1d? | 2013-01-23 A | 2013-01-24 A | 34 | 100% |  | finish no earlier than 2013-01-24 |
| 36 |  | App Scan - Stage box | 3d | 2013-01-25 A | 2013-02-01 A |  | 100% |  | finish no earlier than 2013-02-01 |
| 37 |  | Production environment setup | 4d? | 2013-02-01 A | 2013-02-07 A | 31, 36 | 100% |  | start no earlier than 2013-01-07 |
| 38 |  | Deployment into production | 4d | 2013-02-08 A | 2013-02-14 A | 37 | 100% |  | start no earlier than 2013-01-28 |
| 39 |  | Release preparation & Announcement | 106d? | 2013-02-15 A | 2013-07-15 A | 38 | 100% |  | finish no earlier than 2013-07-15 |
| 40 | 1.2.2.1.1.9 | **Struts Security Issue Fix** | 22d? | 2012-10-12 A | 2012-11-13 A |  | 100% |  |  |
| 41 |  | SDK 4.1.3 | 14d | 2012-10-12 A | 2012-11-01 A |  | 100% |  |  |
| 42 |  | Documentation | 1d | 2012-11-12 A | 2012-11-13 A |  | 100% |  | start no earlier than 2012-11-12 |
| 43 |  | QA Support | 5d? | 2012-11-02 A | 2012-11-09 A |  | 100% |  | finish no earlier than 2012-11-09 |
| 44 |  | QA | 5d? | 2012-11-02 A | 2012-11-09 A |  | 100% |  | finish no earlier than 2012-11-09 |
| 45 |  | Support ObjectCart | 25d? | 2013-01-10 A | 2013-02-15 A |  | 100% |  | finish no earlier than 2013-02-15 |
| 46 |  | Gforge migration | 23d? | 2012-08-27 | 2012-09-28 |  |  | 255d | finish no earlier than 2012-09-28 |
| 47 |  | Presentations and Reports as needed | 276d | 2012-02-06 A | 2013-03-15 A |  | 100% |  | finish no earlier than 2013-03-15 |
| 48 | 1.2.3 | **Tech Stack Upgrades** | 25d? | 2012-03-26 A | 2012-04-30 A |  | 100% |  |  |
| 49 | 1.2.3.1 | **SDK 4.4.1** | 20d? | 2012-04-02 A | 2012-04-30 A |  | 100% |  |  |
| 50 | 1.2.3.1.1 | **caGrid Dependency removal** | 4d? | 2012-04-04 A | 2012-04-09 A |  | 100% |  |  |
| 51 |  | caGrid authentication removal | 0d | 2012-04-04 A | 2012-04-04 A |  | 100% |  | start no earlier than 2012-04-04 |
| 52 |  | CQL removal | 1d? | 2012-04-06 A | 2012-04-06 A |  | 100% |  | start no earlier than 2012-04-06 |
| 53 |  | Update Junit tests | 1d? | 2012-04-09 A | 2012-04-09 A | 52 | 100% |  |  |
| 54 | 1.2.3.1.2 | **caGrid 1.5 integration** | 2d | 2012-04-02 A | 2012-04-03 A |  | 100% |  |  |
| 55 |  | Jar replacement and Unit test | 2d | 2012-04-02 A | 2012-04-03 A |  | 100% |  | start no earlier than 2012-04-02 |
| 56 |  | Finalize Developer Documentation | 0d | 2012-04-16 A | 2012-04-16 A |  | 100% |  | start no earlier than 2012-04-16 |
| 57 |  | Release Candidate to QA | 8d | 2012-04-10 A | 2012-04-19 A |  | 100% |  | start no earlier than 2012-04-10 |
| 58 | 1.2.3.1.5 | **QA Support for SDK** | 0d | 2012-04-10 A | 2012-04-10 A | 51 | 100% |  |  |
| 59 |  | Perform QA | 0d | 2012-04-10 A | 2012-04-10 A |  | 100% |  | start no earlier than 2012-04-10 |
| 60 |  | Release checklist review | 0d | 2012-04-30 A | 2012-04-30 A |  | 100% |  | finish no earlier than 2012-04-30 |
| 61 | 1.2.3.2 | **CSM 4.2.3** | 18d | 2012-03-26 A | 2012-04-19 A |  | 100% |  |  |
| 62 | 1.2.3.2.1 | **CSM-710 AppScan Fix** | 4d | 2012-04-03 A | 2012-04-09 A |  | 100% |  |  |
| 63 |  | Setup UPT application for AppScan | 0d | 2012-04-03 A | 2012-04-03 A |  | 100% |  | start no earlier than 2012-04-03 |
| 64 |  | AppScan - Systems Team * | 3d | 2012-04-04 A | 2012-04-09 A |  | 100% |  | start no earlier than 2012-04-04 |
| 65 |  | CSM-716 New user can be created | 0d | 2012-03-26 A | 2012-03-26 A |  | 100% |  | start no earlier than 2012-03-26 |
| 66 |  | CSM-715 New application can be created | 0d | 2012-03-26 A | 2012-03-26 A |  | 100% |  | start no earlier than 2012-03-26 |
| 67 |  | CSM-714 CSM4.2.3 installation fails when MySQL DB is on Linux | 0d | 2012-03-26 A | 2012-03-26 A |  | 100% |  | start no earlier than 2012-03-26 |
| 68 |  | CSM-692 Make UPT configurable - caArray * | 4d | 2012-03-26 A | 2012-03-30 A |  | 100% |  | start no earlier than 2012-03-26 |
| 69 |  | Finalize Developer Documentation | 0d | 2012-04-09 A | 2012-04-09 A |  | 100% |  | start no earlier than 2012-04-09 |
| 70 |  | Release Candidate to QA | 0d | 2012-04-11 A | 2012-04-11 A |  | 100% |  | start no earlier than 2012-04-11 |

| ID | WBS | Task | Duration | Start | Finish | Predecessors | Complete | Constraint |
| --- | --- | --- | --- | --- | --- | --- | --- | --- |
| 71 | 1.2.3.2.8 | **QA Support** | 0d | 2012-04-10 A | 2012-04-10 A |  | 100% |  |
| 72 |  | Perform QA | 0d | 2012-04-10 A | 2012-04-10 A | 64 | 100% |  |
| 73 |  | Release check list review | 0d | 2012-04-19 A | 2012-04-19 A |  | 100% | start no earlier than 2012-04-19 |
| 74 | 1.2.4 | **CSM/UPT 5.0** | 246d? | 2012-04-25 A | 2013-04-19 |  | 100% |  |
| 75 |  | Scope Document | 1d | 2012-04-30 A | 2012-05-01 A |  | 100% | start no earlier than 2012-04-30 |
| 76 |  | Functional Requirement Document | 5d | 2012-04-25 A | 2012-05-02 A |  | 100% | start no earlier than 2012-04-25 |
| 77 |  | Design document | 20d | 2012-06-01 A | 2012-07-12 A | 76 | 100% | finish no earlier than 2012-07-12 |
| 78 |  | Design Document - Password policy | 12d? | 2012-06-01 A | 2012-06-20 A | 76 | 100% | finish no earlier than 2012-06-20 |
| 79 | 1.2.4.5 | **Develop code** | 123d? | 2012-05-02 A | 2012-10-26 A |  | 100% |  |
| 80 |  | Merge 4.2.3 changes into 5.0 | 2d | 2012-05-02 A | 2012-05-03 A |  | 100% | finish no earlier than 2012-05-04 |
| 81 |  | 2011 Future tech stack changes | 3d | 2012-05-07 A | 2012-05-09 A | 80 | 100% |  |
| 82 |  | Configurable Admin options by role | 27d | 2012-06-29 A | 2012-08-08 A | 81 | 100% | finish no earlier than 2012-08-09 |
| 83 |  | NIH Password Security compliance, Encryption | 48d | 2012-06-21 A | 2012-08-29 A | 78 | 100% | finish no earlier than 2012-08-30 |
| 84 |  | stronger access control | 24d | 2012-08-10 A | 2012-09-13 A | 82 | 100% | finish no earlier than 2012-09-14 |
| 85 |  | Refine use case for instance level security | 5d? | 2012-09-17 A | 2012-09-21 A | 84 | 100% | start no earlier than 2012-09-17 |
| 86 |  | Database Scripts and Migration | 6d? | 2012-09-03 A | 2012-09-11 A | 83 | 100% | finish no earlier than 2012-09-14 |
| 87 | 1.2.4.5.8 | **Remove backward compatibility** | 26d | 2012-09-21 A | 2012-10-26 A |  | 100% |  |
| 88 |  | Coding | 10d | 2012-09-21 A | 2012-10-04 A | 85 | 100% | finish no earlier than 2012-10-05 |
| 89 |  | Set up BDA Lite | 15d | 2012-10-08 A | 2012-10-26 A | 88 | 100% | finish no earlier than 2012-10-25 |
| 90 | 1.2.4.6 | **Junit tests** | 23d | 2012-09-25 A | 2012-10-26 A |  | 100% |  |
| 91 |  | Cleanup Junit | 23d | 2012-09-25 A | 2012-10-26 A | 85 | 100% | finish no earlier than 2012-10-26 |
| 92 |  | Update and Run Junit | 3d | 2012-10-08 A | 2012-10-16 A | 88 | 100% | finish no earlier than 2012-10-12 |
| 93 |  | Request AppScan on the DevBox | 20d | 2012-08-08 A | 2012-09-06 A |  | 100% | finish no earlier than 2012-08-14 |
| 94 |  | Review Test cases | 6d? | 2012-11-20 A | 2012-11-29 A |  | 100% | finish no earlier than 2012-11-29 |
| 95 | 1.2.4.9 | **Perform QA (fix bugs, Appscan, 508, etc.)** | 82d? | 2012-11-26 A | 2013-03-29 A | 92 | 100% |  |
| 96 | 1.2.4.9.1 | **QA** | 48d? | 2012-11-26 A | 2013-02-08 A | 92 | 100% |  |
| 97 | 1.2.4.9.1.1 | **Iteration - 1** | 13d? | 2012-11-26 A | 2012-12-17 A | 92 | 100% |  |
| 98 |  | Iteration - 1 | 0d? | 2012-11-26 A | 2012-11-26 A |  | 100% | must start on 2012-11-26 |
| 99 |  | Iteration - 1 | 0d? | 2012-12-17 A | 2012-12-17 A |  | 100% | must finish on 2012-12-17 |
| 100 |  | SDK Integration | 13d? | 2012-11-26 A | 2012-12-17 A |  | 100% | finish no earlier than 2012-12-17 |
| 101 |  | Iteration - 2 | 9d? | 2012-12-18 A | 2013-01-03 A | 100 | 100% | start no earlier than 2012-12-18 |
| 102 |  | QA peer review and approval | 1d? | 2013-01-22 A | 2013-01-22 A |  | 100% | start no earlier than 2013-01-22 |
| 103 |  | Iteration - 3 | 5d | 2013-01-25 A | 2013-02-01 A | 33, 102 | 100% | finish no earlier than 2013-02-01 |
| 104 |  | QA peer review and approval | 1d? | 2013-02-07 A | 2013-02-07 A | 103 | 100% | start no earlier than 2013-02-07 |
| 105 |  | Iteration - 4 | 1d | 2013-02-08 A | 2013-02-08 A | 104 | 100% | finish no earlier than 2013-02-08 |
| 106 |  | Request App Scan on QA box | 1d? | 2012-11-27 A | 2012-11-27 A |  | 100% | start no earlier than 2012-11-27 |
| 107 |  | AppScan on the QA box | 13d | 2013-02-11 A | 2013-02-28 A | 105 | 100% | finish no earlier than 2013-02-28 |
| 108 |  | Stage Environment setup | 5d | 2013-03-14 A | 2013-03-21 A | 107 | 100% | finish no earlier than 2013-03-21 |
| 109 |  | Request App Scan on Stage box | 1d? | 2013-03-08 A | 2013-03-08 A | 121 | 100% |  |
| 110 |  | AppScan on the Stage box | 5d | 2013-03-22 A | 2013-03-29 A | 108 | 100% | finish no earlier than 2013-03-29 |
| 111 |  | QA Support | 62d | 2012-11-19 A | 2013-02-22 A |  | 100% | finish no earlier than 2013-02-22 |
| 112 | 1.2.4.11 | **Documentation** | 72d? | 2012-11-09 A | 2013-02-28 A |  | 100% |  |
| 113 |  | Customizable UPT | 10d? | 2012-11-09 A | 2012-11-23 A | 84 | 100% | finish no earlier than 2012-11-23 |
| 114 |  | Password policy, encryption, change password | 9.5d | 2012-11-09 A | 2012-11-27 A | 113 | 100% | finish no earlier than 2012-11-23 |
| 115 |  | Wiki Documentation | 61d | 2012-11-26 A | 2013-02-28 A |  | 100% | finish no earlier than 2013-02-28 |
| 116 |  | Release Preparation | 8.25d | 2013-03-18 A | 2013-04-10 A |  | 100% | finish no earlier than 2013-04-10 |
| 117 | 1.2.4.13 | **Deployment** | 124d? | 2012-10-15 A | 2013-04-16 A |  | 100% |  |
| 118 |  | ARC and PTE Submission | 0d? | 2012-10-15 A | 2012-10-15 A |  | 100% | start no earlier than 2012-10-15 |
| 119 |  | Dev tier deployment | 0d? | 2012-10-31 A | 2012-10-31 A |  | 100% | start no earlier than 2012-10-31 |
| 120 |  | QA tier deployment | 0d? | 2012-11-16 A | 2012-11-16 A |  | 100% | start no earlier than 2012-11-16 |
| 121 |  | Stage tier deployment | 0d? | 2013-03-21 A | 2013-03-21 A | 108 | 100% | finish no earlier than 2013-03-21 |
| 122 |  | Production tier deployment | 8d? | 2013-03-29 A | 2013-04-10 A | 110 | 100% | finish no earlier than 2013-04-10 |
| 123 |  | Update downlaod center and Gforge | 0d? | 2013-04-16 A | 2013-04-16 A |  | 100% | start no earlier than 2012-04-16 |
| 124 | 1.2.4.14 | **Milestones** | 231.05d? | 2012-05-03 A | 2013-04-10 A |  | 100% |  |
| 125 |  | Requirements review | 0.05d? | 2012-05-03 A | 2012-05-04 A | 76 | 100% | start no earlier than 2012-04-27 |
| 126 |  | Design Review | 0d? | 2012-05-14 A | 2012-05-14 A | 77 | 100% |  |
| 127 |  | Code completion | 0d | 2012-11-05 A | 2012-11-05 A | 89 | 100% | start no earlier than 2012-11-02 |
| 128 |  | QA Sign Off | 0d? | 2013-03-29 A | 2013-03-29 A | 95 | 100% | finish no earlier than 2013-01-08 |
| 129 |  | Release checklist review | 0d? | 2013-04-10 A | 2013-04-10 A | 116 | 100% |  |
| 130 | 1.2.5 | **SDK 4.5** | 308.62d? | 2012-04-30 | 2013-07-19 |  | 99% |  |
| 131 |  | Scope Document | 4d | 2012-04-30 A | 2012-05-03 A |  | 100% | finish no earlier than 2012-05-04 |
| 132 |  | Functional Requirements Documents | 5d | 2012-05-04 A | 2012-05-10 A | 131 | 100% | finish no earlier than 2012-05-11 |
| 133 |  | Design Document | 4d | 2012-05-14 A | 2012-05-17 A | 132 | 100% | finish no earlier than 2012-05-18 |
| 134 |  | Semantic SDK System use cases | 4d | 2012-11-16 A | 2012-11-21 A |  | 100% | finish no earlier than 2012-11-22 |
| 135 | 1.2.5.5 | **Develop code** | 64d | 2012-05-18 A | 2012-08-21 A |  | 100% |  |
| 136 |  | Merge 4.4.1 into 4.5 | 5d | 2012-05-18 A | 2012-05-24 A | 133 | 100% | finish no earlier than 2012-05-25 |
| 137 |  | 2011 Future Tech stack changes | 2d | 2012-05-28 A | 2012-05-29 A | 136 | 100% |  |
| 138 |  | REST Resources | 15d | 2012-06-04 A | 2012-06-22 A | 137 | 100% | finish no earlier than 2012-06-25 |
| 139 |  | Content Handling | 4d | 2012-06-26 A | 2012-06-29 A | 138 | 100% |  |
| 140 |  | Create, Delete, Update with Writable API | 9d | 2012-07-05 A | 2012-07-17 A | 139 | 100% | start no earlier than 2012-07-05 |

| ID | WBS | Task | Duration | Start | Finish | Predecessors | Complete | Total float | Constraint |
| --- | --- | --- | --- | --- | --- | --- | --- | --- | --- |
| 141 |  | Junit test case generation | 3d | 2012-07-19 A | 2012-07-23 A | 140 | 100% |  |  |
| 142 |  | Security | 9d | 2012-07-25 A | 2012-08-06 A | 141 | 100% |  |  |
| 143 |  | Configuration/Deployment | 1d | 2012-08-08 A | 2012-08-08 A | 142 | 100% |  |  |
| 144 |  | Reference Implemenation | 8d | 2012-08-10 A | 2012-08-21 A | 143 | 100% |  | finish no earlier than 2012-08-03 |
| 145 |  | Update and Conduct Unit tests | 1d | 2012-08-23 A | 2012-08-23 A | 144 | 100% |  | finish no earlier than 2012-08-14 |
| 146 |  | CSM/UPT Integration | 5d | 2012-10-10 A | 2012-10-16 A | 88 | 100% |  | start no earlier than 2012-10-04 |
| 147 |  | Codegen changes | 3d | 2012-12-06 A | 2012-12-10 A | 134 | 100% |  | start no earlier than 2012-12-06 |
| 148 |  | Metadata Injection | 7d | 2012-12-11 A | 2012-12-19 A | 147 | 100% |  |  |
| 149 |  | Semantic SDK Unit Test | 2d | 2012-12-20 A | 2012-12-21 A | 148 | 100% |  |  |
| 150 |  | SDK DEV App Scan setup. Analyzed app scan report. Working on fixing SDK app scan reported issues | 0d | 2013-01-18 A | 2013-01-18 A |  | 100% |  |  |
| 151 |  | Fix CBM QA issues | 3d | 2013-05-07 A | 2013-05-10 A |  | 100% |  | finish no earlier than 2013-05-10 |
| 152 |  | Struts Security Issue Fix | 1d | 2013-07-24 A | 2013-07-25 A |  | 100% |  |  |
| 153 | 1.2.5.14 | **Perform QA (fix bugs, Appscan, 508, etc.)** | 225d? | 2012-08-27 A | 2013-07-17 |  | 99% | 10d |  |
| 154 | 1.2.5.14.1 | **Perform QA** | 106d? | 2012-08-27 A | 2013-02-01 |  | 99% | 0d |  |
| 155 |  | SDK | 64d? | 2012-08-27 A | 2012-11-26 A |  | 100% |  | finish no earlier than 2012-11-26 |
| 156 | 1.2.5.14.1.2 | **Semantic SDK QA** | 21d? | 2013-01-02 A | 2013-02-01 A | 148 | 100% |  |  |
| 157 |  | Test case review - Semantic SDK | 1d? | 2013-01-02 A | 2013-01-02 A |  | 100% |  | start no earlier than 2013-01-02 |
| 158 |  | Iteration - 1 | 5d | 2013-01-08 A | 2013-01-16 A |  | 100% |  | finish no earlier than 2013-01-16 |
| 159 |  | QA peer review and approval | 1d? | 2013-01-22 A | 2013-01-22 A |  | 100% |  | start no earlier than 2013-01-22 |
| 160 |  | Iteration - 2 | 7d | 2013-01-23 A | 2013-02-01 A | 159 | 100% |  | finish no earlier than 2013-02-01 |
| 161 | 1.2.5.14.2 | **CBM SDK Test** | 46.62d | 2013-05-13 A | 2013-07-16 |  | 89% |  |  |
| 162 |  | Test Case Preparation | 1d | 2013-05-13 A | 2013-05-13 A | 151 | 100% |  | start no earlier than 2013-05-13 |
| 163 |  | Test Execution | 4d | 2013-07-11 A | 2013-07-17 A | 162 | 100% |  | start no earlier than 2013-07-11 |
| 164 |  | QA Peer review and approval | 1d | 2013-07-17 | 2013-07-17 | 163 |  | 10d | start no earlier than 2012-02-13 |
| 165 |  | QA support for CBM Test | 3d | 2013-07-11 A | 2013-07-16 A |  | 100% |  | start no earlier than 2013-07-11 |
| 166 |  | Struts Security Issue smoke test | 2d? | 2012-04-30 | 2012-05-01 |  |  | 306d |  |
| 167 |  | QA Support | 103.8d | 2012-08-24 A | 2013-02-08 A | 161 | 100% |  | finish no earlier than 2013-01-29 |
| 168 |  | Documentation DEV | 55d? | 2012-10-24 A | 2013-01-18 A | 146 | 100% |  | finish no earlier than 2013-01-18 |
| 169 |  | Wiki Documentation | 81d? | 2012-10-29 A | 2013-02-28 A | 146 | 100% |  | finish no earlier than 2013-02-28 |
| 170 |  | Release Preparation | 1d | 2012-02-28 A | 2012-02-29 A |  | 100% |  | finish no earlier than 2012-02-29 |
| 171 |  | Update download center and Gforge | 1d? | 2012-04-16 A | 2012-04-17 A |  | 100% |  | finish no earlier than 2012-04-17 |
| 172 |  | Release announcement of SDK 4.5 and CSM 5.0 | 1d | 2013-08-01 A | 2013-08-01 | 164 |  | -9d |  |
| 173 | 1.2.5.22 | **Milestones** | 182d? | 2012-04-30 A | 2013-01-25 A |  | 100% |  |  |
| 174 |  | Requirements review | 1d? | 2012-05-07 A | 2012-05-07 A | 132 | 100% |  | start no earlier than 2012-04-27 |
| 175 |  | Design Review | 1d? | 2012-05-14 A | 2012-05-14 A | 133 | 100% |  |  |
| 176 |  | Code completion | 8d? | 2012-08-02 A | 2012-08-13 A | 135 | 100% |  |  |
| 177 |  | QA Sign Off | 0d? | 2013-01-25 A | 2013-01-25 A |  | 100% |  | start no earlier than 2013-01-25 |
| 178 |  | Release checklist review | 0d? | 2012-04-30 A | 2012-04-30 A | 170 | 100% |  |  |
| 179 | 1.2.6 | **Tech Stack (Java 7 and JBoss) Upgrade** | 44.62d | 2013-07-09 A | 2013-09-09 |  |  |  |  |
| 180 |  | Validate CSM 4.2.3.1 | 0d | 2013-07-09 A | 2013-07-09 A |  | 100% |  | start no earlier than 2013-07-09 |
| 181 |  | Validate CSM 5.0 | 0d | 2013-07-10 A | 2013-07-10 A | 180 | 100% |  | start no earlier than 2013-07-10 |
| 182 |  | Validate SDK 4.5 | 0d | 2013-07-11 A | 2013-07-11 A | 181 | 100% |  | start no earlier than 2013-07-11 |
| 183 | 1.2.6.4 | **CSM 4.2.3.2** | 30d? | 2013-07-15 | 2013-08-23 |  |  | 6d |  |
| 184 |  | Code changes | 4d | 2013-07-15 | 2013-07-18 |  |  | 6d | start no earlier than 2013-07-15 |
| 185 |  | Unit testing | 0d? | 2013-07-18 | 2013-07-18 | 184 |  | 6d |  |
| 186 |  | Dev/QA box setup | 4d | 2013-07-19 | 2013-07-24 | 185 |  | 10d |  |
| 187 | 1.2.6.4.4 | **QA** | 13d | 2013-07-25 | 2013-08-12 | 186 |  | 10d |  |
| 188 |  | QA Iteration #1 | 9d | 2013-07-25 | 2013-08-06 | 185 |  | 10d |  |
| 189 |  | QA Support | 9d | 2013-07-25 | 2013-08-06 | 185 |  | 23d |  |
| 190 |  | App Scan | 4d | 2013-08-07 | 2013-08-12 | 188 |  | 10d |  |
| 191 |  | Release preperation | 0d? | 2013-08-12 | 2013-08-12 | 190 |  | 10d |  |
| 192 |  | Tiers Deployment | 9d | 2013-08-13 | 2013-08-23 | 191 |  | 10d | start no earlier than 2013-07-12 |
| 193 | 1.2.6.5 | **CSM 5.0.1** | 30d? | 2013-07-19 | 2013-08-29 |  |  | 6d |  |
| 194 |  | Code changes | 4d | 2013-07-19 | 2013-07-24 | 185 |  | 6d | start no earlier than 2013-07-18 |
| 195 |  | Unit testing | 0d? | 2013-07-24 | 2013-07-24 | 194 |  | 6d |  |
| 196 |  | Dev/QA box setup | 4d | 2013-07-25 | 2013-07-30 | 195 |  | 6d |  |
| 197 | 1.2.6.5.4 | **QA** | 13d | 2013-07-31 | 2013-08-16 | 196 |  | 6d |  |
| 198 |  | QA Iteration #1 | 9d | 2013-07-31 | 2013-08-12 | 195 |  | 6d |  |
| 199 |  | QA Support | 9d | 2013-07-31 | 2013-08-12 | 195 |  | 19d |  |
| 200 |  | App Scan | 4d | 2013-08-13 | 2013-08-16 | 198 |  | 6d |  |
| 201 |  | Release preperation | 0d? | 2013-08-16 | 2013-08-16 | 200 |  | 6d |  |
| 202 |  | Tiers Deployment | 9d | 2013-08-19 | 2013-08-29 | 201 |  | 6d | start no earlier than 2013-07-12 |
| 203 | 1.2.6.6 | **SDK 4.5.1** | 13d? | 2013-07-25 | 2013-08-12 |  |  | 19d |  |
| 204 |  | Code changes | 4d | 2013-07-25 | 2013-07-30 | 195 |  | 19d | start no earlier than 2013-07-23 |
| 205 |  | Unit testing | 1d | 2013-07-31 | 2013-07-31 | 204 |  | 19d |  |
| 206 |  | Dev/QA box setup | 4d | 2013-08-01 | 2013-08-06 | 207 |  | 19d |  |
| 207 |  | AppScan at Dev tier | 0d | 2013-07-31 | 2013-07-31 | 205 |  | 19d |  |
| 208 | 1.2.6.6.5 | **QA** | 4d | 2013-08-07 | 2013-08-12 | 206, 207 |  | 19d |  |
| 209 |  | QA Support | 4d | 2013-08-07 | 2013-08-12 | 205 |  | 19d |  |
| 210 |  | QA Iteration #1 | 4d | 2013-08-07 | 2013-08-12 | 205 |  | 19d |  |

| ID | WBS | Task | Duration | Start | Finish | Predecessors | Complete | Total float | Constraint |
| --- | --- | --- | --- | --- | --- | --- | --- | --- | --- |
| 211 |  | Release preperation | 0d? | 2013-08-12 | 2013-08-12 | 210 |  | 19d |  |
| 212 | 1.2.7 | **CSM/UPT 5.1** | 57d | 2013-07-12 A | 2013-09-30 |  | 14% | 0d |  |
| 213 |  | Scope Document | 1d | 2013-07-12 A | 2013-07-15 A |  | 100% |  | start no earlier than 2013-07-12 |
| 214 | 1.2.7.2 | **Improved installation and configuration process** | 17d | 2013-07-16 A | 2013-08-07 | 213 | 41% | 0d |  |
| 215 |  | Database scripts update | 5d | 2013-07-16 A | 2013-07-22 A |  | 100% |  | finish no earlier than 2013-07-22 |
| 216 |  | Build scripts update | 4d | 2013-07-23 A | 2013-07-26 | 215 | 50% | 0d |  |
| 217 |  | GUI Installer Update | 5d | 2013-07-29 | 2013-08-02 | 216 |  | 0d |  |
| 218 |  | Use libraries from Maven | 3d | 2013-08-05 | 2013-08-07 | 217 |  | 0d |  |
| 219 |  | CSM Performance Improvement | 6d | 2013-08-08 | 2013-08-15 | 218 |  | 0d | finish no earlier than 2013-08-12 |
| 220 |  | Importing LDAP users | 14d | 2013-08-16 | 2013-09-04 | 219 |  | 0d | start no earlier than 2013-08-13 |
| 221 |  | Wiki Documentation | 2d | 2013-09-05 | 2013-09-06 | 220 |  | 16d |  |
| 222 |  | QA Iteration 1 | 7d | 2013-09-05 | 2013-09-13 | 220 |  | 0d |  |
| 223 |  | QA Iteration 2 | 7d | 2013-09-16 | 2013-09-24 | 222 |  | 0d |  |
| 224 |  | App Scan | 4d | 2013-09-25 | 2013-09-30 | 223 |  | 0d |  |
| 225 |  | Release preperation | 0d | 2013-09-30 | 2013-09-30 | 224 |  | 0d |  |
| 226 | 1.2.8 | **AndroMDA Pilot Project** | 18d | 2013-07-26 | 2013-08-20 |  |  | 0d |  |
| 227 |  | Scope Document | 2d | 2013-07-26 | 2013-07-29 |  |  | 0d | start no earlier than 2013-07-26 |
| 228 |  | Development | 14d | 2013-07-30 | 2013-08-16 | 227 |  | 0d |  |
| 229 |  | Documentation | 2d | 2013-08-19 | 2013-08-20 | 228 |  | 0d |  |
| 230 |  | Demo | 0d | 2013-08-20 | 2013-08-20 | 229 |  | 0d |  |
| 231 | 1.2.9 | **RESTful Service Wrapper** | 87d? | 2012-11-20 A | 2013-04-01 A |  | 100% |  |  |
| 232 |  | Scope Document | 6d | 2012-11-20 A | 2012-11-30 A |  | 100% |  | finish no earlier than 2012-11-30 |
| 233 |  | System use cases | 36d | 2012-12-11 A | 2013-02-06 A | 232 | 100% |  | finish no earlier than 2013-02-06 |
| 234 |  | System use cases review | 0d? | 2013-02-06 A | 2013-02-06 A | 233 | 100% |  | finish no earlier than 2013-02-06 |
| 235 |  | Requirements Document | 7d | 2012-12-04 A | 2012-12-13 A |  | 100% |  |  |
| 236 |  | Design Document | 37d | 2012-12-11 A | 2013-02-07 A |  | 100% |  | finish no earlier than 2013-02-07 |
| 237 |  | Design Document Review | 11d? | 2013-02-13 A | 2013-02-28 A |  | 100% |  | finish no earlier than 2013-02-28 |
| 238 | 1.2.9.7 | **Develop code** | 38d | 2012-12-11 A | 2013-02-08 A |  | 100% |  |  |
| 239 | 1.2.9.7.1 | **Wrapper for data services** | 38d | 2012-12-11 A | 2013-02-08 A |  | 100% |  |  |
| 240 |  | Wrapper UI | 27d | 2012-12-11 A | 2013-01-29 A |  | 100% |  | finish no earlier than 2013-01-29 |
| 241 |  | Generate Mapping configuration | 16d | 2013-01-16 A | 2013-02-07 A |  | 100% |  | finish no earlier than 2013-02-06 |
| 242 |  | Generate RESTful resources | 19d | 2013-01-02 A | 2013-01-30 A | 149 | 100% |  | start no earlier than 2013-01-02 |
| 243 |  | UI Integration | 6d | 2013-01-31 A | 2013-02-08 A | 242 | 100% |  | finish no earlier than 2013-02-08 |
| 244 |  | Update and Conduct Unit tests | 8d | 2013-02-11 A | 2013-02-21 A | 238 | 100% |  | finish no earlier than 2013-02-21 |
| 245 |  | Test case review - RESTful Service Wrapper | 3d? | 2013-02-08 A | 2013-02-13 A | 234 | 100% |  | finish no earlier than 2013-02-13 |
| 246 | 1.2.9.10 | **Perform QA (fix bugs, Appscan, 508, etc.)** | 80d? | 2012-11-30 A | 2013-03-29 A |  | 100% |  |  |
| 247 | 1.2.9.10.1 | **Perform QA** | 21d? | 2013-02-21 A | 2013-03-22 A | 244 | 100% |  |  |
| 248 |  | Iteration#1 | 8d | 2013-02-21 A | 2013-03-05 A |  | 100% |  | finish no earlier than 2013-03-05 |
| 249 |  | Iteration#2 | 7d? | 2013-03-06 A | 2013-03-15 A |  | 100% |  | finish no earlier than 2013-03-15 |
| 250 |  | Iteration#3 | 3d? | 2013-03-18 A | 2013-03-22 A |  | 100% |  | finish no earlier than 2013-03-22 |
| 251 |  | QA Support | 14d | 2013-02-21 A | 2013-03-13 A | 244 | 100% |  | finish no earlier than 2013-02-27 |
| 252 |  | Release Documentation | 26d | 2013-02-21 A | 2013-03-29 A | 244 | 100% |  | finish no earlier than 2013-03-29 |
| 253 | 1.2.9.10.4 | **Milestones** | 62d? | 2012-11-30 A | 2013-03-05 A |  | 100% |  |  |
| 254 |  | Scope Review | 0d? | 2012-11-30 A | 2012-11-30 A |  | 100% |  | start no earlier than 2012-11-30 |
| 255 |  | Requirements review | 0d? | 2012-12-14 A | 2012-12-14 A |  | 100% |  | start no earlier than 2012-12-14 |
| 256 |  | Design Review | 3d? | 2013-02-28 A | 2013-03-05 A | 237 | 100% |  | finish no earlier than 2013-02-22 |
| 257 |  | Code completion | 0d? | 2013-02-15 A | 2013-02-15 A | 244 | 100% |  | start no earlier than 2013-01-17 |
| 258 |  | QA Sign Off | 0d? | 2013-03-22 A | 2013-03-22 A | 247 | 100% |  | start no earlier than 2013-02-28 |
| 259 |  | Release checklist review | 1d | 2013-03-29 A | 2013-04-01 A | 252 | 100% |  | start no earlier than 2013-02-28 |

## Version 2 (data date 2012-07-27, saved 2013-08-06)

Note of the change: Re-baseline proj schedule

Last finish 2013-09-30 → 2013-10-02 (+2d). Complete tasks 164 → 162.

Added:

| ID | Task | Duration | Start | Finish | Predecessors |
| --- | --- | --- | --- | --- | --- |
| 166 | QA test | 2d? | 2013-07-29 A | 2013-07-31 A | 151 |
| 167 | QA peer review and approval | 1d? | 2013-07-31 | 2013-07-31 | 166 |

Removed: 46 Gforge migration

Changed:

| ID | Task | Start | Finish | Duration | Complete | Total float | Predecessors | Other |
| --- | --- | --- | --- | --- | --- | --- | --- | --- |
| 1 | **caCORE Tools Project** |  | 2013-09-30 → 2013-10-02 (+2d) | 419d? → 421d? | 88% → 89% |  |  | baseline finish 2013-09-30 → 2013-10-02 |
| 11 | CSM/UPT 5.1 Release |  |  | 55d? → 55d |  | 1d → none |  | baseline finish 2013-09-30 → 2013-09-27 |
| 15 | **Tasks** |  | 2013-09-30 → 2013-10-02 (+2d) | 419d? → 421d? | 90% → 91% |  |  | baseline finish 2013-09-26 → 2013-10-02 |
| 20 | **Operations and maintenance support** |  | 2013-07-15 A |  | 95% → 100% | 56d → none |  |  |
| 129 | **SDK 4.5** | 2012-04-30 A |  |  |  |  |  |  |
| 134 | **Develop code** |  | 2012-08-21 A → 2013-07-25 A (+338d) | 64d → 297d |  |  |  | baseline finish 2012-08-21 → 2013-07-25 |
| 152 | **Perform QA (fix bugs, Appscan, 508, etc.)** |  | 2013-07-17 → 2013-07-31 (+14d) | 225d? → 235d? | 99% → 98% | 10d → 45d |  | baseline finish 2013-07-16 → 2013-07-31 |
| 162 | Test Execution |  |  |  |  |  |  | baseline finish 2013-07-16 → 2013-07-17 |
| 163 | QA Peer review and approval |  |  |  |  | 10d → 55d |  | baseline start 2013-07-16 → 2013-07-17; baseline finish 2013-07-16 → 2013-07-17 |
| 165 | **Struts Security Issue smoke test** | 2012-04-30 → 2013-07-29 A (+455d) | 2012-05-01 → 2013-07-31 (+456d) | 2d? → 3d? | 0% → 67% | 306d → -1d |  |  |
| 169 | Documentation DEV |  |  |  |  |  | 145 → 151 |  |
| 170 | Wiki Documentation |  |  |  |  |  | 145 → 169 |  |
| 171 | Release Preparation | 2012-02-28 A → 2013-08-01 A (+520d) | 2012-02-29 A → 2013-08-01 (+519d) |  | 100% → 70% | none → -10d | none → 170 | baseline start 2012-02-28 → 2013-08-01; baseline finish 2012-02-29 → 2013-08-01 |
| 172 | Update download center and Gforge | 2012-04-16 A → 2013-08-05 A (+476d) | 2012-04-17 A → 2013-08-06 A (+476d) |  |  |  | none → 171 | baseline start 2012-04-16 → 2013-08-05; baseline finish 2012-04-17 → 2013-08-06 |
| 173 | Release announcement of SDK 4.5 and CSM 5.0 |  | 2013-08-01 → 2013-08-06 (+5d) |  |  | -9d → -12d | 163 → 172 | baseline finish 2013-08-01 → 2013-08-06 |
| 174 | **Milestones** | 2012-04-30 A → 2012-05-07 A (+7d) | 2013-01-25 A → 2013-08-02 (+189d) | 182d? → 313d? | 100% → 67% | none → -7d |  | baseline start 2012-04-30 → 2012-05-07; baseline finish 2013-01-25 → 2013-08-02 |
| 177 | Code completion | 2012-08-02 A → 2013-07-25 A (+357d) | 2012-08-13 A → 2013-07-25 A (+346d) | 8d? → 0d? |  |  |  | baseline start 2012-08-02 → 2013-07-25; baseline finish 2012-08-13 → 2013-07-25 |
| 178 | QA Sign Off | 2013-01-25 A → 2013-01-25 | 2013-01-25 A → 2013-01-25 | 0d? → 0d | 100% → 0% | none → 126d |  |  |
| 179 | Release checklist review | 2012-04-30 A → 2013-08-02 (+459d) | 2012-04-30 A → 2013-08-02 (+459d) | 0d? → 1d | 100% → 0% | none → -10d |  | baseline start 2012-04-30 → 2013-08-02; baseline finish 2012-04-30 → 2013-08-02 |
| 213 | **CSM/UPT 5.1** |  | 2013-09-30 → 2013-10-02 (+2d) | 57d → 59d | 14% → 26% |  |  | baseline finish 2013-09-26 → 2013-10-02 |
| 215 | **Improved installation and configuration process** |  | 2013-08-07 → 2013-08-09 (+2d) | 17d → 19d | 41% → 76% |  |  | baseline finish 2013-08-07 → 2013-08-09 |
| 217 | Build scripts update |  | 2013-07-26 → 2013-07-30 (+4d) | 4d → 6d | 50% → 90% | 0d → 4d |  | baseline finish 2013-07-26 → 2013-07-30 |
| 218 | GUI Installer Update | 2013-07-29 → 2013-07-31 A (+2d) | 2013-08-02 → 2013-08-06 (+4d) |  | 0% → 50% | 0d → 1.5d |  | baseline start 2013-07-29 → 2013-07-31; baseline finish 2013-08-02 → 2013-08-06 |
| 219 | Use libraries from Maven | 2013-08-05 → 2013-08-07 A (+2d) | 2013-08-07 → 2013-08-09 (+2d) |  | 0% → 50% |  |  | baseline start 2013-08-05 → 2013-08-07; baseline finish 2013-08-07 → 2013-08-09 |
| 220 | CSM Performance Improvement | 2013-08-08 → 2013-08-12 (+4d) | 2013-08-15 → 2013-08-19 (+4d) |  |  |  |  | baseline start 2013-08-08 → 2013-08-12; baseline finish 2013-08-15 → 2013-08-19 |
| 221 | Importing LDAP users | 2013-08-16 → 2013-08-20 (+4d) | 2013-09-04 → 2013-09-06 (+2d) |  |  |  |  | baseline start 2013-08-14 → 2013-08-20; baseline finish 2013-09-02 → 2013-09-06 |
| 222 | Wiki Documentation | 2013-09-05 → 2013-09-09 (+4d) | 2013-09-06 → 2013-09-10 (+4d) |  |  |  |  | baseline start 2013-09-03 → 2013-09-09; baseline finish 2013-09-04 → 2013-09-10 |
| 223 | QA Iteration 1 | 2013-09-05 → 2013-09-09 (+4d) | 2013-09-13 → 2013-09-17 (+4d) |  |  |  |  | baseline start 2013-09-03 → 2013-09-09; baseline finish 2013-09-11 → 2013-09-17 |
| 224 | QA Iteration 2 | 2013-09-16 → 2013-09-18 (+2d) | 2013-09-24 → 2013-09-26 (+2d) |  |  |  |  | baseline start 2013-09-12 → 2013-09-18; baseline finish 2013-09-20 → 2013-09-26 |
| 225 | App Scan | 2013-09-25 → 2013-09-27 (+2d) | 2013-09-30 → 2013-10-02 (+2d) |  |  |  |  | baseline start 2013-09-23 → 2013-09-27; baseline finish 2013-09-26 → 2013-10-02 |
| 226 | Release preperation | 2013-09-30 → 2013-10-02 (+2d) | 2013-09-30 → 2013-10-02 (+2d) |  |  |  |  | baseline start 2013-09-26 → 2013-10-02; baseline finish 2013-09-26 → 2013-10-02 |

## Version 3 (data date 2012-07-27, saved 2013-08-23)

Note of the change: test

Last finish 2013-10-02 → 2013-10-30 (+28d). Complete tasks 162 → 169.

Added:

| ID | Task | Duration | Start | Finish | Predecessors | Constraint |
| --- | --- | --- | --- | --- | --- | --- |
| 221 | Upgrade spring framework from 3.0.5 to 3.2.3 | 0d? | 2013-08-16 A | 2013-08-16 A | 219 | finish no earlier than 2013-08-15 |
| 222 | Struts 1.XX to 2.XX upgrade | 20d | 2013-08-20 A | 2013-09-16 | 221 |  |

Changed:

| ID | Task | Start | Finish | Duration | Complete | Total float | Predecessors | Other |
| --- | --- | --- | --- | --- | --- | --- | --- | --- |
| 1 | **caCORE Tools Project** |  | 2013-10-02 → 2013-10-30 (+28d) | 421d? → 441d? |  |  |  | baseline finish 2013-10-02 → 2013-10-30 |
| 15 | **Tasks** |  | 2013-10-02 → 2013-10-30 (+28d) | 421d? → 441d? |  |  |  | baseline finish 2013-10-02 → 2013-10-30 |
| 152 | **Perform QA (fix bugs, Appscan, 508, etc.)** |  |  |  | 98% → 99% | 45d → 0d |  |  |
| 160 | **CBM SDK Test** |  |  |  | 89% → 100% |  |  |  |
| 163 | QA Peer review and approval | 2013-07-17 A | 2013-07-17 A |  | 0% → 100% | 55d → none |  |  |
| 165 | **Struts Security Issue smoke test** |  | 2013-07-31 A |  | 67% → 100% | -1d → none |  |  |
| 167 | QA peer review and approval | 2013-07-31 A | 2013-07-31 A |  | 0% → 100% | -8d → none |  |  |
| 171 | Release Preparation |  | 2013-08-01 A |  | 70% → 100% | -10d → none |  |  |
| 213 | **CSM/UPT 5.1** |  | 2013-10-02 → 2013-10-30 (+28d) | 59d → 79d? | 26% → 42% |  |  | baseline finish 2013-10-02 → 2013-10-30 |
| 215 | **Improved installation and configuration process** |  | 2013-08-09 A |  | 76% → 100% | 0d → none |  |  |
| 216 | Database scripts update |  | 2013-07-22 A → 2013-08-02 A (+11d) | 5d → 13d |  |  |  | baseline finish 2013-07-22 → 2013-08-02 |
| 217 | Build scripts update |  | 2013-07-30 → 2013-08-09 A (+10d) | 6d → 10.4d | 90% → 100% | 4d → none |  | baseline finish 2013-07-30 → 2013-08-09 |
| 218 | GUI Installer Update |  | 2013-08-06 → 2013-08-08 A (+2d) | 5d → 5.9d | 50% → 100% | 1.5d → none |  | baseline finish 2013-08-06 → 2013-08-08 |
| 219 | Use libraries from Maven |  | 2013-08-09 A |  | 50% → 100% | 0d → none |  |  |
| 220 | CSM Performance Improvement | 2013-08-12 A |  |  | 0% → 70% | 0d → 52d |  |  |
| 223 | Importing LDAP users | 2013-08-20 → 2013-09-17 (+28d) | 2013-09-06 → 2013-10-04 (+28d) |  |  |  | 220 → 222 | baseline start 2013-08-20 → 2013-09-17; baseline finish 2013-09-06 → 2013-10-04 |
| 224 | Wiki Documentation | 2013-09-09 → 2013-10-07 (+28d) | 2013-09-10 → 2013-10-08 (+28d) |  |  |  |  | baseline start 2013-09-09 → 2013-10-07; baseline finish 2013-09-10 → 2013-10-08 |
| 225 | QA Iteration 1 | 2013-09-09 → 2013-10-07 (+28d) | 2013-09-17 → 2013-10-15 (+28d) |  |  |  |  | baseline start 2013-09-09 → 2013-10-07; baseline finish 2013-09-17 → 2013-10-15 |
| 226 | QA Iteration 2 | 2013-09-18 → 2013-10-16 (+28d) | 2013-09-26 → 2013-10-24 (+28d) |  |  |  |  | baseline start 2013-09-18 → 2013-10-16; baseline finish 2013-09-26 → 2013-10-24 |
| 227 | App Scan | 2013-09-27 → 2013-10-25 (+28d) | 2013-10-02 → 2013-10-30 (+28d) |  |  |  |  | baseline start 2013-09-27 → 2013-10-25; baseline finish 2013-10-02 → 2013-10-30 |
| 228 | Release preperation | 2013-10-02 → 2013-10-30 (+28d) | 2013-10-02 → 2013-10-30 (+28d) |  |  |  |  | baseline start 2013-10-02 → 2013-10-30; baseline finish 2013-10-02 → 2013-10-30 |
