How a schedule from MS Project changed from version to version. A marks actual dates.

## Version 1 (saved 2011-02-17)

Note of the change: SVN-Revision: 1567

| ID | Task | Duration | Start | Finish | Predecessors | Total float | Constraint |
| --- | --- | --- | --- | --- | --- | --- | --- |
| 1 | Assumes 1 FTE developer on average available for dev | 1d? | 2011-01-13 | 2011-01-13 |  | 264d |  |
| 3 | Code generation itr 1 - dev | 23d | 2011-02-24 | 2011-03-28 |  | 0d | start no earlier than 2011-02-24 |
| 4 | Code generation itr 1 - QA | 10d | 2011-03-29 | 2011-04-11 | 3 | 281d |  |
| 5 | Code generation itr 2 - dev | 23d | 2011-03-29 | 2011-04-28 | 3 | 0d |  |
| 6 | Code generation itr 2 - QA | 10d | 2011-04-29 | 2011-05-12 | 5 | 258d |  |
| 7 | Code generation itr 3 - dev | 32d | 2011-04-29 | 2011-06-13 | 5 | 0d |  |
| 8 | Code generation itr 3 - QA | 10d | 2011-06-14 | 2011-06-27 | 7 | 0d |  |
| 9 | Code generation formal release | 8d | 2011-06-28 | 2011-07-07 | 8 | 0d |  |
| 10 | UPT itr 1 - dev | 20d | 2011-07-08 | 2011-08-04 | 9 | 0d |  |
| 11 | UPT itr 1 - QA | 10d | 2011-08-05 | 2011-08-18 | 10 | 109d |  |
| 12 | UPT itr 2 - dev | 20d | 2011-08-05 | 2011-09-01 | 10 | 0d |  |
| 13 | UPT itr 2 - QA | 10d | 2011-09-02 | 2011-09-15 | 12 | 89d |  |
| 14 | UPT itr 3 - dev | 20d | 2011-09-02 | 2011-09-29 | 12 | 0d |  |
| 15 | UPT itr 3 - QA | 10d | 2011-09-30 | 2011-10-13 | 14 | 0d |  |
| 16 | UPT formal release | 8d | 2011-10-14 | 2011-10-25 | 15 | 0d |  |
| 17 | technology stack upgrade | 42d | 2011-10-26 | 2011-12-22 | 16 | 0d |  |
| 18 | documentation improvements | 15d | 2011-12-23 | 2012-01-12 | 17 | 0d |  |
| 19 | 508 compliance review and plan | 1d? | 2012-01-13 | 2012-01-13 | 18 | 0d |  |
| 20 | ECCF compliance review and plan | 1d? | 2012-01-16 | 2012-01-16 | 19 | 0d |  |
| 21 | Effect of NCI CBIIT’s Enterprise Security Program on CSM | 1d? | 2012-01-17 | 2012-01-17 | 20 | 0d |  |
| 22 | Effect of NCI CBIIT’s Enterprise Security Program on CLM | 1d? | 2012-01-18 | 2012-01-18 | 21 | 0d |  |

## Version 2 (saved 2011-04-11)

Note of the change: SVN-Revision: 1568

Last finish 2012-01-18 → 2011-11-24 (-55d). Complete tasks 0 → 1.

Added:

| ID | Task | Duration | Start | Finish | Predecessors | Constraint |
| --- | --- | --- | --- | --- | --- | --- |
| 3 | 4.1.3 release (fix for GF 27529) | 8d | 2011-02-24 A | 2011-03-07 |  | start no earlier than 2011-02-24 |
| 4 | Apply new SDK test generation to 4.2 | 3d | 2011-02-24 A | 2011-02-28 A |  | start no earlier than 2011-02-24 |
| 5 | Improve SDK test generation | 5d | 2011-03-01 | 2011-03-07 | 4 |  |
| 6 | Document on hand-generating ILS filters | 3d | 2011-03-07 | 2011-03-09 |  | start no earlier than 2011-03-07 |
| 7 | **UPT improvement plan** | 26d? | 2011-03-01 | 2011-04-05 |  | start no earlier than 2011-03-01 |
| 8 | initial plan with estimates | 4d | 2011-03-01 | 2011-03-04 |  |  |
| 9 | user review | 10d | 2011-03-07 | 2011-03-18 | 8 |  |
| 10 | plan updates | 2d | 2011-03-21 | 2011-03-22 | 9 |  |
| 11 | approval by TRB | 10d? | 2011-03-23 | 2011-04-05 | 10 |  |
| 13 | QA preparation | 20d | 2011-03-07 | 2011-04-01 |  |  |
| 14 | CSM/UPT/CGMM | 10d | 2011-03-07 | 2011-03-18 |  |  |
| 15 | CSM/UPT/CGMM QA | 5d | 2011-04-04 | 2011-04-08 | 14, 13 |  |
| 16 | CLM/LLT | 5d | 2011-03-21 | 2011-03-25 | 14 |  |
| 17 | CLM/LLT QA | 5d | 2011-04-11 | 2011-04-15 | 16, 15 |  |
| 18 | XMI Handler | 2d | 2011-03-28 | 2011-03-29 | 16 |  |
| 19 | XMI Handler QA | 3d | 2011-04-18 | 2011-04-20 | 18, 17 |  |
| 20 | ISO 21090 | 5d | 2011-03-30 | 2011-04-05 | 18 |  |
| 21 | ISO 21090 QA | 3d | 2011-04-21 | 2011-04-25 | 20, 19 |  |
| 22 | SDK | 20d | 2011-04-06 | 2011-05-03 | 20, 18 |  |
| 23 | SDK QA | 15d | 2011-05-04 | 2011-05-24 | 22, 21 |  |
| 24 | Workbench | 5d | 2011-05-04 | 2011-05-10 | 22 |  |
| 25 | Workbench QA | 3d | 2011-05-25 | 2011-05-27 | 24, 23 |  |
| 26 | Release activities | 10d | 2011-05-30 | 2011-06-10 | 25 |  |
| 27 | **UPT improvements** | 78d? | 2011-06-10 | 2011-09-28 | 7, 12 |  |
| 28 | **CSM lockout issues, assume include here, needs more direction** | 0d | 2011-06-10 | 2011-06-10 |  |  |
| 29 | GF 29450 CSM lockout | 0d | 2011-06-10 | 2011-06-10 |  |  |
| 30 | GF 30019 Disable lockouts (fix with GF 29450) | 0d | 2011-06-10 | 2011-06-10 |  |  |
| 31 | GF 30372 Note "must replace" properties in sample properties files | 0d | 2011-06-10 | 2011-06-10 |  |  |
| 32 | GF 30433 Synchronization with app when adding or modifying groups | 0d | 2011-06-10 | 2011-06-10 |  |  |
| 33 | GF 30434 Improved error messages | 0d | 2011-06-10 | 2011-06-10 |  |  |
| 34 | GF 30435 Allow users to change passwords (instead of admin) | 0d | 2011-06-10 | 2011-06-10 |  |  |
| 35 | GF 30436 Better LDAP integration | 0d | 2011-06-10 | 2011-06-10 |  |  |
| 36 | GF 30437 Improve UPT documentation and examples | 0d | 2011-06-10 | 2011-06-10 |  |  |
| 37 | CSM lockout issues? | 1d? | 2011-06-13 | 2011-06-13 |  |  |
| 45 | Exception handling GF 30382 | 1d | 2011-09-29 | 2011-09-29 | 27 |  |
| 46 | ISO/postgres GF 30268 | 20d? | 2011-09-30 | 2011-10-27 | 45 |  |
| 47 | GF 29975 Support case sensitivity on a field-by-field basis - NOT APPROVED | 1d? | 2011-10-28 | 2011-10-28 | 46 |  |

Removed: 3 Code generation itr 1 - dev; 4 Code generation itr 1 - QA; 5 Code generation itr 2 - dev; 6 Code generation itr 2 - QA; 7 Code generation itr 3 - dev; 8 Code generation itr 3 - QA; 9 Code generation formal release

Changed:

| ID | Task | Start | Finish | Duration | Total float | Predecessors | Other |
| --- | --- | --- | --- | --- | --- | --- | --- |
| 12 | **technology stack upgrade** | 2011-10-26 → 2011-03-07 (-233d) | 2011-12-22 → 2011-06-10 (-195d) | 42d → 70d |  | 44 → none | constraint none → start no earlier than 2011-03-07 |
| 38 | UPT itr 1 - dev | 2011-07-08 → 2011-06-13 (-25d) | 2011-08-04 → 2011-07-08 (-27d) |  |  | Code generation formal release → none |  |
| 39 | UPT itr 1 - QA | 2011-08-05 → 2011-07-11 (-25d) | 2011-08-18 → 2011-07-22 (-27d) |  | 109d → 48d |  |  |
| 40 | UPT itr 2 - dev | 2011-08-05 → 2011-07-11 (-25d) | 2011-09-01 → 2011-08-05 (-27d) |  |  |  |  |
| 41 | UPT itr 2 - QA | 2011-09-02 → 2011-08-08 (-25d) | 2011-09-15 → 2011-08-19 (-27d) |  | 89d → 28d |  |  |
| 42 | UPT itr 3 - dev | 2011-09-02 → 2011-08-08 (-25d) | 2011-09-29 → 2011-09-02 (-27d) |  |  |  |  |
| 43 | UPT itr 3 - QA | 2011-09-30 → 2011-09-05 (-25d) | 2011-10-13 → 2011-09-16 (-27d) |  |  |  |  |
| 44 | UPT formal release | 2011-10-14 → 2011-09-19 (-25d) | 2011-10-25 → 2011-09-28 (-27d) |  |  |  |  |
| 48 | documentation improvements | 2011-12-23 → 2011-10-31 (-53d) | 2012-01-12 → 2011-11-18 (-55d) |  |  | 12 → 47 |  |
| 49 | 508 compliance review and plan | 2012-01-13 → 2011-11-21 (-53d) | 2012-01-13 → 2011-11-21 (-53d) |  |  |  |  |
| 50 | ECCF compliance review and plan | 2012-01-16 → 2011-11-22 (-55d) | 2012-01-16 → 2011-11-22 (-55d) |  |  |  |  |
| 51 | Effect of NCI CBIIT’s Enterprise Security Program on CSM | 2012-01-17 → 2011-11-23 (-55d) | 2012-01-17 → 2011-11-23 (-55d) |  |  |  |  |
| 52 | Effect of NCI CBIIT’s Enterprise Security Program on CLM | 2012-01-18 → 2011-11-24 (-55d) | 2012-01-18 → 2011-11-24 (-55d) |  |  |  |  |
