How a schedule from MS Project changed from version to version. A marks actual dates.

## Version 1 (saved 2011-04-12)

Note of the change: SVN-Revision: 1533

| ID | WBS | Task | Duration | Start | Finish | Predecessors | Complete | Total float | Constraint |
| --- | --- | --- | --- | --- | --- | --- | --- | --- | --- |
| 3 | 1 | **CSM bug fixes (code - no release specified)** | 6d | 2011-03-14 A | 2011-03-21 A |  | 100% |  |  |
| 4 |  | GF 29450 CSM – Users locked out due to invalid logins may be (effectively) locked out forever | 5d | 2011-03-14 A | 2011-03-18 A |  | 100% |  | start no earlier than 2011-03-14 |
| 5 |  | GF 30372 CSM/UPT - Change UPT install.properties file to note properties that must be replaced | 1d | 2011-03-21 A | 2011-03-21 A |  | 100% |  | start no earlier than 2011-03-21 |
| 8 | 2 | **SDK 4.2.2** | 29d? | 2011-03-15 A | 2011-04-22 |  | 61% | 29d |  |
| 9 |  | GF 30729 Provide option to generate JUnit Tests for Logical Model Domain classes [already done] | 0d | 2011-03-15 A | 2011-03-15 A |  | 100% |  | start no earlier than 2011-03-15 |
| 10 |  | GF 30749 Third-Party Jars within the Code Generation Process | 5d | 2011-03-15 A | 2011-03-21 A |  | 100% |  | start no earlier than 2011-03-15 |
| 11 |  | GF 30753 Generation of the "not-null" Attribute with the "property" Element Node (not-null constraints) | 3d | 2011-03-30 A | 2011-04-01 A |  | 100% |  | start no earlier than 2011-03-30 |
| 12 |  | GF 30748 Bi-directional self-associations | 5d | 2011-04-04 A | 2011-04-08 A |  | 100% |  | start no earlier than 2011-04-04 |
| 13 |  | GF 30510 Support for interfaces | 9d | 2011-03-30 A | 2011-04-11 A |  | 100% |  | start no earlier than 2011-03-30 |
| 14 |  | Dev testing and documentation | 4d | 2011-04-12 | 2011-04-15 | 9, 10, 11, 12, 13 |  | 29d |  |
| 15 |  | QA | 5d | 2011-04-18 | 2011-04-22 | 14 |  | 29d |  |
| 16 |  | Introduce extension for 4.2.2 (Community Project) | 5d? | 2011-04-18 | 2011-04-22 | 14 |  | 29d |  |
| 17 |  | Optional QA for 30508, 30510, 30511, 30524 | 0d? | 2011-04-22 | 2011-04-22 | 16 |  | 29d |  |
| 20 | 3 | **UPT Improvement Plan** | 32d? | 2011-03-14 A | 2011-04-26 |  | 20% | 89d |  |
| 21 |  | Analysis of existing trackers | 6d | 2011-03-14 A | 2011-03-21 A |  | 100% |  | start no earlier than 2011-03-14 |
| 22 |  | Requirements gathering with NBIA | 20d? | 2011-03-28 | 2011-04-22 |  |  | 89d | start no earlier than 2011-03-28 |
| 23 |  | Draft project plan development | 2d | 2011-04-21 | 2011-04-22 | 21, 22FF |  | 89d |  |
| 24 |  | Review plan with user representatives and amend | 1d? | 2011-04-25 | 2011-04-25 | 23 |  | 89d |  |
| 25 |  | Plan approval | 1d? | 2011-04-26 | 2011-04-26 | 24 |  | 89d |  |
| 28 | 4 | **Analysis** | 53d? | 2011-01-13 A | 2011-03-28 |  | 83% | 200d |  |
| 29 |  | Eclipse/SDK comparison and gap analysis | 5d | 2011-03-22 A | 2011-03-28 A |  | 100% |  | start no earlier than 2011-03-22 |
| 30 |  | User requirements/need for SDK (combined with Eclipse/SDK analysis) | 1d? | 2011-01-13 | 2011-01-13 |  |  | 252d |  |
| 33 | 5 | **SDK 4.1.3 - GF 27529 patch to 4.1.2 (for caBIO)** | 3d? | 2011-03-14 A | 2011-03-16 |  |  | 208d |  |
| 34 |  | apply fix for GF 27529 to 4.1.2 [already done] | 0d | 2011-03-14 A | 2011-03-14 A |  | 100% |  | start no earlier than 2011-03-14 |
| 35 |  | QA [low priority] | 2d? | 2011-03-14 | 2011-03-15 | 34 |  | 208d | start no earlier than 2011-02-17 |
| 36 |  | Gforge post | 1d | 2011-03-16 | 2011-03-16 | 35 |  | 208d |  |
| 39 | 6 | **Technology stack upgrade** | 62d | 2011-04-25 | 2011-07-19 | 8 |  | 29d |  |
| 40 |  | CSM/UPT/CGMM | 10d | 2011-04-25 | 2011-05-06 |  |  | 29d |  |
| 41 |  | CLM/LLT | 5d | 2011-05-09 | 2011-05-13 | 40 |  | 29d |  |
| 42 |  | XMI Handler | 2d | 2011-05-16 | 2011-05-17 | 41 |  | 29d |  |
| 43 |  | ISO 21090 | 5d | 2011-05-18 | 2011-05-24 | 42 |  | 29d |  |
| 44 |  | SDK | 15d | 2011-05-25 | 2011-06-14 | 43 |  | 29d |  |
| 45 |  | Workbench | 5d | 2011-06-15 | 2011-06-21 | 44 |  | 29d |  |
| 46 |  | QA lag (assumes ongoing QA) | 10d | 2011-06-22 | 2011-07-05 | 45 |  | 29d |  |
| 47 |  | Release activities | 10d | 2011-07-06 | 2011-07-19 | 46 |  | 29d |  |
| 50 | 7 | **UPT enhancements** | 90d | 2011-07-20 | 2011-11-22 | 20, 39 |  | 29d |  |
| 51 |  | Undefined | 90d | 2011-07-20 | 2011-11-22 |  |  | 29d |  |
| 54 | 8 | **Other unplanned** | 1d? | 2011-01-13 | 2011-01-13 |  |  | 252d |  |
| 55 |  | 508 compliance review and plan | 1d? | 2011-01-13 | 2011-01-13 |  |  | 252d | start no earlier than 2011-01-13 |
| 56 |  | ECCF compliance review and plan | 1d? | 2011-01-13 | 2011-01-13 |  |  | 252d | start no earlier than 2011-01-13 |
| 57 |  | Effect of NCI CBIIT’s Enterprise Security Program on CSM | 1d? | 2011-01-13 | 2011-01-13 |  |  | 252d | start no earlier than 2011-01-13 |
| 58 |  | Effect of NCI CBIIT’s Enterprise Security Program on CLM | 1d? | 2011-01-13 | 2011-01-13 |  |  | 223d | start no earlier than 2011-01-13 |
| 61 | 9 | **Ongoing support** | 253d | 2011-01-13 | 2012-01-02 |  |  | 0d |  |
| 62 |  | CLM, CSM/UPT, SDK, etc. | 253d | 2011-01-13 | 2012-01-02 |  |  | 0d | start no earlier than 2011-01-13 |
| 63 |  | SDK | 253d | 2011-01-13 | 2012-01-02 |  |  | 0d |  |

## Version 2 (saved 2011-06-13)

Note of the change: SVN-Revision: 1566

Last finish 2012-01-02 → 2012-01-19 (+17d). Complete tasks 10 → 40.

Added:

| ID | Task | Duration | Start | Finish | Predecessors | Constraint | Resources |
| --- | --- | --- | --- | --- | --- | --- | --- |
| 9 | Design | 2d | 2011-03-30 A | 2011-03-31 A |  | start no earlier than 2011-03-30 | Prasad |
| 10 | XMI Handler | 3d | 2011-04-01 A | 2011-04-05 A | 9 |  | Prasad |
| 11 | Code generation | 3d | 2011-04-06 A | 2011-04-08 A | 10 |  | Prasad |
| 12 | Test | 1d | 2011-04-11 A | 2011-04-11 A | 11 |  | Prasad |
| 14 | Ivy support (XMI handler) | 2d | 2011-04-18 A | 2011-04-19 A | 13 |  | Prasad [25%] |
| 15 | QA test plan | 3d | 2011-04-14 A | 2011-04-18 A | 13FF | must start on 2011-04-14 | Xiaoling |
| 17 | QA support | 7d | 2011-04-20 A | 2011-04-28 A | 16SS |  | Prasad [25%] |
| 21 | **SDK 4.2.3 alternate database testing** | 31d? | 2011-06-08 | 2011-07-21 |  |  |  |
| 22 | Dev-supplied JUnits on Oracle | 2d | 2011-06-13 | 2011-06-14 |  | start no earlier than 2011-06-13 | Xiaoling |
| 23 | Smoke-test on Oracle | 2d | 2011-06-15 | 2011-06-16 | 22 |  | Xiaoling |
| 24 | Postgres installation issues | 5d? | 2011-06-08 | 2011-06-14 |  | start no earlier than 2011-06-08 |  |
| 25 | Dev-supplied JUnits on Postgres | 2d | 2011-06-17 | 2011-06-20 | 24, 23 |  | Xiaoling |
| 26 | Smoke-test on Postgres | 2d | 2011-06-21 | 2011-06-22 | 25 |  | Xiaoling |
| 27 | (Full regression on Oracle) [unlikely] | 10d? | 2011-06-23 | 2011-07-07 | 26 |  | Xiaoling |
| 28 | (Full regression on Postgres) [unlikely] | 10d? | 2011-07-08 | 2011-07-21 | 27 |  | Xiaoling |
| 31 | **GF 31030 - CSM/UPT patch for EMMES (UPT-Tomcat support)** | 42d? | 2011-04-21 A | 2011-06-20 |  |  |  |
| 32 | Installation instructions for Tomcat | 3d | 2011-04-21 A | 2011-05-04 A |  | start no earlier than 2011-04-21 | Prasad [75%] |
| 33 | UPT fixes | 6d | 2011-04-25 A | 2011-05-02 A |  | start no earlier than 2011-04-25 | Prasad [75%] |
| 34 | packaging | 1d | 2011-05-12 A | 2011-05-12 A | 33 | start no earlier than 2011-05-12 | Prasad |
| 35 | QA (limited to Tomcat and mySQL) | 7d | 2011-05-13 A | 2011-05-23 A | 34 | start no earlier than 2011-05-04 | Aynur |
| 36 | Release activities | 2d? | 2011-05-24 A | 2011-05-25 A | 35 |  | Prasad |
| 37 | **Alternate distribution packages** | 10d | 2011-06-07 A | 2011-06-20 |  |  |  |
| 38 | Smoke-test GUI installer distribution | 4d | 2011-06-07 A | 2011-06-10 A |  | start no earlier than 2011-06-07 | Greg [25%] |
| 39 | Smoke-test upgrade distribution | 4d | 2011-06-15 | 2011-06-20 |  | start no earlier than 2011-06-15 | Greg [25%] |
| 43 | CLM/LLT (base CLM only, CSM relies on CLM) | 1d | 2011-05-13 A | 2011-05-13 A |  | start no earlier than 2011-05-13 | Prasad |
| 45 | JDK (migrate - done for a patch) | 1d | 2011-05-16 A | 2011-05-16 A |  | start no earlier than 2011-05-11 | Prasad |
| 46 | JBoss (migrate - done for a patch) | 1d | 2011-05-17 A | 2011-05-17 A | 45 |  | Prasad |
| 47 | UPT/Tomcat (migrate - in progress for a patch) | 1d | 2011-05-18 A | 2011-05-18 A | 46 |  | Prasad |
| 48 | Other | 2d | 2011-05-23 A | 2011-05-26 A | 47 | start no earlier than 2011-05-23 | Prasad |
| 49 | CGMM | 6d | 2011-06-01 A | 2011-06-08 A |  | start no earlier than 2011-06-01 | Prasad |
| 53 | JDK | 1d | 2011-06-21 | 2011-06-21 |  | start no earlier than 2011-06-21 | Prasad |
| 54 | Jboss | 2d | 2011-06-22 | 2011-06-23 | 53 |  | Prasad [50%] |
| 55 | Spring | 3d | 2011-06-24 | 2011-06-28 | 54 |  | Prasad [50%] |
| 56 | Hibernate | 2d | 2011-06-29 | 2011-06-30 | 55 |  | Prasad |
| 57 | Other technologies | 3d | 2011-07-01 | 2011-07-06 | 56 |  | Prasad |
| 58 | SDK "future" - Spring | 1d? | 2011-07-07 | 2011-07-07 | 52 |  |  |
| 59 | SDK "future" - Hibernate (can be dropped if too many problems) | 1d? | 2011-07-08 | 2011-07-08 | 58 |  |  |
| 60 | CLM/LLT & CSM/UPT/CGMM "future" | 3d? | 2011-07-11 | 2011-07-13 | 59 | start no earlier than 2011-06-16 | Prasad |
| 63 | (WebSSO?) | 0d | 2011-07-27 | 2011-07-27 | 62 |  |  |
| 72 | Internal review of proposed features | 0.25d | 2011-05-27 A | 2011-05-27 A | 71 | start no earlier than 2011-05-27 |  |
| 73 | **Research on use of systems-hosted older versions** | 7d? | 2011-06-13 | 2011-06-21 | 72 |  |  |
| 74 | Formulate queries | 2d | 2011-06-13 | 2011-06-14 |  | start no earlier than 2011-06-13 | Greg [25%] |
| 75 | Lead time and systems response (est.) | 5d? | 2011-06-15 | 2011-06-21 | 74 |  |  |
| 76 | Follow up review of proposed features | 0.25d | 2011-06-22 | 2011-06-22 | 75 | start no earlier than 2011-06-01 |  |
| 77 | Draft project plan (complete) | 2d | 2011-06-27 | 2011-06-28 | 76 | start no earlier than 2011-06-27 | Greg [25%] |
| 83 | GF 30436 Better LDAP integration when adding users to UPT | 5d | 2011-08-18 | 2011-08-24 |  |  |  |
| 84 | GF 22524 Authentication - DataSource LoginModule | 3d | 2011-08-25 | 2011-08-29 | 83 |  |  |
| 85 | GF 1158/2830 Implement paging for UPT | 10d | 2011-08-30 | 2011-09-13 | 84 |  |  |
| 86 | GF 22540/29002/30435 Password changes | 10d | 2011-09-14 | 2011-09-27 | 85 |  |  |
| 87 | GF 15527 CSM username field length should be increased to 100 characters | 1d | 2011-09-28 | 2011-09-28 | 86 |  |  |
| 88 | GF 19369 Indicate UPT /CSM version names in the Application Header after login | 2d | 2011-09-29 | 2011-09-30 | 87 |  |  |
| 89 | GF 631/22236 Password recovery | 5d | 2011-10-03 | 2011-10-07 | 88 |  |  |
| 90 | GF 30019 User lockout on unsuccessful logins | 5d | 2011-10-10 | 2011-10-14 | 89 |  |  |
| 91 | GF 2913 Add an Active Flag for users | 5d | 2011-10-17 | 2011-10-21 | 90 |  |  |
| 92 | GF 24404 UPT GUI installer should validate database connection info | 3d | 2011-10-24 | 2011-10-26 | 91 |  |  |
| 93 | GF 30372 Change UPT install.properties file to note properties that must be replaced | 1d | 2011-10-27 | 2011-10-27 | 92 |  |  |
| 94 | GF 1154/30433 Synchronization between UPT and supported application | 15d | 2011-10-28 | 2011-11-17 | 93 |  |  |
| 95 | GF 24965 Documentation changes from CDL installation | 1d | 2011-11-18 | 2011-11-18 | 94 |  |  |
| 96 | GF 24116 Need stronger access control | 10d | 2011-11-21 | 2011-12-02 | 95 |  |  |
| 97 | GF 2914 Auto-email new user or associated user | 4d | 2011-12-05 | 2011-12-08 | 96 |  |  |
| 98 | User friendly UPT UI | 15d | 2011-12-09 | 2011-12-29 | 97 |  |  |
| 99 | Customizable UPT UI | 15d | 2011-12-30 | 2012-01-19 | 98 |  |  |
| 105 | caGrid with JBoss 5.1 | 3d | 2011-05-05 A | 2011-05-12 A |  | start no earlier than 2011-05-05 | Prasad |
| 106 | Ideal architecture for separation of SDK and caGrid | 4d | 2011-06-09 A | 2011-06-15 |  | start no earlier than 2011-06-09 | Prasad [50%] |
| 107 | Evaluate caTissue source with respect to potential use of SDK | 3d? | 2011-06-16 | 2011-06-20 |  | start no earlier than 2011-06-16 | Prasad |
| 108 | caTissue Jamboree | 3d | 2011-06-22 | 2011-06-24 |  | finish no earlier than 2011-06-24 | Prasad [50%]; Greg [25%] |
| 109 | Investigate problem with caGrid-flavored CQL and SDK 4.4 w/ ISO data types despite workaround | 12d | 2011-06-20 | 2011-07-06 |  | start no earlier than 2011-06-20 | Dan [25%] |
| 110 | Globus WSRF (caGrid) and JBoss 5.1 | 1d? | 2011-06-13 | 2011-06-13 |  | start no earlier than 2011-06-13 | Prasad |
| 125 | General support through 6/3 | 53d | 2011-03-22 A | 2011-06-03 A |  | finish no earlier than 2011-06-03 | Dan [25%] |
| 126 | General support 6/6-6/10 | 5d | 2011-06-06 A | 2011-06-10 |  | start no earlier than 2011-06-06 | Dan [25%] |
| 127 | General support 6/13-6/17 | 5d | 2011-06-13 | 2011-06-17 |  | start no earlier than 2011-06-13 | Dan [25%] |
| 130 | **Project Management to date (only large tasks called out)** | 69d | 2011-03-14 A | 2011-06-17 |  |  |  |
| 131 | PM and misc work through 6/3 | 59d | 2011-03-14 A | 2011-06-03 A |  | finish no earlier than 2011-06-03 | Greg [50%] |
| 132 | General PM 6/6-6/10 | 5d | 2011-06-06 A | 2011-06-10 A |  | start no earlier than 2011-06-06 | Greg [25%] |
| 133 | General PM 6/13-6/17 | 5d | 2011-06-13 | 2011-06-17 |  | start no earlier than 2011-06-13 | Greg [25%] |

Removed: 16 Introduce extension for 4.2.2 (Community Project); 51 Undefined; 62 CLM, CSM/UPT, SDK, etc.; 63 SDK

Changed:

| ID | Task | Start | Finish | Duration | Complete | Total float | Predecessors | Other |
| --- | --- | --- | --- | --- | --- | --- | --- | --- |
| 3 | **SDK 4.2.3** |  | 2011-04-22 → 2011-05-24 A (+32d) | 29d? → 50.7d | 61% → 100% | 29d → none |  | was named SDK 4.2.2 |
| 5 | GF 30749 Third-Party Jars within the Code Generation Process |  |  |  |  |  |  | resources Dan → Dan [75%] |
| 8 | **GF 30510 Support (code generation) for interfaces** |  |  |  |  |  |  | was named GF 30510 Support for interfaces; constraint start no earlier than 2011-03-30 → none; resources Prasad → none |
| 13 | Dev testing and documentation | 2011-04-12 A | 2011-04-15 A |  | 0% → 100% | 29d → none | 4, 5, 6, 7, 8 → 4, 5, 6, 7, 12 |  |
| 16 | QA | 2011-04-18 → 2011-04-20 A (+2d) | 2011-04-22 → 2011-05-02 A (+10d) | 5d → 9d | 0% → 100% | 29d → none | 13 → 14, 15 |  |
| 18 | Optional QA for 30508, 30510, 30511, 30524 | 2011-04-22 → 2011-05-09 A (+17d) | 2011-04-22 → 2011-05-24 A (+32d) | 0d? → 10d | 0% → 100% | 29d → none | Introduce extension for 4.2.2 (Community Project) → 16 | constraint none → start no earlier than 2011-05-09 |
| 42 | **Technology stack upgrade to 2010 "current" and "future"** | 2011-04-25 → 2011-05-13 A (+18d) | 2011-07-19 → 2011-08-17 (+29d) | 62d → 67d? | 0% → 27% | 29d → 0d | 3 → none | was named Technology stack upgrade |
| 44 | **CSM/UPT/CGMM** | 2011-04-25 → 2011-05-16 A (+21d) | 2011-05-06 → 2011-06-08 A (+33d) | 10d → 17d | 0% → 100% | 29d → none | none → 43 | resources Prasad → none |
| 50 | CLM/LLT (LLT relies on CSM) | 2011-05-09 → 2011-05-27 A (+18d) | 2011-05-13 → 2011-05-31 A (+18d) | 5d → 2d | 0% → 100% | 29d → none |  | was named CLM/LLT |
| 51 | XMI Handler | 2011-05-16 → 2011-06-09 A (+24d) | 2011-05-17 → 2011-06-15 (+29d) | 2d → 4d | 0% → 50% | 29d → 3d | 50 → none | constraint none → start no earlier than 2011-06-09; resources Prasad → Prasad [50%] |
| 52 | **SDK** | 2011-05-25 → 2011-06-21 (+27d) | 2011-06-14 → 2011-07-06 (+22d) | 15d → 11d |  | 29d → 0d | 62 → 51 | constraint none → start no earlier than 2011-06-20; resources Prasad → none |
| 61 | Workbench ("current" and "future") | 2011-06-15 → 2011-07-14 (+29d) | 2011-06-21 → 2011-07-20 (+29d) |  |  | 29d → 0d | 52 → 60 | was named Workbench |
| 62 | ISO 21090 ("current" and "future") | 2011-05-18 → 2011-07-21 (+64d) | 2011-05-24 → 2011-07-27 (+64d) |  |  | 29d → 0d | 51 → 61 | was named ISO 21090 |
| 64 | QA lag [assumes ongoing QA, not in plan yet] | 2011-06-22 → 2011-07-28 (+36d) | 2011-07-05 → 2011-08-03 (+29d) | 10d → 5d |  | 29d → 0d | 61 → 63 | was named QA lag (assumes ongoing QA); resources Xiaoling → none |
| 65 | Release activities | 2011-07-06 → 2011-08-04 (+29d) | 2011-07-19 → 2011-08-17 (+29d) |  |  | 29d → 0d |  |  |
| 68 | **UPT Improvement Plan** |  | 2011-04-26 → 2011-07-14 (+79d) | 32d? → 87d? | 20% → 58% | 89d → 24d |  |  |
| 70 | Requirements gathering with NBIA | 2011-03-28 A | 2011-04-22 A |  | 0% → 100% | 89d → none |  |  |
| 71 | Draft project plan development (partial) | 2011-04-21 → 2011-05-13 A (+22d) | 2011-04-22 → 2011-05-16 A (+24d) |  | 0% → 100% | 89d → none |  | was named Draft project plan development; constraint none → start no earlier than 2011-05-13; resources none → Greg [50%] |
| 78 | Review plan with user representatives and amend | 2011-04-25 → 2011-06-29 (+65d) | 2011-04-25 → 2011-07-13 (+79d) | 1d? → 10d? |  | 89d → 22d | 71 → 77 |  |
| 79 | Plan approval | 2011-04-26 → 2011-07-14 (+79d) | 2011-04-26 → 2011-07-14 (+79d) |  |  | 89d → 22d |  |  |
| 82 | **UPT enhancements [changes expected]** | 2011-07-20 → 2011-08-18 (+29d) | 2011-11-22 → 2012-01-19 (+58d) | 90d → 110d |  | 29d → 0d |  | was named UPT enhancements |
| 102 | **Analysis** | 2011-01-13 A → 2011-03-22 A (+68d) | 2011-03-28 → 2011-07-06 (+100d) | 53d? → 75d? | 83% → 38% | 200d → 140d |  |  |
| 104 | User requirements/need for SDK (combined with Eclipse/SDK analysis) | 2011-01-13 → 2011-04-15 A (+92d) | 2011-01-13 → 2011-04-19 A (+96d) | 1d? → 3d | 0% → 100% | 252d → none |  | constraint none → start no earlier than 2011-04-15; resources none → Prasad [75%] |
| 118 | **SDK 4.1.3 - GF 27529 patch to 4.1.2 (for caBIO)** |  | 2011-03-16 → 2011-03-14 (-2d) | 3d? → 0d |  | 208d → 221d |  |  |
| 120 | QA [low priority] [deferred indefinitely] |  | 2011-03-15 → 2011-03-14 (-1d) | 2d? → 0d |  | 208d → 221d |  | was named QA [low priority]; resources not scheduled → none |
| 121 | Gforge post [no longer applicable] | 2011-03-16 → 2011-03-14 (-2d) | 2011-03-16 → 2011-03-14 (-2d) | 1d → 0d |  | 208d → 221d |  | was named Gforge post; resources not scheduled → none |
| 124 | **General support to date (only large tasks called out)** | 2011-01-13 → 2011-03-22 A (+68d) | 2012-01-02 → 2011-06-17 (-199d) | 253d → 63d | 0% → 90% | 0d → 152d |  | was named Ongoing support |

## Version 3 (saved 2011-06-14)

Note of the change: SVN-Revision: 1569

Last finish stays 2012-01-19. Complete tasks 40 → 42.

Changed:

| ID | Task | Start | Finish | Duration | Complete | Total float | Other |
| --- | --- | --- | --- | --- | --- | --- | --- |
| 68 | **UPT Improvement Plan** |  |  |  | 58% → 60% | 24d → 22d |  |
| 71 | Draft project plan development (partial) |  |  |  |  |  | resources Greg [50%] → none |
| 73 | **Research on use of systems-hosted older versions** | 2011-06-13 A |  |  | 0% → 14% |  |  |
| 74 | Formulate queries | 2011-06-13 A |  |  | 0% → 50% | 26.25d → 26.75d |  |
| 102 | **Analysis** |  |  |  | 38% → 41% |  |  |
| 107 | Test Globus WSRF (caGrid) and JBoss 5.1 | 2011-06-13 A | 2011-06-13 A | 1d? → 1d | 0% → 100% | 156d → none | was named Globus WSRF (caGrid) and JBoss 5.1 |
| 124 | **General support to date (only large tasks called out)** |  |  |  | 90% → 94% |  |  |
| 126 | General support 6/6-6/10 |  | 2011-06-10 A |  | 80% → 100% | 157d → none |  |
| 127 | General support 6/13-6/17 | 2011-06-13 A |  |  | 0% → 20% |  |  |
| 130 | **Project Management to date (only large tasks called out)** |  |  |  | 93% → 94% |  |  |
| 133 | General PM 6/13-6/17 | 2011-06-13 A |  |  | 0% → 20% |  |  |

## Version 4 (saved 2011-06-24)

Note of the change: SVN-Revision: 1574

Last finish 2012-01-19 → 2012-01-27 (+8d). Complete tasks 42 → 57.

Added:

| ID | Task | Duration | Start | Finish | Predecessors | Constraint | Resources |
| --- | --- | --- | --- | --- | --- | --- | --- |
| 25 | Build/deployment problems with Postgres | 2d | 2011-06-21 A | 2011-06-22 A | 24, 23 |  | Xiaoling |
| 57 | XMI Handler (formalized) | 1d? | 2011-07-01 | 2011-07-01 | 51 | start no earlier than 2011-06-23 | Prasad |
| 65 | **QA 2010 "current"** | 23d | 2011-06-27 | 2011-07-28 |  |  |  |
| 66 | CLM | 3d | 2011-06-27 | 2011-06-29 | 49 | start no earlier than 2011-06-27 | Aynur |
| 67 | CSM | 6d | 2011-06-30 | 2011-07-08 | 43, 66 | start no earlier than 2011-06-24 | Aynur |
| 68 | SDK | 6d | 2011-07-01 | 2011-07-11 | 51 | start no earlier than 2011-06-24 | Xiaoling |
| 69 | Workbench | 3d | 2011-07-12 | 2011-07-14 | 68 | start no earlier than 2011-06-24 | Xiaoling |
| 70 | ISO 21090 library | 3d | 2011-07-26 | 2011-07-28 | 62 | start no earlier than 2011-06-24 | Aynur |
| 72 | **QA 2010 "future"** | 16d | 2011-07-12 | 2011-08-02 |  |  |  |
| 73 | CLM | 3d | 2011-07-12 | 2011-07-14 | 60 | start no earlier than 2011-06-27 | Aynur |
| 74 | CSM | 6d | 2011-07-15 | 2011-07-22 | 73, 60 | start no earlier than 2011-06-24 | Aynur |
| 75 | SDK | 6d | 2011-07-15 | 2011-07-22 | 59, 69 | start no earlier than 2011-06-24 | Xiaoling |
| 76 | Workbench | 3d | 2011-07-25 | 2011-07-27 | 75 | start no earlier than 2011-06-24 | Xiaoling |
| 77 | ISO 21090 library | 3d | 2011-07-29 | 2011-08-02 | 76, 70 | start no earlier than 2011-06-24 | Aynur |
| 78 | Release activities 2010 "future" | 10d | 2011-08-12 | 2011-08-25 | 72, 71 |  |  |
| 89 | Formulate subsequent queries | 2d | 2011-06-28 | 2011-06-29 | 88 |  | Greg [25%] |
| 90 | Lead time and systems response (est.) | 5d? | 2011-06-30 | 2011-07-07 | 89 |  |  |
| 124 | Review and revise caTissue/SDK analysis | 1d | 2011-06-21 A | 2011-06-21 A | 123 |  | Prasad |
| 144 | General support 6/20-6/24 | 5d | 2011-06-20 A | 2011-06-24 |  | start no earlier than 2011-06-20 | Dan [15%] |
| 151 | Update project management plan | 2d | 2011-06-22 A | 2011-06-23 A |  | start no earlier than 2011-06-22 | Greg [50%] |
| 152 | General PM 6/23-6/24 | 2d | 2011-06-23 A | 2011-06-24 |  | start no earlier than 2011-06-23 | Greg [25%] |

Removed: 27 (Full regression on Oracle) [unlikely]; 28 (Full regression on Postgres) [unlikely]

Changed:

| ID | Task | Start | Finish | Duration | Complete | Total float | Predecessors | Other |
| --- | --- | --- | --- | --- | --- | --- | --- | --- |
| 21 | **SDK 4.2.3 alternate database testing** | 2011-06-08 A | 2011-07-21 → 2011-06-28 (-23d) | 31d? → 15d? | 0% → 75% | 129d → 144d |  |  |
| 22 | Dev-supplied JUnits on Oracle | 2011-06-13 → 2011-06-14 A (+1d) | 2011-06-14 → 2011-06-15 A (+1d) |  | 0% → 100% | 132d → none |  | constraint start no earlier than 2011-06-13 → start no earlier than 2011-06-14 |
| 23 | Smoke-test and 4.2.3 regression on Oracle | 2011-06-15 → 2011-06-16 A (+1d) | 2011-06-16 → 2011-06-20 A (+4d) | 2d → 3d | 0% → 100% | 142d → none |  | was named Smoke-test on Oracle |
| 24 | Postgres installation issues | 2011-06-08 A | 2011-06-14 A |  | 0% → 100% | 145d → none |  |  |
| 26 | Dev-supplied JUnits on Postgres | 2011-06-17 → 2011-06-23 (+6d) | 2011-06-20 → 2011-06-24 (+4d) |  |  | 132d → 121d | 24, 23 → 23, 25, 24 |  |
| 27 | Smoke-test and 4.2.3 regression on Postgres | 2011-06-21 → 2011-06-27 (+6d) | 2011-06-22 → 2011-06-28 (+6d) |  |  | 142d → 121d |  | was named Smoke-test on Postgres |
| 30 | **GF 31030 - CSM/UPT patch for EMMES (UPT-Tomcat support)** |  | 2011-06-20 → 2011-06-22 A (+2d) | 42d? → 44d? | 85% → 100% | 151d → none |  |  |
| 36 | **Alternate distribution packages** |  | 2011-06-20 → 2011-06-22 A (+2d) | 10d → 12d | 50% → 100% | 151d → none |  |  |
| 38 | Smoke-test upgrade distribution | 2011-06-15 A | 2011-06-20 → 2011-06-22 A (+2d) |  | 0% → 100% | 154d → none |  |  |
| 41 | **Technology stack upgrade to 2010 "current" and "future"** |  | 2011-08-17 → 2011-08-25 (+8d) | 67d? → 73d? | 27% → 17% |  |  |  |
| 50 | XMI Handler (initial) |  | 2011-06-15 → 2011-06-10 A (-5d) | 4d → 2d | 50% → 100% | 3d → none |  | was named XMI Handler |
| 51 | **SDK** | 2011-06-21 → 2011-06-14 A (-7d) | 2011-07-06 → 2011-06-30 (-6d) | 11d → 13d | 0% → 22% |  |  | constraint start no earlier than 2011-06-20 → none |
| 52 | JDK | 2011-06-21 → 2011-06-14 A (-7d) | 2011-06-21 → 2011-06-14 A (-7d) |  | 0% → 100% | 0d → none |  | constraint start no earlier than 2011-06-21 → must start on 2011-06-14 |
| 53 | Jboss | 2011-06-22 → 2011-06-15 A (-7d) | 2011-06-23 → 2011-06-15 A (-8d) | 2d → 1d | 0% → 100% | 0d → none |  | resources Prasad [50%] → Prasad |
| 54 | Spring | 2011-06-24 → 2011-06-22 (-2d) | 2011-06-28 → 2011-06-24 (-4d) |  |  |  |  | constraint none → must start on 2011-06-22 |
| 55 | Hibernate | 2011-06-29 → 2011-06-27 (-2d) | 2011-06-30 → 2011-06-28 (-2d) |  |  |  |  |  |
| 56 | Other technologies | 2011-07-01 → 2011-06-29 (-2d) | 2011-07-06 → 2011-06-30 (-6d) | 3d → 2d |  |  |  |  |
| 58 | SDK "future" - Spring | 2011-07-07 → 2011-07-05 (-2d) | 2011-07-07 → 2011-07-05 (-2d) |  |  |  | 51 → 57 | resources none → Prasad |
| 59 | SDK "future" - Hibernate (can be dropped if too many problems) | 2011-07-08 → 2011-07-06 (-2d) | 2011-07-08 → 2011-07-06 (-2d) |  |  |  |  | resources none → Prasad |
| 60 | CLM/LLT & CSM/UPT/CGMM "future" | 2011-07-11 → 2011-07-07 (-4d) | 2011-07-13 → 2011-07-11 (-2d) |  |  |  |  |  |
| 61 | Workbench ("current" and "future") | 2011-07-14 → 2011-07-12 (-2d) | 2011-07-20 → 2011-07-18 (-2d) |  |  |  |  |  |
| 62 | ISO 21090 ("current" and "future") | 2011-07-21 → 2011-07-19 (-2d) | 2011-07-27 → 2011-07-25 (-2d) |  |  |  |  |  |
| 63 | (WebSSO?) | 2011-07-27 → 2011-07-25 (-2d) | 2011-07-27 → 2011-07-25 (-2d) |  |  | 0d → 11d |  |  |
| 64 | QA lag [assumes ongoing QA, not in plan yet] | 2011-07-28 → 2011-07-26 (-2d) | 2011-08-03 → 2011-08-01 (-2d) |  |  | 0d → 11d |  |  |
| 71 | Release activities 2010 "current" | 2011-08-04 → 2011-07-29 (-6d) | 2011-08-17 → 2011-08-11 (-6d) |  |  |  | 64 → 65 | was named Release activities |
| 81 | **UPT Improvement Plan** |  | 2011-07-14 → 2011-07-27 (+13d) | 87d? → 95.25d? | 60% → 49% | 22d → 14.75d |  |  |
| 86 | **Research on use of systems-hosted older versions** |  | 2011-06-21 → 2011-07-07 (+16d) | 7d? → 18d? | 14% → 6% | 26.75d → 14.75d |  |  |
| 87 | Formulate initial query |  | 2011-06-14 → 2011-06-13 A (-1d) | 2d → 1d | 50% → 100% | 26.75d → none |  | was named Formulate queries |
| 88 | Lead time and systems response (est.) | 2011-06-15 → 2011-06-14 (-1d) | 2011-06-21 → 2011-06-27 (+6d) | 5d? → 10d? |  | 24.75d → 14.75d |  |  |
| 91 | Follow up review of proposed features | 2011-06-22 → 2011-07-08 (+16d) | 2011-06-22 → 2011-07-08 (+16d) |  |  | 26.25d → 14.75d | 88 → 86 |  |
| 92 | Draft project plan (complete) | 2011-06-27 → 2011-07-08 (+11d) | 2011-06-28 → 2011-07-12 (+14d) |  |  | 22d → 14.75d |  |  |
| 93 | Review plan with user representatives and amend | 2011-06-29 → 2011-07-12 (+13d) | 2011-07-13 → 2011-07-26 (+13d) |  |  | 22d → 14.75d |  |  |
| 94 | Plan approval | 2011-07-14 → 2011-07-26 (+12d) | 2011-07-14 → 2011-07-27 (+13d) |  |  | 22d → 14.75d |  |  |
| 97 | **UPT enhancements [changes expected]** | 2011-08-18 → 2011-08-26 (+8d) | 2012-01-19 → 2012-01-27 (+8d) |  |  |  |  |  |
| 98 | GF 30436 Better LDAP integration when adding users to UPT | 2011-08-18 → 2011-08-26 (+8d) | 2011-08-24 → 2011-09-01 (+8d) |  |  |  |  |  |
| 99 | GF 22524 Authentication - DataSource LoginModule | 2011-08-25 → 2011-09-02 (+8d) | 2011-08-29 → 2011-09-07 (+9d) |  |  |  |  |  |
| 100 | GF 1158/2830 Implement paging for UPT | 2011-08-30 → 2011-09-08 (+9d) | 2011-09-13 → 2011-09-21 (+8d) |  |  |  |  |  |
| 101 | GF 22540/29002/30435 Password changes | 2011-09-14 → 2011-09-22 (+8d) | 2011-09-27 → 2011-10-05 (+8d) |  |  |  |  |  |
| 102 | GF 15527 CSM username field length should be increased to 100 characters | 2011-09-28 → 2011-10-06 (+8d) | 2011-09-28 → 2011-10-06 (+8d) |  |  |  |  |  |
| 103 | GF 19369 Indicate UPT /CSM version names in the Application Header after login | 2011-09-29 → 2011-10-07 (+8d) | 2011-09-30 → 2011-10-10 (+10d) |  |  |  |  |  |
| 104 | GF 631/22236 Password recovery | 2011-10-03 → 2011-10-11 (+8d) | 2011-10-07 → 2011-10-17 (+10d) |  |  |  |  |  |
| 105 | GF 30019 User lockout on unsuccessful logins | 2011-10-10 → 2011-10-18 (+8d) | 2011-10-14 → 2011-10-24 (+10d) |  |  |  |  |  |
| 106 | GF 2913 Add an Active Flag for users | 2011-10-17 → 2011-10-25 (+8d) | 2011-10-21 → 2011-10-31 (+10d) |  |  |  |  |  |
| 107 | GF 24404 UPT GUI installer should validate database connection info | 2011-10-24 → 2011-11-01 (+8d) | 2011-10-26 → 2011-11-03 (+8d) |  |  |  |  |  |
| 108 | GF 30372 Change UPT install.properties file to note properties that must be replaced | 2011-10-27 → 2011-11-04 (+8d) | 2011-10-27 → 2011-11-04 (+8d) |  |  |  |  |  |
| 109 | GF 1154/30433 Synchronization between UPT and supported application | 2011-10-28 → 2011-11-07 (+10d) | 2011-11-17 → 2011-11-25 (+8d) |  |  |  |  |  |
| 110 | GF 24965 Documentation changes from CDL installation | 2011-11-18 → 2011-11-28 (+10d) | 2011-11-18 → 2011-11-28 (+10d) |  |  |  |  |  |
| 111 | GF 24116 Need stronger access control | 2011-11-21 → 2011-11-29 (+8d) | 2011-12-02 → 2011-12-12 (+10d) |  |  |  |  |  |
| 112 | GF 2914 Auto-email new user or associated user | 2011-12-05 → 2011-12-13 (+8d) | 2011-12-08 → 2011-12-16 (+8d) |  |  |  |  |  |
| 113 | User friendly UPT UI | 2011-12-09 → 2011-12-19 (+10d) | 2011-12-29 → 2012-01-06 (+8d) |  |  |  |  |  |
| 114 | Customizable UPT UI | 2011-12-30 → 2012-01-09 (+10d) | 2012-01-19 → 2012-01-27 (+8d) |  |  |  |  |  |
| 117 | **Analysis** |  | 2011-07-06 → 2011-07-26 (+20d) | 75d? → 89d | 41% → 61% | 140d → 132d |  |  |
| 121 | Ideal architecture for separation of SDK and caGrid [incomplete, deferred indefinitely] |  | 2011-06-15 → 2011-06-10 A (-5d) | 4d → 2d | 50% → 100% | 154d → none |  | was named Ideal architecture for separation of SDK and caGrid |
| 123 | Evaluate caTissue source with respect to potential use of SDK | 2011-06-16 A | 2011-06-20 A | 3d? → 3d | 0% → 100% | 151d → none |  |  |
| 125 | caTissue Jamboree | 2011-06-22 A |  |  | 0% → 66% | 147d → 153d |  | resources Prasad [50%]; Greg [25%] → Prasad [50%] |
| 126 | Investigate problem with caGrid-flavored CQL and SDK 4.4 w/ ISO data types despite workaround | 2011-06-20 → 2011-07-11 (+21d) | 2011-07-06 → 2011-07-26 (+20d) |  |  | 140d → 132d |  | constraint start no earlier than 2011-06-20 → start no earlier than 2011-07-11 |
| 140 | **General support to date (only large tasks called out)** |  | 2011-06-17 → 2011-06-24 (+7d) | 63d → 68d | 94% → 99% | 152d → 146d |  |  |
| 143 | General support 6/13-6/17 |  | 2011-06-17 A |  | 20% → 100% | 152d → none |  | resources Dan [25%] → Dan [15%] |
| 147 | **Project Management to date (only large tasks called out)** |  | 2011-06-17 → 2011-06-24 (+7d) | 69d → 74d | 94% → 99% | 152d → 153d |  |  |
| 150 | General PM 6/13-6/17 |  | 2011-06-17 A |  | 20% → 100% | 152d → none |  |  |

## Version 5 (saved 2011-07-01)

Note of the change: SVN-Revision: 1594

Last finish 2012-01-27 → 2012-02-02 (+6d). Complete tasks 57 → 63.

Added:

| ID | Task | Duration | Start | Finish | Predecessors | Constraint | Resources |
| --- | --- | --- | --- | --- | --- | --- | --- |
| 71 | Target release date - 2010 "current" | 0d | 2011-08-11 | 2011-08-11 |  | start no earlier than 2011-08-11 |  |
| 79 | Target release date - 2010 "future" | 0d | 2011-08-25 | 2011-08-25 |  | start no earlier than 2011-08-25 |  |
| 118 | **XMI Handler** | 9d? | 2011-07-05 | 2011-07-15 |  |  |  |
| 119 | Test use of new XMI Handler modeling features with SIW and document results | 4d | 2011-07-05 | 2011-07-08 |  | start no earlier than 2011-07-05 | Greg [25%] |
| 120 | Coordinate official 1.1 release | 5d? | 2011-07-11 | 2011-07-15 | 119 | start no earlier than 2011-06-29 |  |
| 121 | Coordinate 1.2 release (tech stack upgrade)? | 5d? | 2011-07-05 | 2011-07-11 | 57 | start no earlier than 2011-06-30 |  |
| 132 | Ideal architecture for separation of SDK and caGrid | 2d | 2011-07-06 | 2011-07-07 |  | start no earlier than 2011-07-06 | Prasad |
| 152 | General support 6/27-7/1 | 5d | 2011-06-27 A | 2011-07-01 |  | start no earlier than 2011-06-27 | Dan [15%] |
| 161 | General PM 6/27-7/1 | 5d | 2011-06-27 A | 2011-07-01 |  | start no earlier than 2011-06-27 | Greg [25%] |

Removed: 64 QA lag [assumes ongoing QA, not in plan yet]

Changed:

| ID | Task | Start | Finish | Duration | Complete | Total float | Other |
| --- | --- | --- | --- | --- | --- | --- | --- |
| 21 | **SDK 4.2.3 alternate database testing** |  | 2011-06-28 → 2011-07-01 (+3d) | 15d? → 18d? | 75% → 89% | 144d → 152d |  |
| 26 | Dev-supplied JUnits on Postgres | 2011-06-23 A | 2011-06-24 A |  | 0% → 100% | 121d → none |  |
| 27 | Smoke-test and 4.2.3 regression on Postgres | 2011-06-27 A | 2011-06-28 → 2011-07-01 (+3d) | 2d → 5d | 0% → 60% | 121d → 148d |  |
| 41 | **Technology stack upgrade to 2010 "current" and "future"** |  | 2011-08-25 → 2011-08-31 (+6d) | 73d? → 77d? | 17% → 22% |  |  |
| 51 | **SDK** |  |  |  | 22% → 78% | 0d → 4d |  |
| 54 | Spring | 2011-06-22 A | 2011-06-24 A |  | 0% → 100% | 0d → none |  |
| 55 | Hibernate | 2011-06-27 A |  |  | 0% → 50% | 0d → 5d |  |
| 56 | Other technologies | 2011-06-29 A |  |  | 0% → 50% | 0d → 4d |  |
| 57 | XMI Handler (formalized) |  |  |  |  | 0d → 4d | constraint start no earlier than 2011-06-23 → none |
| 58 | SDK "future" - Spring | 2011-07-05 → 2011-07-11 (+6d) | 2011-07-05 → 2011-07-11 (+6d) |  |  |  | constraint none → start no earlier than 2011-07-11 |
| 59 | SDK "future" - Hibernate (can be dropped if too many problems) | 2011-07-06 → 2011-07-12 (+6d) | 2011-07-06 → 2011-07-12 (+6d) |  |  |  |  |
| 60 | CLM/LLT & CSM/UPT/CGMM "future" | 2011-07-07 → 2011-07-13 (+6d) | 2011-07-11 → 2011-07-15 (+4d) |  |  |  |  |
| 61 | Workbench ("current" and "future") | 2011-07-12 → 2011-07-18 (+6d) | 2011-07-18 → 2011-07-22 (+4d) |  |  |  |  |
| 62 | ISO 21090 ("current" and "future") | 2011-07-19 → 2011-07-25 (+6d) | 2011-07-25 → 2011-07-29 (+4d) |  |  |  |  |
| 63 | (WebSSO?) | 2011-07-25 → 2011-07-29 (+4d) | 2011-07-25 → 2011-07-29 (+4d) |  |  | 11d → 23d |  |
| 64 | **QA 2010 "current"** |  | 2011-07-28 → 2011-08-03 (+6d) | 23d → 27d |  |  |  |
| 66 | CSM |  |  |  |  | 17d → 14d | constraint start no earlier than 2011-06-24 → none |
| 67 | SDK | 2011-07-01 → 2011-07-05 (+4d) | 2011-07-11 → 2011-07-12 (+1d) |  |  | 1d → 7d | constraint start no earlier than 2011-06-24 → start no earlier than 2011-07-05 |
| 68 | Workbench | 2011-07-12 → 2011-07-13 (+1d) | 2011-07-14 → 2011-07-15 (+1d) |  |  | 1d → 7d |  |
| 69 | ISO 21090 library | 2011-07-26 → 2011-08-01 (+6d) | 2011-07-28 → 2011-08-03 (+6d) |  |  |  |  |
| 70 | Release activities 2010 "current" | 2011-07-29 → 2011-08-04 (+6d) | 2011-08-11 → 2011-08-17 (+6d) |  |  |  |  |
| 72 | **QA 2010 "future"** | 2011-07-12 → 2011-07-18 (+6d) | 2011-08-02 → 2011-08-08 (+6d) |  |  |  |  |
| 73 | CLM | 2011-07-12 → 2011-07-18 (+6d) | 2011-07-14 → 2011-07-20 (+6d) |  |  | 7d → 14d |  |
| 74 | CSM | 2011-07-15 → 2011-07-21 (+6d) | 2011-07-22 → 2011-07-28 (+6d) |  |  | 7d → 14d |  |
| 75 | SDK | 2011-07-15 → 2011-07-18 (+3d) | 2011-07-22 → 2011-07-25 (+3d) |  |  | 1d → 7d |  |
| 76 | Workbench | 2011-07-25 → 2011-07-26 (+1d) | 2011-07-27 → 2011-07-28 (+1d) |  |  | 1d → 7d |  |
| 77 | ISO 21090 library | 2011-07-29 → 2011-08-04 (+6d) | 2011-08-02 → 2011-08-08 (+6d) |  |  |  |  |
| 78 | Release activities 2010 "future" | 2011-08-12 → 2011-08-18 (+6d) | 2011-08-25 → 2011-08-31 (+6d) |  |  |  |  |
| 82 | **UPT Improvement Plan** |  | 2011-07-27 → 2011-07-29 (+2d) | 95.25d? → 97.25d? | 49% → 67% | 14.75d → 23.75d |  |
| 87 | **Research on use of systems-hosted older versions** |  | 2011-07-07 → 2011-07-11 (+4d) | 18d? → 20d? | 6% → 65% | 14.75d → 23.75d |  |
| 89 | Lead time and systems response (est.) | 2011-06-14 A | 2011-06-27 A |  | 0% → 100% | 14.75d → none |  |
| 90 | Formulate subsequent queries | 2011-06-28 A | 2011-06-29 → 2011-07-01 (+2d) | 2d → 4d | 0% → 50% | 14.75d → 19.75d |  |
| 91 | Lead time and systems response (est.) | 2011-06-30 → 2011-07-05 (+5d) | 2011-07-07 → 2011-07-11 (+4d) |  |  | 14.75d → 19.75d |  |
| 92 | Follow up review of proposed features | 2011-07-08 → 2011-07-12 (+4d) | 2011-07-08 → 2011-07-12 (+4d) |  |  | 14.75d → 19.75d |  |
| 93 | Draft project plan (complete) | 2011-07-08 → 2011-07-12 (+4d) | 2011-07-12 → 2011-07-14 (+2d) |  |  | 14.75d → 19.75d |  |
| 94 | Review plan with user representatives and amend | 2011-07-12 → 2011-07-14 (+2d) | 2011-07-26 → 2011-07-28 (+2d) |  |  | 14.75d → 19.75d |  |
| 95 | Plan approval | 2011-07-26 → 2011-07-28 (+2d) | 2011-07-27 → 2011-07-29 (+2d) |  |  | 14.75d → 19.75d |  |
| 98 | **UPT enhancements [changes expected]** | 2011-08-26 → 2011-09-01 (+6d) | 2012-01-27 → 2012-02-02 (+6d) |  |  |  |  |
| 99 | GF 30436 Better LDAP integration when adding users to UPT | 2011-08-26 → 2011-09-01 (+6d) | 2011-09-01 → 2011-09-08 (+7d) |  |  |  |  |
| 100 | GF 22524 Authentication - DataSource LoginModule | 2011-09-02 → 2011-09-09 (+7d) | 2011-09-07 → 2011-09-13 (+6d) |  |  |  |  |
| 101 | GF 1158/2830 Implement paging for UPT | 2011-09-08 → 2011-09-14 (+6d) | 2011-09-21 → 2011-09-27 (+6d) |  |  |  |  |
| 102 | GF 22540/29002/30435 Password changes | 2011-09-22 → 2011-09-28 (+6d) | 2011-10-05 → 2011-10-11 (+6d) |  |  |  |  |
| 103 | GF 15527 CSM username field length should be increased to 100 characters | 2011-10-06 → 2011-10-12 (+6d) | 2011-10-06 → 2011-10-12 (+6d) |  |  |  |  |
| 104 | GF 19369 Indicate UPT /CSM version names in the Application Header after login | 2011-10-07 → 2011-10-13 (+6d) | 2011-10-10 → 2011-10-14 (+4d) |  |  |  |  |
| 105 | GF 631/22236 Password recovery | 2011-10-11 → 2011-10-17 (+6d) | 2011-10-17 → 2011-10-21 (+4d) |  |  |  |  |
| 106 | GF 30019 User lockout on unsuccessful logins | 2011-10-18 → 2011-10-24 (+6d) | 2011-10-24 → 2011-10-28 (+4d) |  |  |  |  |
| 107 | GF 2913 Add an Active Flag for users | 2011-10-25 → 2011-10-31 (+6d) | 2011-10-31 → 2011-11-04 (+4d) |  |  |  |  |
| 108 | GF 24404 UPT GUI installer should validate database connection info | 2011-11-01 → 2011-11-07 (+6d) | 2011-11-03 → 2011-11-09 (+6d) |  |  |  |  |
| 109 | GF 30372 Change UPT install.properties file to note properties that must be replaced | 2011-11-04 → 2011-11-10 (+6d) | 2011-11-04 → 2011-11-10 (+6d) |  |  |  |  |
| 110 | GF 1154/30433 Synchronization between UPT and supported application | 2011-11-07 → 2011-11-11 (+4d) | 2011-11-25 → 2011-12-01 (+6d) |  |  |  |  |
| 111 | GF 24965 Documentation changes from CDL installation | 2011-11-28 → 2011-12-02 (+4d) | 2011-11-28 → 2011-12-02 (+4d) |  |  |  |  |
| 112 | GF 24116 Need stronger access control | 2011-11-29 → 2011-12-05 (+6d) | 2011-12-12 → 2011-12-16 (+4d) |  |  |  |  |
| 113 | GF 2914 Auto-email new user or associated user | 2011-12-13 → 2011-12-19 (+6d) | 2011-12-16 → 2011-12-22 (+6d) |  |  |  |  |
| 114 | User friendly UPT UI | 2011-12-19 → 2011-12-23 (+4d) | 2012-01-06 → 2012-01-12 (+6d) |  |  |  |  |
| 115 | Customizable UPT UI | 2012-01-09 → 2012-01-13 (+4d) | 2012-01-27 → 2012-02-02 (+6d) |  |  |  |  |
| 123 | **Analysis** |  |  |  | 61% → 60% | 132d → 136d |  |
| 131 | caTissue Jamboree |  | 2011-06-24 A |  | 66% → 100% | 153d → none |  |
| 147 | **General support to date (only large tasks called out)** |  | 2011-06-24 → 2011-07-01 (+7d) | 68d → 73d | 99% → 97% | 146d → 152d |  |
| 151 | General support 6/20-6/24 |  | 2011-06-24 A |  | 80% → 100% | 146d → none |  |
| 155 | **Project Management to date (only large tasks called out)** |  | 2011-06-24 → 2011-07-01 (+7d) | 74d → 79d | 99% → 97% | 153d → 152d |  |
| 160 | General PM 6/23-6/24 |  | 2011-06-24 A |  | 50% → 100% | 153d → none |  |

## Version 6 (saved 2011-07-06)

Note of the change: SVN-Revision: 1595

Last finish 2012-02-02 → 2012-02-06 (+4d). Complete tasks 63 → 67.

Added:

| ID | Task | Duration | Start | Finish | Predecessors | Constraint | Resources |
| --- | --- | --- | --- | --- | --- | --- | --- |
| 57 | CQL->HQL workaround and Junit updates | 4d | 2011-07-01 A | 2011-07-07 | 56 | start no earlier than 2011-07-01 | Prasad |
| 155 | General support 7/5-7/8 | 4d | 2011-07-05 | 2011-07-08 |  | start no earlier than 2011-07-05 | Dan [15%] |
| 156 | Document migration activities/issues moving caDSR from SDK 4.0 to 4.4 | 1d? | 2011-09-06 | 2011-09-06 | 41 | start no earlier than 2011-07-05 | Prasad |
| 157 | Write SDK product support FAQ’s and post on KC | 5d? | 2011-01-13 | 2011-01-19 |  | start no earlier than 2011-01-13 |  |
| 158 | Write CSM product support FAQ’s and post on KC | 3d? | 2011-01-13 | 2011-01-17 |  | start no earlier than 2011-01-13 |  |
| 168 | General PM 7/5-7/8 | 4d | 2011-07-05 A | 2011-07-08 |  | start no earlier than 2011-07-05 | Greg [25%] |

Changed:

| ID | Task | Start | Finish | Duration | Complete | Total float | Other |
| --- | --- | --- | --- | --- | --- | --- | --- |
| 21 | **SDK 4.2.3 alternate database testing** |  |  |  | 89% → 95% | 152d → 153d |  |
| 27 | Smoke-test and 4.2.3 regression on Postgres |  |  |  | 60% → 80% | 148d → 153d |  |
| 41 | **Technology stack upgrade to 2010 "current" and "future"** |  | 2011-08-31 → 2011-09-02 (+2d) | 77d? → 79d? | 22% → 25% |  |  |
| 51 | **SDK** |  | 2011-06-30 → 2011-07-07 (+7d) | 13d → 17d | 78% → 84% | 4d → 2d |  |
| 55 | Hibernate |  | 2011-06-28 A |  | 50% → 100% | 5d → none |  |
| 56 | Other technologies |  | 2011-06-30 A |  | 50% → 100% | 4d → none |  |
| 58 | XMI Handler (formalized) | 2011-07-01 → 2011-07-08 (+7d) | 2011-07-01 → 2011-07-08 (+7d) |  |  | 4d → 2d |  |
| 59 | SDK "future" - Spring | 2011-07-11 → 2011-07-13 (+2d) | 2011-07-11 → 2011-07-13 (+2d) |  |  |  | constraint start no earlier than 2011-07-11 → start no earlier than 2011-07-13 |
| 60 | SDK "future" - Hibernate (can be dropped if too many problems) | 2011-07-12 → 2011-07-14 (+2d) | 2011-07-12 → 2011-07-14 (+2d) |  |  |  |  |
| 61 | CLM/LLT & CSM/UPT/CGMM "future" | 2011-07-13 → 2011-07-15 (+2d) | 2011-07-15 → 2011-07-19 (+4d) |  |  |  |  |
| 62 | Workbench ("current" and "future") | 2011-07-18 → 2011-07-20 (+2d) | 2011-07-22 → 2011-07-26 (+4d) |  |  |  |  |
| 63 | ISO 21090 ("current" and "future") | 2011-07-25 → 2011-07-27 (+2d) | 2011-07-29 → 2011-08-02 (+4d) |  |  |  |  |
| 64 | (WebSSO?) | 2011-07-29 → 2011-08-02 (+4d) | 2011-07-29 → 2011-08-02 (+4d) |  |  |  |  |
| 65 | **QA 2010 "current"** |  | 2011-08-03 → 2011-08-05 (+2d) | 27d → 29d |  |  |  |
| 68 | SDK | 2011-07-05 → 2011-07-08 (+3d) | 2011-07-12 → 2011-07-15 (+3d) |  |  | 7d → 10d |  |
| 69 | Workbench | 2011-07-13 → 2011-07-18 (+5d) | 2011-07-15 → 2011-07-20 (+5d) |  |  | 7d → 10d |  |
| 70 | ISO 21090 library | 2011-08-01 → 2011-08-03 (+2d) | 2011-08-03 → 2011-08-05 (+2d) |  |  |  |  |
| 71 | Release activities 2010 "current" | 2011-08-04 → 2011-08-08 (+4d) | 2011-08-17 → 2011-08-19 (+2d) |  |  |  |  |
| 73 | **QA 2010 "future"** | 2011-07-18 → 2011-07-20 (+2d) | 2011-08-08 → 2011-08-10 (+2d) |  |  |  |  |
| 74 | CLM | 2011-07-18 → 2011-07-20 (+2d) | 2011-07-20 → 2011-07-22 (+2d) |  |  |  |  |
| 75 | CSM | 2011-07-21 → 2011-07-25 (+4d) | 2011-07-28 → 2011-08-01 (+4d) |  |  |  |  |
| 76 | SDK | 2011-07-18 → 2011-07-21 (+3d) | 2011-07-25 → 2011-07-28 (+3d) |  |  | 7d → 10d |  |
| 77 | Workbench | 2011-07-26 → 2011-07-29 (+3d) | 2011-07-28 → 2011-08-02 (+5d) |  |  | 7d → 10d |  |
| 78 | ISO 21090 library | 2011-08-04 → 2011-08-08 (+4d) | 2011-08-08 → 2011-08-10 (+2d) |  |  |  |  |
| 79 | Release activities 2010 "future" | 2011-08-18 → 2011-08-22 (+4d) | 2011-08-31 → 2011-09-02 (+2d) |  |  |  |  |
| 83 | **UPT Improvement Plan** |  | 2011-07-29 → 2011-08-02 (+4d) | 97.25d? → 99.25d? | 67% → 68% | 23.75d → 22.75d |  |
| 88 | **Research on use of systems-hosted older versions** |  | 2011-07-11 → 2011-07-13 (+2d) | 20d? → 22d? | 65% → 68% | 23.75d → 22.75d |  |
| 91 | Formulate subsequent queries |  | 2011-07-01 → 2011-07-06 (+5d) | 4d → 6d | 50% → 67% | 19.75d → 22.75d |  |
| 92 | Lead time and systems response (est.) | 2011-07-05 → 2011-07-07 (+2d) | 2011-07-11 → 2011-07-13 (+2d) |  |  | 19.75d → 22.75d |  |
| 93 | Follow up review of proposed features | 2011-07-12 → 2011-07-14 (+2d) | 2011-07-12 → 2011-07-14 (+2d) |  |  | 19.75d → 22.75d |  |
| 94 | Draft project plan (complete) | 2011-07-12 → 2011-07-14 (+2d) | 2011-07-14 → 2011-07-18 (+4d) |  |  | 19.75d → 22.75d |  |
| 95 | Review plan with user representatives and amend | 2011-07-14 → 2011-07-18 (+4d) | 2011-07-28 → 2011-08-01 (+4d) |  |  | 19.75d → 22.75d |  |
| 96 | Plan approval | 2011-07-28 → 2011-08-01 (+4d) | 2011-07-29 → 2011-08-02 (+4d) |  |  | 19.75d → 22.75d |  |
| 99 | **UPT enhancements [changes expected]** | 2011-09-01 → 2011-09-06 (+5d) | 2012-02-02 → 2012-02-06 (+4d) |  |  |  |  |
| 100 | GF 30436 Better LDAP integration when adding users to UPT | 2011-09-01 → 2011-09-06 (+5d) | 2011-09-08 → 2011-09-12 (+4d) |  |  |  |  |
| 101 | GF 22524 Authentication - DataSource LoginModule | 2011-09-09 → 2011-09-13 (+4d) | 2011-09-13 → 2011-09-15 (+2d) |  |  |  |  |
| 102 | GF 1158/2830 Implement paging for UPT | 2011-09-14 → 2011-09-16 (+2d) | 2011-09-27 → 2011-09-29 (+2d) |  |  |  |  |
| 103 | GF 22540/29002/30435 Password changes | 2011-09-28 → 2011-09-30 (+2d) | 2011-10-11 → 2011-10-13 (+2d) |  |  |  |  |
| 104 | GF 15527 CSM username field length should be increased to 100 characters | 2011-10-12 → 2011-10-14 (+2d) | 2011-10-12 → 2011-10-14 (+2d) |  |  |  |  |
| 105 | GF 19369 Indicate UPT /CSM version names in the Application Header after login | 2011-10-13 → 2011-10-17 (+4d) | 2011-10-14 → 2011-10-18 (+4d) |  |  |  |  |
| 106 | GF 631/22236 Password recovery | 2011-10-17 → 2011-10-19 (+2d) | 2011-10-21 → 2011-10-25 (+4d) |  |  |  |  |
| 107 | GF 30019 User lockout on unsuccessful logins | 2011-10-24 → 2011-10-26 (+2d) | 2011-10-28 → 2011-11-01 (+4d) |  |  |  |  |
| 108 | GF 2913 Add an Active Flag for users | 2011-10-31 → 2011-11-02 (+2d) | 2011-11-04 → 2011-11-08 (+4d) |  |  |  |  |
| 109 | GF 24404 UPT GUI installer should validate database connection info | 2011-11-07 → 2011-11-09 (+2d) | 2011-11-09 → 2011-11-11 (+2d) |  |  |  |  |
| 110 | GF 30372 Change UPT install.properties file to note properties that must be replaced | 2011-11-10 → 2011-11-14 (+4d) | 2011-11-10 → 2011-11-14 (+4d) |  |  |  |  |
| 111 | GF 1154/30433 Synchronization between UPT and supported application | 2011-11-11 → 2011-11-15 (+4d) | 2011-12-01 → 2011-12-05 (+4d) |  |  |  |  |
| 112 | GF 24965 Documentation changes from CDL installation | 2011-12-02 → 2011-12-06 (+4d) | 2011-12-02 → 2011-12-06 (+4d) |  |  |  |  |
| 113 | GF 24116 Need stronger access control | 2011-12-05 → 2011-12-07 (+2d) | 2011-12-16 → 2011-12-20 (+4d) |  |  |  |  |
| 114 | GF 2914 Auto-email new user or associated user | 2011-12-19 → 2011-12-21 (+2d) | 2011-12-22 → 2011-12-26 (+4d) |  |  |  |  |
| 115 | User friendly UPT UI | 2011-12-23 → 2011-12-27 (+4d) | 2012-01-12 → 2012-01-16 (+4d) |  |  |  |  |
| 116 | Customizable UPT UI | 2012-01-13 → 2012-01-17 (+4d) | 2012-02-02 → 2012-02-06 (+4d) |  |  |  |  |
| 119 | **XMI Handler** | 2011-07-05 → 2011-07-07 (+2d) | 2011-07-15 → 2011-07-19 (+4d) |  |  |  |  |
| 120 | Test use of new XMI Handler modeling features with SIW and document results | 2011-07-05 → 2011-07-07 (+2d) | 2011-07-08 → 2011-07-12 (+4d) |  |  | 139d → 142d | constraint start no earlier than 2011-07-05 → start no earlier than 2011-07-07 |
| 121 | Coordinate official 1.1 release | 2011-07-11 → 2011-07-13 (+2d) | 2011-07-15 → 2011-07-19 (+4d) |  |  | 139d → 142d |  |
| 122 | Coordinate 1.2 release (tech stack upgrade)? | 2011-07-05 → 2011-07-11 (+6d) | 2011-07-11 → 2011-07-15 (+4d) |  |  | 147d → 145d |  |
| 134 | Ideal architecture for separation of SDK and caGrid | 2011-07-06 → 2011-07-11 (+5d) | 2011-07-07 → 2011-07-12 (+5d) |  |  | 149d → 148d | constraint start no earlier than 2011-07-06 → start no earlier than 2011-07-11 |
| 149 | **General support to date (only large tasks called out)** | 2011-03-22 A → 2011-01-13 A (-68d) | 2011-07-01 → 2011-09-06 (+67d) | 73d → 166d? | 97% → 85% | 152d → 109d |  |
| 154 | General support 6/27-7/1 |  | 2011-07-01 A |  | 60% → 100% | 152d → none | resources Dan [15%] → Dan [35%] |
| 161 | **Project Management to date (only large tasks called out)** |  | 2011-07-01 → 2011-07-08 (+7d) | 79d → 83d | 97% → 96% | 152d → 149d |  |
| 167 | General PM 6/27-7/1 |  | 2011-07-01 A |  | 60% → 100% | 152d → none |  |

## Version 7 (saved 2011-08-02)

Note of the change: SVN-Revision: 1618

Last finish 2012-02-06 → 2012-03-02 (+25d). Complete tasks 67 → 97.

Added:

| ID | Task | Duration | Start | Finish | Predecessors | Constraint | Resources |
| --- | --- | --- | --- | --- | --- | --- | --- |
| 59 | **Refocus from 2010 to 2011 "current" tech stack** | 4d | 2011-07-07 A | 2011-07-12 A |  |  |  |
| 60 | Re-version CLM API 4.2 to 4.1.1 | 1d | 2011-07-07 A | 2011-07-07 A |  | start no earlier than 2011-07-07 | Prasad |
| 61 | Re-version CSM 4.3 to 4.2.3 | 1d | 2011-07-08 A | 2011-07-08 A | 60 | start no earlier than 2011-07-08 | Prasad |
| 62 | Apply tech upgrades against SDK 4.4 to make 4.4.1 | 1.5d | 2011-07-11 A | 2011-07-12 A | 60 | start no earlier than 2011-07-11 | Prasad |
| 63 | Re-version CLM LLT 4.2 to 4.1.1 | 0.5d | 2011-07-12 A | 2011-07-12 A | 62 | start no earlier than 2011-07-12 | Prasad |
| 64 | **2011 "future"** | 4d | 2011-08-02 | 2011-08-05 | 166 | start no earlier than 2011-08-02 |  |
| 65 | CLM 4.1.2 (Spring update) | 1d | 2011-08-02 | 2011-08-02 |  | start no earlier than 2011-07-13 | Prasad [75%] |
| 66 | CSM 4.2.4 (Spring update) | 1d | 2011-08-03 | 2011-08-03 | 65 | start no earlier than 2011-07-13 | Prasad [75%] |
| 67 | SDK 4.5 (includes 4.2.3 features) | 2d | 2011-08-04 | 2011-08-05 | 66 | start no earlier than 2011-07-13 | Prasad [75%] |
| 71 | Revisit direct CQL support in SDK 4.5 [remove, no longer applicable] | 0d | 2011-07-13 | 2011-07-13 |  | start no earlier than 2011-07-13 |  |
| 72 | Consider CQL2 support in SDK 4.5 [remove, no longer applicable] | 0d | 2011-07-13 | 2011-07-13 |  | start no earlier than 2011-07-13 |  |
| 76 | QA support and minor bug fixes (2011 "current") | 47d | 2011-07-18 A | 2011-09-21 |  |  | Prasad [25%] |
| 77 | SDK 4.4.1 and CSM 4.2.3 bug fixes | 5d | 2011-07-18 A | 2011-07-22 A |  | start no earlier than 2011-07-18 | Prasad [75%] |
| 78 | **QA 2011 "current"** | 43d? | 2011-07-11 A | 2011-09-08 |  |  |  |
| 79 | **CSM 4.2.3** | 23d | 2011-07-11 A | 2011-08-10 | 61 |  | Aynur |
| 80 | set-up and 1st round | 6d | 2011-07-11 A | 2011-07-18 A | 61 |  |  |
| 81 | update test cases (if needed) | 1d | 2011-08-02 | 2011-08-02 | 61 | start no earlier than 2011-08-02 |  |
| 82 | regression testing of CSM UPT and CSM API with oracle | 3d | 2011-08-03 | 2011-08-05 | 81 | start no earlier than 2011-08-02 |  |
| 83 | regression testing of CSM UPT and CSM API with postgresql | 3d | 2011-08-08 | 2011-08-10 | 82 | start no earlier than 2011-08-02 |  |
| 84 | CLM 4.1.1 | 3d | 2011-08-11 | 2011-08-15 | 63, 79, 80 | start no earlier than 2011-06-27 | Aynur |
| 85 | CSM/CLM test report | 1d | 2011-08-16 | 2011-08-16 | 79, 84 | start no earlier than 2011-08-02 | Aynur |
| 86 | **SDK 4.4.1** | 38.5d? | 2011-07-12 A | 2011-09-02 |  |  | Xiaoling |
| 87 | set-up and initial tests | 3.5d | 2011-07-12 A | 2011-07-15 A | 62 |  |  |
| 88 | Oracle database including junit tests | 8d | 2011-07-18 A | 2011-07-27 A | 87 |  |  |
| 89 | Tomcat 6.0.20 with database Oracle and MySQL, Junit tests | 6d | 2011-07-28 | 2011-08-04 | 88 |  |  |
| 90 | jboss 5.1.0 with database Oracle and MySQL, Junit tests | 2d | 2011-08-05 | 2011-08-08 | 89 |  |  |
| 91 | Tomcat and Jboss with PostgeSQL database and Junit tests | 5d | 2011-08-09 | 2011-08-15 | 90 |  |  |
| 92 | adding and modifying *.java test cases in Junit, local-client, and remote client for Writable API; | 2d | 2011-08-16 | 2011-08-17 | 91 | start no earlier than 2011-08-02 |  |
| 93 | creating QTP/PEDAL test cases and run | 3d | 2011-08-18 | 2011-08-22 | 92 | start no earlier than 2011-08-02 |  |
| 94 | documentation | 1d | 2011-08-23 | 2011-08-23 | 93 | start no earlier than 2011-08-02 |  |
| 95 | 2nd round | 8d? | 2011-08-24 | 2011-09-02 | 94 | start no earlier than 2011-08-02 |  |
| 96 | Workbench 1.0 | 3d | 2011-09-06 | 2011-09-08 | 68, 86 | start no earlier than 2011-06-24 | Xiaoling |
| 98 | Release activities 2011 current - concurrent with QA | 3d | 2011-09-06 | 2011-09-08 | 78FF | start no earlier than 2011-07-20 |  |
| 108 | Release activities 2011 "future" - post QA | 7d | 2011-09-22 | 2011-09-30 | 101, 99, 107 | start no earlier than 2011-07-20 |  |
| 122 | Determine why subsequent queries returned no results and re-submit | 4d | 2011-08-02 | 2011-08-24 |  | start no earlier than 2011-08-02 | Greg [25%] |
| 123 | Lead time and systems response (est.) | 1d? | 2011-08-02 | 2011-08-02 |  | start no earlier than 2011-08-02 |  |
| 165 | NBIA security discussion on federated grid credentials | 2d | 2011-06-29 A | 2011-06-30 A |  | start no earlier than 2011-06-29 | Prasad [25%] |
| 166 | ISO/SDK use - examples and presentation | 3d | 2011-07-13 A | 2011-07-15 A |  | start no earlier than 2011-07-13 | Prasad |
| 167 | SDK capabilities documentation & presentation support | 2d | 2011-07-25 A | 2011-07-26 A |  | start no earlier than 2011-07-25 | Prasad [75%] |
| 168 | ISO/SDK use - examples and presentation (revisited) | 4d | 2011-07-27 A | 2011-08-01 A |  | start no earlier than 2011-07-27 | Prasad [75%] |
| 191 | General support 7/11-7/15 | 5d | 2011-07-11 A | 2011-07-15 A |  | start no earlier than 2011-07-11 | Dan [5%] |
| 192 | caTissue | 6d | 2011-07-11 A | 2011-07-18 A |  | start no earlier than 2011-07-11 | Greg [25%] |
| 193 | General support 7/18-7/23 | 5d | 2011-07-18 A | 2011-07-22 A |  | start no earlier than 2011-07-18 | Dan [10%] |
| 194 | 508 remediation (manual tests) for hosted UPT | 3d | 2011-07-20 A | 2011-07-22 A |  | start no earlier than 2011-07-20 | Greg [25%] |
| 195 | General support 7/25-7/29 | 5d | 2011-07-25 A | 2011-07-29 A |  | start no earlier than 2011-07-25 | Dan [15%] |
| 196 | caTissue (caGrid/SDK integration) | 4d | 2011-07-25 A | 2011-07-29 A |  | start no earlier than 2011-07-25 | Greg [25%] |
| 197 | General support 8/1-8/5 | 5d | 2011-08-01 A | 2011-08-05 |  | start no earlier than 2011-08-01 | Dan [15%] |
| 211 | General PM 7/11-7/15 | 5d | 2011-07-11 A | 2011-07-15 A |  | start no earlier than 2011-07-11 | Greg [25%] |
| 212 | General PM 7/18-7/23 | 5d | 2011-07-18 A | 2011-07-22 A |  | start no earlier than 2011-07-18 | Greg [25%] |
| 213 | General PM 7/25-7/29 | 4d | 2011-07-25 A | 2011-07-29 A |  | start no earlier than 2011-07-25 | Greg [25%] |
| 214 | General PM 8/1-8/4 | 4d | 2011-08-01 A | 2011-08-04 |  | start no earlier than 2011-08-01 | Greg [25%] |

Removed: 59 SDK "future" - Spring; 60 SDK "future" - Hibernate (can be dropped if too many problems); 61 CLM/LLT & CSM/UPT/CGMM "future"; 67 CSM; 69 Workbench

Changed:

| ID | Task | Start | Finish | Duration | Complete | Total float | Predecessors | Other |
| --- | --- | --- | --- | --- | --- | --- | --- | --- |
| 21 | **SDK 4.2.3 alternate database testing** |  | 2011-07-01 A |  | 95% → 100% | 153d → none |  |  |
| 27 | Smoke-test and 4.2.3 regression on Postgres |  | 2011-07-01 A |  | 80% → 100% | 153d → none |  |  |
| 41 | **Technology stack upgrade to 2011 "current" and "future"** |  | 2011-09-02 → 2011-09-30 (+28d) | 79d? → 98d? | 25% → 36% |  |  | was named Technology stack upgrade to 2010 "current" and "future" |
| 51 | **SDK** |  | 2011-07-07 → 2011-07-05 A (-2d) | 17d → 15d | 84% → 100% | 2d → none |  |  |
| 56 | Other technologies |  |  |  |  |  |  | resources Prasad → Prasad [75%] |
| 57 | CQL->HQL workaround and Junit updates [aborted] |  | 2011-07-07 → 2011-07-05 A (-2d) | 4d → 2d | 50% → 100% | 2d → none |  | was named CQL->HQL workaround and Junit updates |
| 58 | XMI Handler (formalized) | 2011-07-08 → 2011-07-06 A (-2d) | 2011-07-08 → 2011-07-06 A (-2d) |  | 0% → 100% | 2d → none |  |  |
| 68 | Workbench ("current" and "future") | 2011-07-20 → 2011-08-08 (+19d) | 2011-07-26 → 2011-08-12 (+17d) |  |  | 0d → 7d | CLM/LLT & CSM/UPT/CGMM "future" → 64 | resources Prasad → Prasad [75%] |
| 69 | ISO 21090 ("current" and "future") | 2011-07-27 → 2011-08-15 (+19d) | 2011-08-02 → 2011-08-19 (+17d) |  |  | 0d → 7d |  | resources Prasad → Prasad [75%] |
| 70 | (WebSSO?) | 2011-08-02 → 2011-08-19 (+17d) | 2011-08-02 → 2011-08-19 (+17d) |  |  | 23d → 29d |  |  |
| 73 | **QA 2010 "current" [stopped]** | 2011-06-27 A | 2011-08-05 → 2011-07-07 A (-29d) | 29d → 8d | 0% → 100% | 0d → none |  | was named QA 2010 "current" |
| 74 | CLM/CSM [stopped] | 2011-06-27 A | 2011-06-29 → 2011-07-07 A (+8d) | 3d → 8d | 0% → 100% | 19d → none |  | was named CLM |
| 75 | SDK [stopped] | 2011-07-08 → 2011-07-06 A (-2d) | 2011-07-15 → 2011-07-07 A (-8d) | 6d → 2d | 0% → 100% | 10d → none |  | was named SDK |
| 97 | ISO 21090 library | 2011-08-03 → 2011-08-22 (+19d) | 2011-08-05 → 2011-08-24 (+19d) |  |  | 0d → 7d | 69 → 69, 85 |  |
| 99 | Release activities 2011 "current" - post QA | 2011-08-08 → 2011-09-09 (+32d) | 2011-08-19 → 2011-09-19 (+31d) | 10d → 7d |  | 0d → 2d | 73 → 78, 98 | was named Release activities 2010 "current" |
| 100 | (Target release date - 2010 "current") |  |  |  |  | 16d → 36d |  | was named Target release date - 2010 "current" |
| 101 | **QA 2011 "future"** | 2011-07-20 → 2011-08-25 (+36d) | 2011-08-10 → 2011-09-21 (+42d) | 16d → 19d |  | 7d → 0d |  | was named QA 2010 "future" |
| 102 | CSM 4.2.4 | 2011-07-25 → 2011-08-25 (+31d) | 2011-08-01 → 2011-09-01 (+31d) |  |  | 14d → 7d | 103, CLM/LLT & CSM/UPT/CGMM "future" → 97 | was named CSM; constraint start no earlier than 2011-06-24 → start no earlier than 2011-07-22 |
| 103 | CLM 4.1.2 | 2011-07-20 → 2011-09-02 (+44d) | 2011-07-22 → 2011-09-07 (+47d) |  |  | 14d → 7d | CLM/LLT & CSM/UPT/CGMM "future" → 102 | was named CLM |
| 104 | SDK 4.5 | 2011-07-21 → 2011-09-09 (+50d) | 2011-07-28 → 2011-09-16 (+50d) |  |  | 10d → 0d | SDK "future" - Hibernate (can be dropped if too many problems), Workbench → 96 | was named SDK |
| 105 | Workbench (version?) | 2011-07-29 → 2011-09-19 (+52d) | 2011-08-02 → 2011-09-21 (+50d) |  |  | 10d → 0d | 104 → 104, 96 | was named Workbench |
| 106 | ISO 21090 library (version?) | 2011-08-08 → 2011-09-08 (+31d) | 2011-08-10 → 2011-09-12 (+33d) |  |  |  | 105, 97 → 97, 103 | was named ISO 21090 library |
| 107 | Release activities 2011 "future" - concurrent with QA | 2011-08-22 → 2011-09-19 (+28d) | 2011-09-02 → 2011-09-21 (+19d) | 10d → 3d |  |  | 101, 99 → 101FF | was named Release activities 2010 "future" |
| 109 | (Target release date - 2010 "future") |  |  |  |  | 6d → 26d |  | was named Target release date - 2010 "future" |
| 112 | **UPT Improvement Plan** |  | 2011-08-02 → 2011-09-14 (+43d) | 99.25d? → 129.25d? | 68% → 73% | 22.75d → 12.75d |  |  |
| 117 | **Research on use of systems-hosted older versions** |  | 2011-07-13 → 2011-08-24 (+42d) | 22d? → 52d? | 68% → 81% | 22.75d → 12.75d |  |  |
| 120 | Formulate subsequent queries |  | 2011-07-06 A |  | 67% → 100% | 22.75d → none |  |  |
| 121 | Lead time and systems response (est.) | 2011-07-07 A | 2011-07-13 A |  | 0% → 100% | 22.75d → none |  |  |
| 124 | Follow up review of proposed features | 2011-07-14 → 2011-08-25 (+42d) | 2011-07-14 → 2011-08-25 (+42d) |  |  | 22.75d → 12.75d |  |  |
| 125 | Draft project plan (complete) | 2011-07-14 → 2011-08-25 (+42d) | 2011-07-18 → 2011-08-29 (+42d) |  |  | 22.75d → 12.75d |  |  |
| 126 | Review plan with user representatives and amend | 2011-07-18 → 2011-08-29 (+42d) | 2011-08-01 → 2011-09-13 (+43d) |  |  | 22.75d → 12.75d |  |  |
| 127 | Plan approval | 2011-08-01 → 2011-09-13 (+43d) | 2011-08-02 → 2011-09-14 (+43d) |  |  | 22.75d → 12.75d |  |  |
| 130 | **UPT enhancements [changes expected]** | 2011-09-06 → 2011-10-03 (+27d) | 2012-02-06 → 2012-03-02 (+25d) |  |  |  |  |  |
| 131 | GF 30436 Better LDAP integration when adding users to UPT | 2011-09-06 → 2011-10-03 (+27d) | 2011-09-12 → 2011-10-07 (+25d) |  |  |  |  |  |
| 132 | GF 22524 Authentication - DataSource LoginModule | 2011-09-13 → 2011-10-10 (+27d) | 2011-09-15 → 2011-10-12 (+27d) |  |  |  |  |  |
| 133 | GF 1158/2830 Implement paging for UPT | 2011-09-16 → 2011-10-13 (+27d) | 2011-09-29 → 2011-10-26 (+27d) |  |  |  |  |  |
| 134 | GF 22540/29002/30435 Password changes | 2011-09-30 → 2011-10-27 (+27d) | 2011-10-13 → 2011-11-09 (+27d) |  |  |  |  |  |
| 135 | GF 15527 CSM username field length should be increased to 100 characters | 2011-10-14 → 2011-11-10 (+27d) | 2011-10-14 → 2011-11-10 (+27d) |  |  |  |  |  |
| 136 | GF 19369 Indicate UPT /CSM version names in the Application Header after login | 2011-10-17 → 2011-11-11 (+25d) | 2011-10-18 → 2011-11-14 (+27d) |  |  |  |  |  |
| 137 | GF 631/22236 Password recovery | 2011-10-19 → 2011-11-15 (+27d) | 2011-10-25 → 2011-11-21 (+27d) |  |  |  |  |  |
| 138 | GF 30019 User lockout on unsuccessful logins | 2011-10-26 → 2011-11-22 (+27d) | 2011-11-01 → 2011-11-28 (+27d) |  |  |  |  |  |
| 139 | GF 2913 Add an Active Flag for users | 2011-11-02 → 2011-11-29 (+27d) | 2011-11-08 → 2011-12-05 (+27d) |  |  |  |  |  |
| 140 | GF 24404 UPT GUI installer should validate database connection info | 2011-11-09 → 2011-12-06 (+27d) | 2011-11-11 → 2011-12-08 (+27d) |  |  |  |  |  |
| 141 | GF 30372 Change UPT install.properties file to note properties that must be replaced | 2011-11-14 → 2011-12-09 (+25d) | 2011-11-14 → 2011-12-09 (+25d) |  |  |  |  |  |
| 142 | GF 1154/30433 Synchronization between UPT and supported application | 2011-11-15 → 2011-12-12 (+27d) | 2011-12-05 → 2011-12-30 (+25d) |  |  |  |  |  |
| 143 | GF 24965 Documentation changes from CDL installation | 2011-12-06 → 2012-01-02 (+27d) | 2011-12-06 → 2012-01-02 (+27d) |  |  |  |  |  |
| 144 | GF 24116 Need stronger access control | 2011-12-07 → 2012-01-03 (+27d) | 2011-12-20 → 2012-01-16 (+27d) |  |  |  |  |  |
| 145 | GF 2914 Auto-email new user or associated user | 2011-12-21 → 2012-01-17 (+27d) | 2011-12-26 → 2012-01-20 (+25d) |  |  |  |  |  |
| 146 | User friendly UPT UI | 2011-12-27 → 2012-01-23 (+27d) | 2012-01-16 → 2012-02-10 (+25d) |  |  |  |  |  |
| 147 | Customizable UPT UI | 2012-01-17 → 2012-02-13 (+27d) | 2012-02-06 → 2012-03-02 (+25d) |  |  |  |  |  |
| 150 | **XMI Handler** | 2011-07-07 → 2011-08-25 (+49d) | 2011-07-19 → 2011-09-14 (+57d) | 9d? → 14d? |  | 143d → 122d |  |  |
| 151 | Test use of new XMI Handler modeling features with SIW and document results | 2011-07-07 → 2011-08-25 (+49d) | 2011-07-12 → 2011-08-30 (+49d) |  |  | 142d → 122d |  | constraint start no earlier than 2011-07-07 → start no earlier than 2011-08-25 |
| 152 | Coordinate official 1.1 release | 2011-07-13 → 2011-08-31 (+49d) | 2011-07-19 → 2011-09-07 (+50d) |  |  | 142d → 122d |  |  |
| 153 | Coordinate 1.2 release (tech stack upgrade)? | 2011-07-11 → 2011-09-08 (+59d) | 2011-07-15 → 2011-09-14 (+61d) |  |  | 145d → 122d | 58 → 58, 152 |  |
| 156 | **Analysis** |  | 2011-07-26 → 2011-08-23 (+28d) | 89d → 109d | 60% → 84% | 138d → 137d |  |  |
| 169 | Ideal architecture for separation of SDK and caGrid | 2011-07-11 → 2011-08-22 (+42d) | 2011-07-12 → 2011-08-23 (+42d) |  |  | 148d → 137d | none → 69 | constraint start no earlier than 2011-07-11 → start no earlier than 2011-07-18; resources Prasad → Prasad [75%] |
| 170 | Investigate problem with caGrid-flavored CQL and SDK 4.4 w/ ISO data types despite workaround | 2011-07-11 → 2011-07-18 A (+7d) | 2011-07-26 → 2011-08-19 (+24d) | 12d → 10d | 0% → 50% | 137d → 139d |  | constraint start no earlier than 2011-07-11 → start no earlier than 2011-07-18 |
| 184 | **General support to date (only large tasks called out)** |  | 2011-09-06 → 2011-10-03 (+27d) | 166d? → 185d? | 85% → 89% |  |  |  |
| 190 | General support 7/5-7/8 | 2011-07-05 A | 2011-07-08 A |  | 0% → 100% | 149d → none |  |  |
| 198 | Document migration activities/issues moving from SDK 4.0 to 4.4 (using caDSR as an example) | 2011-09-06 → 2011-10-03 (+27d) | 2011-09-06 → 2011-10-03 (+27d) |  |  |  |  | was named Document migration activities/issues moving caDSR from SDK 4.0 to 4.4 |
| 203 | **Project Management to date (only large tasks called out)** |  | 2011-07-08 → 2011-08-04 (+27d) | 83d → 102d | 96% → 97% | 149d → 150d |  |  |
| 210 | General PM 7/5-7/8 |  | 2011-07-08 A |  | 25% → 100% | 149d → none |  |  |

## Version 8 (saved 2011-08-22)

Note of the change: SVN-Revision: 1627

Last finish 2012-03-02 → 2012-03-12 (+10d). Complete tasks 97 → 117.

Added:

| ID | Task | Duration | Start | Finish | Predecessors | Constraint | Resources |
| --- | --- | --- | --- | --- | --- | --- | --- |
| 76 | QA support and minor bug fixes (2011 "current") | 14d | 2011-08-02 A | 2011-08-23 A |  | start no earlier than 2011-08-02 | Prasad |
| 77 | QA support and minor bug fixes (2011 "current") | 9d | 2011-08-24 | 2011-09-06 |  | start no earlier than 2011-08-24 | Prasad [25%] |
| 82 | UPT regression - mySQL | 6d | 2011-07-20 A | 2011-07-27 A |  | start no earlier than 2011-07-20 | Aynur |
| 83 | deployment testing - Oracle and PostgreSQL | 2d | 2011-07-28 A | 2011-07-29 A |  | start no earlier than 2011-07-28 | Aynur |
| 85 | instance level security | 5d | 2011-08-05 A | 2011-08-11 A | 84 |  | Aynur |
| 87 | API testing | 3d | 2011-08-18 A | 2011-08-29 | 86 | start no earlier than 2011-08-18 | Aynur |
| 95 | post-fix retests and backward compatibility tests | 4d | 2011-08-09 A | 2011-08-12 A | 94 |  | Xiaoling |
| 96 | Tomcat and Jboss with PostgreSQL database and Junit tests [split] | 3d | 2011-08-15 A | 2011-08-17 A | 95 |  | Xiaoling |
| 97 | PostgreSQL availability and issues (?) | 13d? | 2011-08-08 | 2011-08-24 |  | start no earlier than 2011-08-08 |  |
| 98 | verification of Grid authentication fix | 2d | 2011-08-18 A | 2011-08-19 A |  | start no earlier than 2011-08-18 | Xiaoling |
| 112 | **QA for upgraded non-core applications (not listed in tech stacks)** | 6d | 2011-09-19 | 2011-09-26 |  |  |  |
| 113 | Workbench | 3d | 2011-09-21 | 2011-09-23 | 69, 109 | start no earlier than 2011-08-22 | Xiaoling |
| 115 | CGMM | 3d | 2011-09-22 | 2011-09-26 | 114 | start no earlier than 2011-08-22 | Aynur |
| 116 | Release activities for non-core applications | 7d? | 2011-09-30 | 2011-10-10 | 112, 111 | start no earlier than 2011-08-22 | Prasad [50%] |
| 207 | General support 8/8-8/12 | 5d | 2011-08-08 A | 2011-08-12 A |  | start no earlier than 2011-08-08 | Dan [10%] |
| 208 | CLOB modeling | 1d | 2011-08-12 A | 2011-08-12 A |  | start no earlier than 2011-08-12 | Prasad |
| 209 | General support 8/15-8/19 | 5d | 2011-08-15 A | 2011-08-19 A |  | start no earlier than 2011-08-15 | Dan [10%] |
| 210 | CSM connection pooling | 1d | 2011-08-16 A | 2011-08-16 A |  | start no earlier than 2011-08-16 | Prasad |
| 211 | General support 8/22-8/26 | 5d | 2011-08-22 | 2011-08-26 |  | start no earlier than 2011-08-22 | Dan [15%] |
| 229 | General PM 8/15-8/19 | 5d | 2011-08-15 A | 2011-08-19 A |  | start no earlier than 2011-08-15 | Greg [35%] |
| 230 | General PM 8/22-8/26 | 5d | 2011-08-22 | 2011-08-26 |  | finish no earlier than 2011-08-26 | Greg [25%] |

Removed: 71 Revisit direct CQL support in SDK 4.5 [remove, no longer applicable]; 72 Consider CQL2 support in SDK 4.5 [remove, no longer applicable]; 96 Workbench 1.0; 105 Workbench (version?); 106 ISO 21090 library (version?)

Changed:

| ID | Task | Start | Finish | Duration | Complete | Total float | Predecessors | Other |
| --- | --- | --- | --- | --- | --- | --- | --- | --- |
| 41 | **Technology stack upgrade to 2011 "current" and "future"** |  | 2011-09-30 → 2011-10-10 (+10d) | 98d? → 104d? | 36% → 57% |  |  |  |
| 64 | **2011 "future"** | 2011-08-02 → 2011-08-24 (+22d) | 2011-08-05 → 2011-08-29 (+24d) |  |  | 7d → 9d |  |  |
| 65 | CLM 4.1.2 (Spring/Struts/Ant) | 2011-08-02 → 2011-08-24 (+22d) | 2011-08-02 → 2011-08-24 (+22d) |  |  | 7d → 5d |  | was named CLM 4.1.2 (Spring update); constraint start no earlier than 2011-07-13 → start no earlier than 2011-08-24 |
| 66 | CSM 4.2.4 (Spring/Struts/Ant) | 2011-08-03 → 2011-08-25 (+22d) | 2011-08-03 → 2011-08-25 (+22d) |  |  | 7d → 5d |  | was named CSM 4.2.4 (Spring update) |
| 67 | SDK 4.5 (Spring/Struts/Ant plus 4.2.3 features) | 2011-08-04 → 2011-08-26 (+22d) | 2011-08-05 → 2011-08-29 (+24d) |  |  | 7d → 5d |  | was named SDK 4.5 (includes 4.2.3 features) |
| 68 | ISO 21090 ("current" and "future") (Spring, Ant?) | 2011-08-15 → 2011-08-30 (+15d) | 2011-08-19 → 2011-09-06 (+18d) |  |  | 7d → 5d | 69 → 64 | was named ISO 21090 ("current" and "future") |
| 69 | Workbench ("current" and "future") | 2011-08-08 → 2011-09-07 (+30d) | 2011-08-12 → 2011-09-13 (+32d) |  |  | 7d → 9d | 64 → 68 | resources Prasad [75%] → Prasad [50%] |
| 70 | (WebSSO?) | 2011-08-19 → 2011-09-13 (+25d) | 2011-08-19 → 2011-09-13 (+25d) |  |  | 29d → 19d | 68 → 69 |  |
| 75 | QA support and minor bug fixes (2011 "current") |  | 2011-09-21 → 2011-08-01 A (-51d) | 47d → 11d | 25% → 100% | 7d → none |  | constraint none → start no earlier than 2011-07-18 |
| 78 | **QA 2011 "current"** |  | 2011-09-08 → 2011-09-12 (+4d) | 43d? → 45d? | 28% → 66% |  |  |  |
| 79 | **CSM 4.2.3** |  | 2011-08-10 → 2011-08-29 (+19d) | 23d → 36d | 46% → 97% | 10d → 3d |  | resources Aynur → none |
| 80 | set-up and 1st round |  |  |  |  |  |  | resources none → Aynur |
| 81 | update test cases (as needed) | 2011-08-02 → 2011-07-19 A (-14d) | 2011-08-02 → 2011-07-19 A (-14d) |  | 0% → 100% | 10d → none |  | was named update test cases (if needed); constraint start no earlier than 2011-08-02 → start no earlier than 2011-07-19; resources none → Aynur |
| 84 | UPT regression - Oracle | 2011-08-03 → 2011-08-01 A (-2d) | 2011-08-05 → 2011-08-04 A (-1d) | 3d → 4d | 0% → 100% | 10d → none | 81 → 83 | was named regression testing of CSM UPT and CSM API with oracle; constraint start no earlier than 2011-08-02 → none; resources none → Aynur |
| 86 | UPT regression - PostgreSQL | 2011-08-08 → 2011-08-12 A (+4d) | 2011-08-10 → 2011-08-17 A (+7d) | 3d → 4d | 0% → 100% | 10d → none | 84 → 85 | was named regression testing of CSM UPT and CSM API with postgresql; constraint start no earlier than 2011-08-02 → none; resources none → Aynur |
| 88 | CLM 4.1.1 | 2011-08-11 → 2011-08-30 (+19d) | 2011-08-15 → 2011-09-01 (+17d) |  |  | 10d → 3d | 63, 79, 80 → 63, 79 |  |
| 89 | CSM/CLM test report | 2011-08-16 → 2011-09-02 (+17d) | 2011-08-16 → 2011-09-02 (+17d) |  |  | 10d → 3d |  |  |
| 90 | **SDK 4.4.1** |  | 2011-09-02 → 2011-09-12 (+10d) | 38.5d? → 43.5d? | 30% → 53% |  |  | resources Xiaoling → none |
| 91 | set-up and initial tests |  |  |  |  |  |  | resources none → Xiaoling |
| 92 | Oracle database including junit tests |  |  |  |  |  |  | resources none → Xiaoling |
| 93 | Tomcat 6.0.20 with database Oracle and MySQL, Junit tests | 2011-07-28 A | 2011-08-04 A |  | 0% → 100% | 0d → none |  | resources none → Xiaoling |
| 94 | jboss 5.1.0 with database Oracle and MySQL, Junit tests | 2011-08-05 A | 2011-08-08 A |  | 0% → 100% | 0d → none |  | resources none → Xiaoling |
| 99 | Tomcat and Jboss with PostgreSQL database and Junit tests | 2011-08-09 → 2011-08-25 (+16d) | 2011-08-15 → 2011-08-29 (+14d) | 5d → 3d |  |  | 94 → 97 | was named Tomcat and Jboss with PostgeSQL database and Junit tests; constraint none → start no earlier than 2011-08-25; resources none → Xiaoling |
| 100 | adding and modifying *.java test cases in Junit, local-client, and remote client for Writable API; | 2011-08-16 → 2011-08-30 (+14d) | 2011-08-17 → 2011-08-31 (+14d) |  |  |  |  | resources none → Xiaoling |
| 101 | creating QTP/PEDAL test cases and run | 2011-08-18 → 2011-09-01 (+14d) | 2011-08-22 → 2011-09-06 (+15d) |  |  |  |  | resources none → Xiaoling |
| 102 | documentation | 2011-08-23 → 2011-09-07 (+15d) | 2011-08-23 → 2011-09-07 (+15d) |  |  |  |  | resources none → Xiaoling |
| 103 | 3rd round (?) | 2011-08-24 → 2011-09-08 (+15d) | 2011-09-02 → 2011-09-12 (+10d) | 8d? → 3d? |  |  |  | was named 2nd round; resources none → Xiaoling |
| 104 | Release activities 2011 current - concurrent with QA | 2011-09-06 → 2011-09-08 (+2d) | 2011-09-08 → 2011-09-12 (+4d) |  |  | 2d → 0d |  | resources none → Prasad [50%] |
| 105 | Release activities 2011 "current" - post QA | 2011-09-09 → 2011-09-13 (+4d) |  | 7d → 5d |  | 2d → 0d |  | resources none → Prasad [50%] |
| 106 | **QA 2011 "future"** | 2011-08-25 → 2011-09-06 (+12d) | 2011-09-21 → 2011-09-20 (-1d) | 19d → 11d |  | 0d → 2d |  |  |
| 107 | CSM 4.2.4 | 2011-08-25 → 2011-09-06 (+12d) | 2011-09-01 → 2011-09-13 (+12d) |  |  | 7d → 3d | 114 → 66, 89 |  |
| 108 | CLM 4.1.2 | 2011-09-02 → 2011-09-14 (+12d) | 2011-09-07 → 2011-09-16 (+9d) |  |  | 7d → 3d |  |  |
| 109 | SDK 4.5 | 2011-09-09 → 2011-09-13 (+4d) | 2011-09-16 → 2011-09-20 (+4d) |  |  | 0d → 2d | Workbench 1.0 → 65, 90 |  |
| 110 | Release activities 2011 "future" - concurrent with QA | 2011-09-19 → 2011-09-20 (+1d) | 2011-09-21 → 2011-09-22 (+1d) |  |  |  | 106FF → 106FF, 105 | resources none → Prasad [50%] |
| 111 | Release activities 2011 "future" - post QA | 2011-09-22 → 2011-09-23 (+1d) | 2011-09-30 → 2011-09-29 (-1d) | 7d → 5d |  |  |  | resources none → Prasad [50%] |
| 114 | ISO 21090 library | 2011-08-22 → 2011-09-19 (+28d) | 2011-08-24 → 2011-09-21 (+28d) |  |  | 7d → 3d | 68, 89 → 68, 108 | constraint start no earlier than 2011-06-24 → start no earlier than 2011-08-22 |
| 121 | **UPT Improvement Plan** |  | 2011-09-14 → 2011-09-20 (+6d) | 129.25d? → 133.25d? | 73% → 71% | 12.75d → 14.75d |  |  |
| 126 | **Research on use of systems-hosted older versions** |  | 2011-08-24 → 2011-08-30 (+6d) | 52d? → 56d? | 81% → 76% | 12.75d → 14.75d |  |  |
| 131 | Determine why subsequent queries returned no results and re-submit | 2011-08-02 A | 2011-08-24 → 2011-08-23 (-1d) | 4d → 6d | 0% → 50% | 12.75d → 14.75d |  |  |
| 132 | Lead time and systems response (est.) | 2011-08-02 → 2011-08-24 (+22d) | 2011-08-02 → 2011-08-30 (+28d) | 1d? → 5d? |  | 28.75d → 14.75d | none → 131 |  |
| 133 | Follow up review of proposed features | 2011-08-25 → 2011-08-31 (+6d) | 2011-08-25 → 2011-08-31 (+6d) |  |  | 12.75d → 14.75d |  |  |
| 134 | Draft project plan (complete) | 2011-08-25 → 2011-08-31 (+6d) | 2011-08-29 → 2011-09-02 (+4d) |  |  | 12.75d → 14.75d |  |  |
| 135 | Review plan with user representatives and amend | 2011-08-29 → 2011-09-02 (+4d) | 2011-09-13 → 2011-09-19 (+6d) |  |  | 12.75d → 14.75d |  |  |
| 136 | Plan approval | 2011-09-13 → 2011-09-19 (+6d) | 2011-09-14 → 2011-09-20 (+6d) |  |  | 12.75d → 14.75d |  |  |
| 139 | **UPT enhancements [changes expected]** | 2011-10-03 → 2011-10-11 (+8d) | 2012-03-02 → 2012-03-12 (+10d) |  |  |  |  |  |
| 140 | GF 30436 Better LDAP integration when adding users to UPT | 2011-10-03 → 2011-10-11 (+8d) | 2011-10-07 → 2011-10-17 (+10d) |  |  |  |  |  |
| 141 | GF 22524 Authentication - DataSource LoginModule | 2011-10-10 → 2011-10-18 (+8d) | 2011-10-12 → 2011-10-20 (+8d) |  |  |  |  |  |
| 142 | GF 1158/2830 Implement paging for UPT | 2011-10-13 → 2011-10-21 (+8d) | 2011-10-26 → 2011-11-03 (+8d) |  |  |  |  |  |
| 143 | GF 22540/29002/30435 Password changes | 2011-10-27 → 2011-11-04 (+8d) | 2011-11-09 → 2011-11-17 (+8d) |  |  |  |  |  |
| 144 | GF 15527 CSM username field length should be increased to 100 characters | 2011-11-10 → 2011-11-18 (+8d) | 2011-11-10 → 2011-11-18 (+8d) |  |  |  |  |  |
| 145 | GF 19369 Indicate UPT /CSM version names in the Application Header after login | 2011-11-11 → 2011-11-21 (+10d) | 2011-11-14 → 2011-11-22 (+8d) |  |  |  |  |  |
| 146 | GF 631/22236 Password recovery | 2011-11-15 → 2011-11-23 (+8d) | 2011-11-21 → 2011-11-29 (+8d) |  |  |  |  |  |
| 147 | GF 30019 User lockout on unsuccessful logins | 2011-11-22 → 2011-11-30 (+8d) | 2011-11-28 → 2011-12-06 (+8d) |  |  |  |  |  |
| 148 | GF 2913 Add an Active Flag for users | 2011-11-29 → 2011-12-07 (+8d) | 2011-12-05 → 2011-12-13 (+8d) |  |  |  |  |  |
| 149 | GF 24404 UPT GUI installer should validate database connection info | 2011-12-06 → 2011-12-14 (+8d) | 2011-12-08 → 2011-12-16 (+8d) |  |  |  |  |  |
| 150 | GF 30372 Change UPT install.properties file to note properties that must be replaced | 2011-12-09 → 2011-12-19 (+10d) | 2011-12-09 → 2011-12-19 (+10d) |  |  |  |  |  |
| 151 | GF 1154/30433 Synchronization between UPT and supported application | 2011-12-12 → 2011-12-20 (+8d) | 2011-12-30 → 2012-01-09 (+10d) |  |  |  |  |  |
| 152 | GF 24965 Documentation changes from CDL installation | 2012-01-02 → 2012-01-10 (+8d) | 2012-01-02 → 2012-01-10 (+8d) |  |  |  |  |  |
| 153 | GF 24116 Need stronger access control | 2012-01-03 → 2012-01-11 (+8d) | 2012-01-16 → 2012-01-24 (+8d) |  |  |  |  |  |
| 154 | GF 2914 Auto-email new user or associated user | 2012-01-17 → 2012-01-25 (+8d) | 2012-01-20 → 2012-01-30 (+10d) |  |  |  |  |  |
| 155 | User friendly UPT UI | 2012-01-23 → 2012-01-31 (+8d) | 2012-02-10 → 2012-02-20 (+10d) |  |  |  |  |  |
| 156 | Customizable UPT UI | 2012-02-13 → 2012-02-21 (+8d) | 2012-03-02 → 2012-03-12 (+10d) |  |  |  |  |  |
| 159 | **XMI Handler** | 2011-08-25 → 2011-08-17 A (-8d) | 2011-09-14 → 2011-09-09 (-5d) | 14d? → 17d? | 0% → 14% | 122d → 131d |  |  |
| 160 | Test use of new XMI Handler modeling features with SIW and document results | 2011-08-25 → 2011-08-17 A (-8d) | 2011-08-30 → 2011-08-25 (-5d) |  | 0% → 50% | 122d → 131d |  | constraint start no earlier than 2011-08-25 → start no earlier than 2011-08-17 |
| 161 | Coordinate official 1.1 release | 2011-08-31 → 2011-08-26 (-5d) | 2011-09-07 → 2011-09-01 (-6d) |  |  | 122d → 131d |  |  |
| 162 | Coordinate 1.2 release (tech stack upgrade)? | 2011-09-08 → 2011-09-02 (-6d) | 2011-09-14 → 2011-09-09 (-5d) |  |  | 122d → 131d |  |  |
| 165 | **Analysis** |  | 2011-08-23 → 2011-10-12 (+50d) | 109d → 144d |  | 137d → 108d |  |  |
| 178 | Ideal architecture for separation of SDK and caGrid | 2011-08-22 → 2011-10-11 (+50d) | 2011-08-23 → 2011-10-12 (+50d) |  |  | 137d → 107d | 68 → 116 |  |
| 193 | **General support to date (only large tasks called out)** |  | 2011-10-03 → 2011-10-13 (+10d) | 185d? → 193d? | 89% → 90% | 109d → 107d |  |  |
| 206 | General support 8/1-8/5 |  | 2011-08-05 A |  | 20% → 100% | 149d → none |  | resources Dan [15%] → Dan [10%] |

| ID | Task | Start | Finish | Duration | Complete | Total float | Predecessors |
| --- | --- | --- | --- | --- | --- | --- | --- |
| 212 | Document migration activities/issues moving from SDK 4.0 to 4.4 (using caDSR as an example) | 2011-10-03 → 2011-10-13 (+10d) | 2011-10-03 → 2011-10-13 (+10d) |  |  | 109d → 107d | 41 → 178 |
| 217 | **Project Management to date (only large tasks called out)** |  | 2011-08-04 → 2011-08-26 (+22d) | 102d → 118d | 97% → 95% | 150d → 140d |  |
| 228 | General PM 8/1-8/4 |  | 2011-08-04 A |  | 25% → 100% | 150d → none |  |

## Version 9 (saved 2011-09-06)

Note of the change: SVN-Revision: 1652

Last finish 2012-03-12 → 2012-03-30 (+18d). Complete tasks 117 → 124.

Added:

| ID | Task | Duration | Start | Finish | Predecessors | Constraint | Resources |
| --- | --- | --- | --- | --- | --- | --- | --- |
| 64 | CSM 4.2.4 - add backward compatibility fixes made in 4.2.3 | 2d | 2011-09-06 | 2011-09-07 | 63, 78 | start no earlier than 2011-08-29 | Prasad [75%] |
| 66 | Merge 4.2.3 enhancements into 4.5 | 5d | 2011-08-29 A | 2011-09-02 |  | start no earlier than 2011-08-29 | Dan [25%] |
| 67 | Sprint, Struts, Ant upgrades | 2d | 2011-09-08 | 2011-09-09 | 66, 64 | start no earlier than 2011-08-29 | Prasad [75%] |
| 78 | testing and fixes for backward compatibility in CSM 4.2.3 | 5d | 2011-08-29 A | 2011-09-02 A |  | start no earlier than 2011-08-29 | Prasad [75%] |
| 79 | template investigation (SDK-705 and SDK-1354) | 3d | 2011-08-25 | 2011-08-29 |  | start no earlier than 2011-08-25 | Greg [50%] |
| 80 | template modifications (SDK-705 and SDK-1354) | 1d? | 2011-09-06 | 2011-09-06 | 66 | start no earlier than 2011-08-29 | Dan [25%] |
| 81 | **Alternate distribution packages - CSM 4.2.3** | 8d | 2011-09-06 | 2011-09-15 |  |  |  |
| 82 | Smoke-test GUI installer distribution | 4d | 2011-09-06 | 2011-09-09 | 78 | start no earlier than 2011-08-29 | Greg [25%] |
| 83 | Smoke-test upgrade distribution | 4d | 2011-09-12 | 2011-09-15 | 82 | start no earlier than 2011-08-29 | Greg [25%] |
| 84 | **Alternate distribution packages - CSM 4.2.4** | 8d | 2011-09-16 | 2011-09-27 | 64, 81 |  |  |
| 85 | Smoke-test GUI installer distribution | 4d | 2011-09-16 | 2011-09-21 |  | start no earlier than 2011-08-29 | Greg [25%] |
| 86 | Smoke-test upgrade distribution | 4d | 2011-09-22 | 2011-09-27 | 85 | start no earlier than 2011-08-29 | Greg [25%] |
| 97 | backward compatibility testing | 3d | 2011-09-06 | 2011-09-08 | 96 | start no earlier than 2011-09-06 | Aynur |
| 174 | **older completed tasks** | 93d | 2011-03-22 A | 2011-08-01 A |  |  |  |
| 187 | REST support for non-SDK applications - research | 10d | 2011-09-12 | 2011-09-23 | 69 | start no earlier than 2011-08-29 | Prasad [50%] |
| 204 | **older completed tasks** | 92d | 2011-03-22 A | 2011-07-29 A |  |  |  |
| 223 | General support 8/29-9/2 | 5d | 2011-08-29 A | 2011-09-02 |  | start no earlier than 2011-08-29 | Dan [10%] |
| 230 | **older completed tasks** | 98d | 2011-03-14 A | 2011-07-29 A |  |  |  |
| 244 | General PM 8/29-9/2 | 5d | 2011-08-29 A | 2011-09-02 |  | start no earlier than 2011-08-29 | Greg [25%] |

Removed: 68 ISO 21090 ("current" and "future") (Spring, Ant?); 103 3rd round (?); 114 ISO 21090 library

Changed:

| ID | Task | Start | Finish | Duration | Complete | Total float | Predecessors | Other |
| --- | --- | --- | --- | --- | --- | --- | --- | --- |
| 39 | **Technology stack upgrade to 2011 "current" and "future"** |  | 2011-10-10 → 2011-10-28 (+18d) | 104d? → 118d? | 57% → 59% |  |  |  |
| 62 | **2011 "future"** | 2011-08-24 A | 2011-08-29 → 2011-09-12 (+14d) | 4d → 13d | 0% → 54% | 9d → 17d |  |  |
| 63 | CSM 4.2.4 (Spring/Struts/Ant) | 2011-08-25 → 2011-08-24 A (-1d) | 2011-08-25 → 2011-08-26 A (+1d) | 1d → 3d | 0% → 100% | 5d → none | 68 → none | constraint start no earlier than 2011-07-13 → start no earlier than 2011-08-24 |
| 65 | **SDK 4.5** | 2011-08-26 → 2011-08-29 A (+3d) | 2011-08-29 → 2011-09-09 (+11d) | 2d → 9d | 0% → 57% | 5d → 3d | 63 → none | was named SDK 4.5 (Spring/Struts/Ant plus 4.2.3 features); constraint start no earlier than 2011-07-13 → none; resources Prasad [75%] → none |
| 68 | CLM 4.1.2 (Spring/Struts/Ant) | 2011-08-24 → 2011-09-12 (+19d) | 2011-08-24 → 2011-09-12 (+19d) |  |  | 5d → 14d | none → 65 | resources Prasad [75%] → Prasad |
| 69 | Workbench ("current") | 2011-09-07 → 2011-09-06 (-1d) | 2011-09-13 → 2011-09-09 (-4d) | 5d → 4d |  | 9d → 0d | ISO 21090 ("current" and "future") (Spring, Ant?) → 66 | was named Workbench ("current" and "future"); resources Prasad [50%] → Dan [25%] |
| 70 | (WebSSO?) | 2011-09-13 → 2011-09-09 (-4d) | 2011-09-13 → 2011-09-09 (-4d) |  |  | 19d → 35d |  |  |
| 87 | **QA 2011 "current"** |  | 2011-09-12 → 2011-09-14 (+2d) | 45d? → 47d? | 66% → 84% | 0d → 5d |  |  |
| 88 | **CSM 4.2.3** |  | 2011-08-29 → 2011-09-08 (+10d) | 36d → 43d | 97% → 88% | 3d → 5d |  |  |
| 96 | API testing |  | 2011-08-29 → 2011-09-02 (+4d) | 3d → 7d | 67% → 80% | 3d → 2d |  |  |
| 98 | CLM 4.1.1 | 2011-08-30 → 2011-09-09 (+10d) | 2011-09-01 → 2011-09-13 (+12d) |  |  | 3d → 2d |  |  |
| 99 | CSM/CLM test report | 2011-09-02 → 2011-09-14 (+12d) | 2011-09-02 → 2011-09-14 (+12d) |  |  | 3d → 2d |  |  |
| 100 | **SDK 4.4.1** |  | 2011-09-12 → 2011-09-09 (-3d) | 43.5d? → 42.5d? | 53% → 92% |  |  |  |
| 107 | PostgreSQL availability and issues (?) | 2011-08-08 A | 2011-08-24 A |  | 0% → 100% | 0d → none |  |  |
| 109 | Tomcat and Jboss with PostgreSQL database and Junit tests | 2011-08-25 A | 2011-08-29 → 2011-08-30 A (+1d) | 3d → 4d | 0% → 100% | 0d → none |  |  |
| 110 | adding and modifying *.java test cases in Junit, local-client, and remote client for Writable API; | 2011-08-30 → 2011-08-31 A (+1d) | 2011-08-31 → 2011-09-02 A (+2d) | 2d → 3d | 0% → 100% | 0d → none |  |  |
| 111 | testing with caGrid 1.4 | 2011-09-01 → 2011-09-06 (+5d) | 2011-09-06 → 2011-09-08 (+2d) |  |  |  |  | was named creating QTP/PEDAL test cases and run |
| 112 | documentation | 2011-09-07 → 2011-09-09 (+2d) | 2011-09-07 → 2011-09-09 (+2d) |  |  |  |  |  |
| 113 | Workbench | 2011-09-21 → 2011-09-12 (-9d) | 2011-09-23 → 2011-09-14 (-9d) |  |  | 4d → 0d | 69, 119 → 100, 69 | constraint start no earlier than 2011-08-22 → start no earlier than 2011-09-06 |
| 114 | Release activities 2011 current - concurrent with QA | 2011-09-08 → 2011-09-12 (+4d) | 2011-09-12 → 2011-09-14 (+2d) |  |  | 0d → 12d |  |  |
| 115 | Release activities 2011 "current" - post QA | 2011-09-13 → 2011-09-16 (+3d) | 2011-09-19 → 2011-09-22 (+3d) |  |  | 0d → 11d | 87, 114 → 87, 114, 81 |  |
| 116 | **QA 2011 "future"** | 2011-09-06 → 2011-09-15 (+9d) | 2011-09-20 → 2011-10-12 (+22d) | 11d → 20d |  | 2d → 0d |  |  |
| 117 | CSM/UPT 4.2.4 | 2011-09-06 → 2011-09-15 (+9d) | 2011-09-13 → 2011-09-28 (+15d) | 6d → 10d |  | 3d → 5d | 63, 99 → 99, 64 | was named CSM 4.2.4 |
| 118 | CLM/LLT 4.1.2 | 2011-09-14 → 2011-09-29 (+15d) | 2011-09-16 → 2011-10-05 (+19d) | 3d → 5d |  | 3d → 5d | 117 → 117, 68 | was named CLM 4.1.2 |
| 119 | SDK 4.5 | 2011-09-13 → 2011-09-15 (+2d) | 2011-09-20 → 2011-10-12 (+22d) | 6d → 20d |  | 2d → 0d | 68, 100 → 65, 113 |  |
| 120 | Release activities 2011 "future" - concurrent with QA | 2011-09-20 → 2011-10-10 (+20d) | 2011-09-22 → 2011-10-12 (+20d) |  |  |  |  |  |
| 121 | Release activities 2011 "future" - post QA | 2011-09-23 → 2011-10-13 (+20d) | 2011-09-29 → 2011-10-19 (+20d) |  |  |  | 116, 115, 120 → 116, 115, 120, 84 |  |
| 122 | **QA for upgraded non-core applications (not listed in tech stacks)** | 2011-09-19 → 2011-10-13 (+24d) | 2011-09-26 → 2011-10-17 (+21d) | 6d → 3d |  | 3d → 2d |  |  |
| 123 | CGMM | 2011-09-22 → 2011-10-13 (+21d) | 2011-09-26 → 2011-10-17 (+21d) |  |  | 3d → 2d | ISO 21090 library → 116 | resources Aynur → none |
| 124 | Release activities for non-core applications | 2011-09-30 → 2011-10-20 (+20d) | 2011-10-10 → 2011-10-28 (+18d) |  |  |  |  |  |
| 129 | **UPT Improvement Plan** |  | 2011-09-20 → 2011-10-21 (+31d) | 133.25d? → 156.25d? | 71% → 74% | 14.75d → 5.75d |  |  |
| 134 | **Research on use of systems-hosted older versions** |  | 2011-08-30 → 2011-10-03 (+34d) | 56d? → 79d? | 76% → 82% | 14.75d → 5.75d |  |  |
| 139 | Determine why subsequent queries returned no results and re-submit |  | 2011-08-23 → 2011-09-26 (+34d) |  | 50% → 83% | 14.75d → 5.75d |  |  |
| 140 | Lead time and systems response (est.) | 2011-08-24 → 2011-09-27 (+34d) | 2011-08-30 → 2011-10-03 (+34d) |  |  | 14.75d → 5.75d |  |  |
| 141 | Follow up review of proposed features | 2011-08-31 → 2011-10-04 (+34d) | 2011-08-31 → 2011-10-04 (+34d) |  |  | 14.75d → 5.75d |  |  |
| 142 | Draft project plan (complete) | 2011-08-31 → 2011-10-04 (+34d) | 2011-09-02 → 2011-10-06 (+34d) |  |  | 14.75d → 5.75d |  |  |
| 143 | Review plan with user representatives and amend | 2011-09-02 → 2011-10-06 (+34d) | 2011-09-19 → 2011-10-20 (+31d) |  |  | 14.75d → 5.75d |  |  |
| 144 | Plan approval | 2011-09-19 → 2011-10-20 (+31d) | 2011-09-20 → 2011-10-21 (+31d) |  |  | 14.75d → 5.75d |  |  |
| 147 | **UPT enhancements [changes expected]** | 2011-10-11 → 2011-10-31 (+20d) | 2012-03-12 → 2012-03-30 (+18d) |  |  |  |  |  |
| 148 | GF 30436 Better LDAP integration when adding users to UPT | 2011-10-11 → 2011-10-31 (+20d) | 2011-10-17 → 2011-11-04 (+18d) |  |  |  |  |  |
| 149 | GF 22524 Authentication - DataSource LoginModule | 2011-10-18 → 2011-11-07 (+20d) | 2011-10-20 → 2011-11-09 (+20d) |  |  |  |  |  |
| 150 | GF 1158/2830 Implement paging for UPT | 2011-10-21 → 2011-11-10 (+20d) | 2011-11-03 → 2011-11-23 (+20d) |  |  |  |  |  |
| 151 | GF 22540/29002/30435 Password changes | 2011-11-04 → 2011-11-24 (+20d) | 2011-11-17 → 2011-12-07 (+20d) |  |  |  |  |  |
| 152 | GF 15527 CSM username field length should be increased to 100 characters | 2011-11-18 → 2011-12-08 (+20d) | 2011-11-18 → 2011-12-08 (+20d) |  |  |  |  |  |
| 153 | GF 19369 Indicate UPT /CSM version names in the Application Header after login | 2011-11-21 → 2011-12-09 (+18d) | 2011-11-22 → 2011-12-12 (+20d) |  |  |  |  |  |
| 154 | GF 631/22236 Password recovery | 2011-11-23 → 2011-12-13 (+20d) | 2011-11-29 → 2011-12-19 (+20d) |  |  |  |  |  |
| 155 | GF 30019 User lockout on unsuccessful logins | 2011-11-30 → 2011-12-20 (+20d) | 2011-12-06 → 2011-12-26 (+20d) |  |  |  |  |  |
| 156 | GF 2913 Add an Active Flag for users | 2011-12-07 → 2011-12-27 (+20d) | 2011-12-13 → 2012-01-02 (+20d) |  |  |  |  |  |
| 157 | GF 24404 UPT GUI installer should validate database connection info | 2011-12-14 → 2012-01-03 (+20d) | 2011-12-16 → 2012-01-05 (+20d) |  |  |  |  |  |
| 158 | GF 30372 Change UPT install.properties file to note properties that must be replaced | 2011-12-19 → 2012-01-06 (+18d) | 2011-12-19 → 2012-01-06 (+18d) |  |  |  |  |  |
| 159 | GF 1154/30433 Synchronization between UPT and supported application | 2011-12-20 → 2012-01-09 (+20d) | 2012-01-09 → 2012-01-27 (+18d) |  |  |  |  |  |
| 160 | GF 24965 Documentation changes from CDL installation | 2012-01-10 → 2012-01-30 (+20d) | 2012-01-10 → 2012-01-30 (+20d) |  |  |  |  |  |
| 161 | GF 24116 Need stronger access control | 2012-01-11 → 2012-01-31 (+20d) | 2012-01-24 → 2012-02-13 (+20d) |  |  |  |  |  |
| 162 | GF 2914 Auto-email new user or associated user | 2012-01-25 → 2012-02-14 (+20d) | 2012-01-30 → 2012-02-17 (+18d) |  |  |  |  |  |
| 163 | User friendly UPT UI | 2012-01-31 → 2012-02-20 (+20d) | 2012-02-20 → 2012-03-09 (+18d) |  |  |  |  |  |
| 164 | Customizable UPT UI | 2012-02-21 → 2012-03-12 (+20d) | 2012-03-12 → 2012-03-30 (+18d) |  |  |  |  |  |
| 167 | **XMI Handler** |  | 2011-09-09 → 2011-10-12 (+33d) | 17d? → 40d? |  | 131d → 122d |  |  |
| 168 | Test use of new XMI Handler modeling features with SIW and document results |  | 2011-08-25 → 2011-09-28 (+34d) |  |  | 131d → 122d |  |  |
| 169 | Coordinate official 1.1 release | 2011-08-26 → 2011-09-29 (+34d) | 2011-09-01 → 2011-10-05 (+34d) |  |  | 131d → 122d |  |  |
| 170 | Coordinate 1.2 release (tech stack upgrade)? | 2011-09-02 → 2011-10-06 (+34d) | 2011-09-09 → 2011-10-12 (+33d) |  |  | 131d → 122d |  |  |
| 173 | **Analysis** |  | 2011-10-12 → 2011-11-02 (+21d) | 144d → 159d | 84% → 67% | 108d → 107d |  |  |
| 188 | Ideal architecture for separation of SDK and caGrid | 2011-10-11 → 2011-10-31 (+20d) | 2011-10-12 → 2011-11-02 (+21d) | 2d → 3d |  | 107d → 106d |  | resources Prasad [75%] → Prasad [50%] |
| 189 | Investigate problem with caGrid-flavored CQL and SDK 4.4 w/ ISO data types despite workaround |  | 2011-08-19 → 2011-09-30 (+42d) |  |  | 145d → 130d |  |  |
| 203 | **General support to date (only large tasks called out)** |  | 2011-10-13 → 2011-11-03 (+21d) | 193d? → 208d? | 90% → 91% | 107d → 106d |  |  |
| 222 | General support 8/22-8/26 | 2011-08-22 A | 2011-08-26 A |  | 0% → 100% | 140d → none |  |  |
| 224 | Document migration activities/issues moving from SDK 4.0 to 4.4 (using caDSR as an example) | 2011-10-13 → 2011-11-03 (+21d) | 2011-10-13 → 2011-11-03 (+21d) |  |  | 107d → 106d |  |  |
| 229 | **Project Management to date (only large tasks called out)** |  | 2011-08-26 → 2011-09-02 (+7d) | 118d → 123d | 95% → 97% | 140d → 149d |  |  |
| 243 | General PM 8/22-8/26 | 2011-08-22 A | 2011-08-26 A |  | 0% → 100% | 140d → none |  |  |

## Version 10 (saved 2011-09-13)

Note of the change: SVN-Revision: 1653

Last finish 2012-03-30 → 2012-04-06 (+7d). Complete tasks 124 → 132.

Added:

| ID | Task | Duration | Start | Finish | Constraint | Resources |
| --- | --- | --- | --- | --- | --- | --- |
| 69 | Workbench - test/review of versions and requirements | 3d | 2011-08-31 A | 2011-09-02 A | start no earlier than 2011-08-31 | Greg [25%] |
| 79 | QA support (2011 "current") | 9d | 2011-09-06 A | 2011-09-16 | start no earlier than 2011-09-06 | Prasad [50%] |
| 82 | --- QA and release activities below need to be re-planned ---- | 0d | 2011-09-12 | 2011-09-12 | start no earlier than 2011-09-12 |  |
| 220 | General support 9/6-9/9 | 4d | 2011-09-06 A | 2011-09-09 A | start no earlier than 2011-09-06 | Greg [30%] |
| 221 | General support 9/12-9/16 | 5d | 2011-09-12 | 2011-09-16 | start no earlier than 2011-09-12 | Greg [25%] |
| 243 | General PM 9/6-9/9 | 4d | 2011-09-06 A | 2011-09-09 A | start no earlier than 2011-09-06 | Greg [20%] |
| 244 | General PM 9/12-9/16 | 5d | 2011-09-12 | 2011-09-16 | start no earlier than 2011-09-12 | Greg [25%] |

Removed: 80 template modifications (SDK-705 and SDK-1354); 81 Alternate distribution packages - CSM 4.2.3; 82 Smoke-test GUI installer distribution; 83 Smoke-test upgrade distribution; 84 Alternate distribution packages - CSM 4.2.4; 85 Smoke-test GUI installer distribution; 86 Smoke-test upgrade distribution

Changed:

| ID | Task | Start | Finish | Duration | Complete | Total float | Predecessors | Other |
| --- | --- | --- | --- | --- | --- | --- | --- | --- |
| 39 | **Technology stack upgrade to 2011 "current" and "future"** |  | 2011-10-28 → 2011-11-04 (+7d) | 118d? → 123d? | 59% → 68% |  |  |  |
| 62 | **2011 "future"** |  | 2011-09-12 → 2011-09-16 (+4d) | 13d → 17d | 54% → 73% | 17d → 18d |  |  |
| 64 | CSM 4.2.4 - add backward compatibility fixes made in 4.2.3 | 2011-09-06 → 2011-09-12 A (+6d) | 2011-09-07 → 2011-09-14 (+7d) | 2d → 3d | 0% → 40% | 3d → 10d |  | constraint start no earlier than 2011-08-29 → start no earlier than 2011-09-12; resources Prasad [75%] → Prasad [50%] |
| 65 | **SDK 4.5** |  |  |  | 57% → 91% | 3d → 8d |  |  |
| 66 | Merge 4.2.3 enhancements into 4.5 |  | 2011-09-02 A |  | 80% → 100% | 0d → none |  |  |
| 67 | Sprint, Struts, Ant upgrades | 2011-09-08 → 2011-09-06 A (-2d) |  | 2d → 4d | 0% → 80% | 3d → 8d | 66, 64 → none | constraint start no earlier than 2011-08-29 → start no earlier than 2011-09-06; resources Prasad [75%] → Prasad [50%] |
| 68 | CLM 4.1.2 (Spring/Struts/Ant) | 2011-09-12 → 2011-09-15 (+3d) | 2011-09-12 → 2011-09-16 (+4d) | 1d → 2d |  | 14d → 18d |  | constraint start no earlier than 2011-08-24 → start no earlier than 2011-09-15; resources Prasad → Prasad [50%] |
| 70 | Workbench ("current" or both) | 2011-09-06 → 2011-09-12 (+6d) | 2011-09-09 → 2011-09-16 (+7d) | 4d → 5d |  |  |  | was named Workbench ("current"); constraint none → start no earlier than 2011-09-12 |
| 71 | (WebSSO?) | 2011-09-09 → 2011-09-16 (+7d) | 2011-09-09 → 2011-09-16 (+7d) |  |  |  |  |  |
| 78 | QA support and minor bug fixes (2011 "current") | 2011-08-24 A | 2011-09-06 → 2011-09-02 A (-4d) | 9d → 8d | 0% → 100% | 35d → none |  |  |
| 81 | template investigation (SDK-705 and SDK-1354) | 2011-08-25 A | 2011-08-29 A |  | 0% → 100% | 40d → none |  |  |
| 83 | **QA 2011 "current"** |  | 2011-09-14 → 2011-09-21 (+7d) | 47d? → 52d? |  |  |  |  |
| 109 | Workbench | 2011-09-12 → 2011-09-19 (+7d) | 2011-09-14 → 2011-09-21 (+7d) |  |  |  |  |  |
| 110 | Release activities 2011 current - concurrent with QA | 2011-09-12 → 2011-09-19 (+7d) | 2011-09-14 → 2011-09-21 (+7d) |  |  |  |  |  |
| 111 | Release activities 2011 "current" - post QA | 2011-09-16 → 2011-09-22 (+6d) | 2011-09-22 → 2011-09-28 (+6d) |  |  | 11d → 12d | 83, 110, Alternate distribution packages - CSM 4.2.3 → 83, 110 |  |
| 112 | **QA 2011 "future"** |  | 2011-10-12 → 2011-10-19 (+7d) | 20d → 25d |  |  |  |  |
| 115 | SDK 4.5 | 2011-09-15 → 2011-09-22 (+7d) | 2011-10-12 → 2011-10-19 (+7d) |  |  |  |  |  |
| 116 | Release activities 2011 "future" - concurrent with QA | 2011-10-10 → 2011-10-17 (+7d) | 2011-10-12 → 2011-10-19 (+7d) |  |  |  |  |  |
| 117 | Release activities 2011 "future" - post QA | 2011-10-13 → 2011-10-20 (+7d) | 2011-10-19 → 2011-10-26 (+7d) |  |  |  | 112, 111, 116, Alternate distribution packages - CSM 4.2.4 → 112, 111, 116 |  |
| 118 | **QA for upgraded non-core applications (not listed in tech stacks)** | 2011-10-13 → 2011-10-20 (+7d) | 2011-10-17 → 2011-10-24 (+7d) |  |  |  |  |  |
| 119 | CGMM | 2011-10-13 → 2011-10-20 (+7d) | 2011-10-17 → 2011-10-24 (+7d) |  |  |  |  |  |
| 120 | Release activities for non-core applications | 2011-10-20 → 2011-10-27 (+7d) | 2011-10-28 → 2011-11-04 (+7d) |  |  |  |  |  |
| 125 | **UPT Improvement Plan** |  | 2011-10-21 → 2011-10-14 (-7d) | 156.25d? → 151.25d? |  | 5.75d → 15.75d |  |  |
| 130 | **Research on use of systems-hosted older versions** |  | 2011-10-03 → 2011-09-26 (-7d) | 79d? → 74d? |  | 5.75d → 15.75d |  |  |
| 135 | Determine why subsequent queries returned no results and re-submit |  | 2011-09-26 → 2011-09-19 (-7d) |  |  | 5.75d → 15.75d |  |  |
| 136 | Lead time and systems response (est.) | 2011-09-27 → 2011-09-20 (-7d) | 2011-10-03 → 2011-09-26 (-7d) |  |  | 5.75d → 15.75d |  |  |
| 137 | Follow up review of proposed features | 2011-10-04 → 2011-09-27 (-7d) | 2011-10-04 → 2011-09-27 (-7d) |  |  | 5.75d → 15.75d |  |  |
| 138 | Draft project plan (complete) | 2011-10-04 → 2011-09-27 (-7d) | 2011-10-06 → 2011-09-29 (-7d) |  |  | 5.75d → 15.75d |  |  |
| 139 | Review plan with user representatives and amend | 2011-10-06 → 2011-09-29 (-7d) | 2011-10-20 → 2011-10-13 (-7d) |  |  | 5.75d → 15.75d |  |  |
| 140 | Plan approval | 2011-10-20 → 2011-10-13 (-7d) | 2011-10-21 → 2011-10-14 (-7d) |  |  | 5.75d → 15.75d |  |  |
| 143 | **UPT enhancements [changes expected]** | 2011-10-31 → 2011-11-07 (+7d) | 2012-03-30 → 2012-04-06 (+7d) |  |  |  |  |  |
| 144 | GF 30436 Better LDAP integration when adding users to UPT | 2011-10-31 → 2011-11-07 (+7d) | 2011-11-04 → 2011-11-11 (+7d) |  |  |  |  |  |
| 145 | GF 22524 Authentication - DataSource LoginModule | 2011-11-07 → 2011-11-14 (+7d) | 2011-11-09 → 2011-11-16 (+7d) |  |  |  |  |  |
| 146 | GF 1158/2830 Implement paging for UPT | 2011-11-10 → 2011-11-17 (+7d) | 2011-11-23 → 2011-11-30 (+7d) |  |  |  |  |  |
| 147 | GF 22540/29002/30435 Password changes | 2011-11-24 → 2011-12-01 (+7d) | 2011-12-07 → 2011-12-14 (+7d) |  |  |  |  |  |
| 148 | GF 15527 CSM username field length should be increased to 100 characters | 2011-12-08 → 2011-12-15 (+7d) | 2011-12-08 → 2011-12-15 (+7d) |  |  |  |  |  |
| 149 | GF 19369 Indicate UPT /CSM version names in the Application Header after login | 2011-12-09 → 2011-12-16 (+7d) | 2011-12-12 → 2011-12-19 (+7d) |  |  |  |  |  |
| 150 | GF 631/22236 Password recovery | 2011-12-13 → 2011-12-20 (+7d) | 2011-12-19 → 2011-12-26 (+7d) |  |  |  |  |  |
| 151 | GF 30019 User lockout on unsuccessful logins | 2011-12-20 → 2011-12-27 (+7d) | 2011-12-26 → 2012-01-02 (+7d) |  |  |  |  |  |
| 152 | GF 2913 Add an Active Flag for users | 2011-12-27 → 2012-01-03 (+7d) | 2012-01-02 → 2012-01-09 (+7d) |  |  |  |  |  |
| 153 | GF 24404 UPT GUI installer should validate database connection info | 2012-01-03 → 2012-01-10 (+7d) | 2012-01-05 → 2012-01-12 (+7d) |  |  |  |  |  |
| 154 | GF 30372 Change UPT install.properties file to note properties that must be replaced | 2012-01-06 → 2012-01-13 (+7d) | 2012-01-06 → 2012-01-13 (+7d) |  |  |  |  |  |
| 155 | GF 1154/30433 Synchronization between UPT and supported application | 2012-01-09 → 2012-01-16 (+7d) | 2012-01-27 → 2012-02-03 (+7d) |  |  |  |  |  |
| 156 | GF 24965 Documentation changes from CDL installation | 2012-01-30 → 2012-02-06 (+7d) | 2012-01-30 → 2012-02-06 (+7d) |  |  |  |  |  |
| 157 | GF 24116 Need stronger access control | 2012-01-31 → 2012-02-07 (+7d) | 2012-02-13 → 2012-02-20 (+7d) |  |  |  |  |  |
| 158 | GF 2914 Auto-email new user or associated user | 2012-02-14 → 2012-02-21 (+7d) | 2012-02-17 → 2012-02-24 (+7d) |  |  |  |  |  |
| 159 | User friendly UPT UI | 2012-02-20 → 2012-02-27 (+7d) | 2012-03-09 → 2012-03-16 (+7d) |  |  |  |  |  |
| 160 | Customizable UPT UI | 2012-03-12 → 2012-03-19 (+7d) | 2012-03-30 → 2012-04-06 (+7d) |  |  |  |  |  |
| 163 | **XMI Handler** |  | 2011-10-12 → 2011-10-05 (-7d) | 40d? → 35d? |  | 122d → 132d |  |  |
| 164 | Test use of new XMI Handler modeling features with SIW and document results |  | 2011-09-28 → 2011-09-21 (-7d) |  |  | 122d → 132d |  |  |
| 165 | Coordinate official 1.1 release | 2011-09-29 → 2011-09-22 (-7d) | 2011-10-05 → 2011-09-28 (-7d) |  |  | 122d → 132d |  |  |
| 166 | Coordinate 1.2 release (tech stack upgrade)? | 2011-10-06 → 2011-09-29 (-7d) | 2011-10-12 → 2011-10-05 (-7d) |  |  | 122d → 132d |  |  |
| 169 | **Analysis** |  | 2011-11-02 → 2011-11-09 (+7d) | 159d → 164d |  |  |  |  |
| 183 | REST support for non-SDK applications - research | 2011-09-12 → 2011-09-19 (+7d) | 2011-09-23 → 2011-09-30 (+7d) |  |  |  |  |  |
| 184 | Ideal architecture for separation of SDK and caGrid | 2011-10-31 → 2011-11-07 (+7d) | 2011-11-02 → 2011-11-09 (+7d) |  |  |  |  |  |
| 199 | **General support to date (only large tasks called out)** |  | 2011-11-03 → 2011-11-10 (+7d) | 208d? → 213d? |  |  |  |  |
| 219 | General support 8/29-9/2 |  | 2011-09-02 A |  | 20% → 100% | 149d → none |  |  |
| 222 | Document migration activities/issues moving from SDK 4.0 to 4.4 (using caDSR as an example) | 2011-11-03 → 2011-11-10 (+7d) | 2011-11-03 → 2011-11-10 (+7d) |  |  |  |  |  |
| 227 | **Project Management to date (only large tasks called out)** |  | 2011-09-02 → 2011-09-16 (+14d) | 123d → 132d | 97% → 96% | 149d → 145d |  |  |
| 242 | General PM 8/29-9/2 |  | 2011-09-02 A |  | 20% → 100% | 149d → none |  |  |

## Version 11 (saved 2011-09-20)

Note of the change: SVN-Revision: 1672

Last finish 2012-04-06 → 2012-04-10 (+4d). Complete tasks 132 → 139.

Added:

| ID | Task | Duration | Start | Finish | Predecessors | Constraint | Resources |
| --- | --- | --- | --- | --- | --- | --- | --- |
| 68 | Update CQL-related Junits and re-run all Junits | 5d | 2011-09-12 A | 2011-09-16 A |  | start no earlier than 2011-09-12 | Dan [25%] |
| 69 | JUnits - automation failing for XML data tests w/ ISO | 3d? | 2011-09-19 | 2011-09-21 |  | start no earlier than 2011-09-19 | Dan [25%] |
| 185 | REST support - servlet vs JAXrs document | 3d | 2011-09-21 | 2011-09-23 | 72 | start no earlier than 2011-09-20 | Prasad [50%] |
| 188 | IVY repository use and transition to Maven - investigation | 2d | 2011-09-15 | 2011-09-16 |  | start no earlier than 2011-09-15 | Greg [20%] |
| 226 | caArray/UPT issues with user-created groups (follow-up expected) | 3d | 2011-09-12 A | 2011-09-14 A |  | start no earlier than 2011-09-12 | Greg [20%] |
| 227 | General support 9/19-9/23 | 5d | 2011-09-19 | 2011-09-23 |  | start no earlier than 2011-09-19 | Greg [25%] |
| 228 | caArray/UPT investigation (?) | 5d? | 2011-09-26 | 2011-09-30 |  | start no earlier than 2011-09-26 |  |
| 252 | General PM 9/19-9/23 | 5d | 2011-09-19 | 2011-09-23 |  | start no earlier than 2011-09-19 | Greg [25%] |

Changed:

| ID | Task | Start | Finish | Duration | Complete | Total float | Predecessors | Other |
| --- | --- | --- | --- | --- | --- | --- | --- | --- |
| 39 | **Technology stack upgrade to 2011 "current" and "future"** |  | 2011-11-04 → 2011-11-08 (+4d) | 123d? → 125d? | 68% → 71% |  |  |  |
| 62 | **2011 "future"** |  | 2011-09-16 → 2011-09-27 (+11d) | 17d → 24d? | 73% → 80% | 18d → 13d |  |  |
| 64 | CSM 4.2.4 - add backward compatibility fixes made in 4.2.3 |  | 2011-09-14 → 2011-09-13 A (-1d) | 3d → 2d | 40% → 100% | 10d → none |  |  |
| 65 | **SDK 4.5** |  | 2011-09-09 → 2011-09-21 (+12d) | 9d → 17d? | 91% → 83% | 8d → 2d |  |  |
| 66 | Merge 4.2.3 enhancements into 4.5 |  | 2011-09-02 A → 2011-09-06 A (+4d) | 5d → 6d |  |  |  |  |
| 67 | Sprint, Struts, Ant upgrades |  | 2011-09-09 A |  | 80% → 100% | 8d → none |  |  |
| 70 | CLM 4.1.2 (Spring/Struts/Ant) | 2011-09-15 → 2011-09-26 (+11d) | 2011-09-16 → 2011-09-27 (+11d) |  |  | 18d → 13d | 65 → 65, 72, 185 |  |
| 72 | Workbench 4.4.1 (supports 4.4.1 and 4.5) | 2011-09-12 → 2011-09-14 A (+2d) | 2011-09-16 → 2011-09-20 A (+4d) |  | 0% → 100% | 0d → none |  | was named Workbench ("current" or both); constraint start no earlier than 2011-09-12 → start no earlier than 2011-09-14; resources Dan [25%] → Prasad [50%] |
| 73 | (WebSSO?) | 2011-09-16 → 2011-09-20 (+4d) | 2011-09-16 → 2011-09-20 (+4d) |  |  |  |  |  |
| 81 | QA support (2011 "current") |  | 2011-09-16 → 2011-09-23 (+7d) | 9d → 14d | 50% → 70% | 35d → 32d |  |  |
| 85 | **QA 2011 "current"** |  | 2011-09-21 → 2011-09-23 (+2d) | 52d? → 54d? |  |  |  |  |
| 111 | Workbench | 2011-09-19 → 2011-09-21 (+2d) | 2011-09-21 → 2011-09-23 (+2d) |  |  |  |  |  |
| 112 | Release activities 2011 current - concurrent with QA | 2011-09-19 → 2011-09-21 (+2d) | 2011-09-21 → 2011-09-23 (+2d) |  |  |  |  | resources Prasad [50%] → none |
| 113 | Release activities 2011 "current" - post QA | 2011-09-22 → 2011-09-26 (+4d) | 2011-09-28 → 2011-09-30 (+2d) |  |  |  |  | resources Prasad [50%] → none |
| 114 | **QA 2011 "future"** |  | 2011-10-19 → 2011-10-21 (+2d) | 25d → 27d |  |  |  |  |
| 117 | SDK 4.5 | 2011-09-22 → 2011-09-26 (+4d) | 2011-10-19 → 2011-10-21 (+2d) |  |  |  |  |  |
| 118 | Release activities 2011 "future" - concurrent with QA | 2011-10-17 → 2011-10-19 (+2d) | 2011-10-19 → 2011-10-21 (+2d) |  |  |  |  | resources Prasad [50%] → none |
| 119 | Release activities 2011 "future" - post QA | 2011-10-20 → 2011-10-24 (+4d) | 2011-10-26 → 2011-10-28 (+2d) |  |  |  |  | resources Prasad [50%] → none |
| 120 | **QA for upgraded non-core applications (not listed in tech stacks)** | 2011-10-20 → 2011-10-24 (+4d) | 2011-10-24 → 2011-10-26 (+2d) |  |  |  |  |  |
| 121 | CGMM | 2011-10-20 → 2011-10-24 (+4d) | 2011-10-24 → 2011-10-26 (+2d) |  |  |  |  |  |
| 122 | Release activities for non-core applications | 2011-10-27 → 2011-10-31 (+4d) | 2011-11-04 → 2011-11-08 (+4d) |  |  |  |  | resources Prasad [50%] → none |
| 127 | **UPT Improvement Plan** |  | 2011-10-14 → 2011-10-21 (+7d) | 151.25d? → 156.25d? |  | 15.75d → 10.75d |  |  |
| 132 | **Research on use of systems-hosted older versions** |  | 2011-09-26 → 2011-10-03 (+7d) | 74d? → 79d? |  | 15.75d → 10.75d |  |  |
| 137 | Determine why subsequent queries returned no results and re-submit |  | 2011-09-19 → 2011-09-26 (+7d) |  |  | 15.75d → 10.75d |  |  |
| 138 | Lead time and systems response (est.) | 2011-09-20 → 2011-09-27 (+7d) | 2011-09-26 → 2011-10-03 (+7d) |  |  | 15.75d → 10.75d |  |  |
| 139 | Follow up review of proposed features | 2011-09-27 → 2011-10-04 (+7d) | 2011-09-27 → 2011-10-04 (+7d) |  |  | 15.75d → 10.75d |  |  |
| 140 | Draft project plan (complete) | 2011-09-27 → 2011-10-04 (+7d) | 2011-09-29 → 2011-10-06 (+7d) |  |  | 15.75d → 10.75d |  |  |
| 141 | Review plan with user representatives and amend | 2011-09-29 → 2011-10-06 (+7d) | 2011-10-13 → 2011-10-20 (+7d) |  |  | 15.75d → 10.75d |  |  |
| 142 | Plan approval | 2011-10-13 → 2011-10-20 (+7d) | 2011-10-14 → 2011-10-21 (+7d) |  |  | 15.75d → 10.75d |  |  |
| 145 | **UPT enhancements [changes expected]** | 2011-11-07 → 2011-11-09 (+2d) | 2012-04-06 → 2012-04-10 (+4d) |  |  |  |  |  |
| 146 | GF 30436 Better LDAP integration when adding users to UPT | 2011-11-07 → 2011-11-09 (+2d) | 2011-11-11 → 2011-11-15 (+4d) |  |  |  |  |  |
| 147 | GF 22524 Authentication - DataSource LoginModule | 2011-11-14 → 2011-11-16 (+2d) | 2011-11-16 → 2011-11-18 (+2d) |  |  |  |  |  |
| 148 | GF 1158/2830 Implement paging for UPT | 2011-11-17 → 2011-11-21 (+4d) | 2011-11-30 → 2011-12-02 (+2d) |  |  |  |  |  |
| 149 | GF 22540/29002/30435 Password changes | 2011-12-01 → 2011-12-05 (+4d) | 2011-12-14 → 2011-12-16 (+2d) |  |  |  |  |  |
| 150 | GF 15527 CSM username field length should be increased to 100 characters | 2011-12-15 → 2011-12-19 (+4d) | 2011-12-15 → 2011-12-19 (+4d) |  |  |  |  |  |
| 151 | GF 19369 Indicate UPT /CSM version names in the Application Header after login | 2011-12-16 → 2011-12-20 (+4d) | 2011-12-19 → 2011-12-21 (+2d) |  |  |  |  |  |
| 152 | GF 631/22236 Password recovery | 2011-12-20 → 2011-12-22 (+2d) | 2011-12-26 → 2011-12-28 (+2d) |  |  |  |  |  |
| 153 | GF 30019 User lockout on unsuccessful logins | 2011-12-27 → 2011-12-29 (+2d) | 2012-01-02 → 2012-01-04 (+2d) |  |  |  |  |  |
| 154 | GF 2913 Add an Active Flag for users | 2012-01-03 → 2012-01-05 (+2d) | 2012-01-09 → 2012-01-11 (+2d) |  |  |  |  |  |
| 155 | GF 24404 UPT GUI installer should validate database connection info | 2012-01-10 → 2012-01-12 (+2d) | 2012-01-12 → 2012-01-16 (+4d) |  |  |  |  |  |
| 156 | GF 30372 Change UPT install.properties file to note properties that must be replaced | 2012-01-13 → 2012-01-17 (+4d) | 2012-01-13 → 2012-01-17 (+4d) |  |  |  |  |  |
| 157 | GF 1154/30433 Synchronization between UPT and supported application | 2012-01-16 → 2012-01-18 (+2d) | 2012-02-03 → 2012-02-07 (+4d) |  |  |  |  |  |
| 158 | GF 24965 Documentation changes from CDL installation | 2012-02-06 → 2012-02-08 (+2d) | 2012-02-06 → 2012-02-08 (+2d) |  |  |  |  |  |
| 159 | GF 24116 Need stronger access control | 2012-02-07 → 2012-02-09 (+2d) | 2012-02-20 → 2012-02-22 (+2d) |  |  |  |  |  |
| 160 | GF 2914 Auto-email new user or associated user | 2012-02-21 → 2012-02-23 (+2d) | 2012-02-24 → 2012-02-28 (+4d) |  |  |  |  |  |
| 161 | User friendly UPT UI | 2012-02-27 → 2012-02-29 (+2d) | 2012-03-16 → 2012-03-20 (+4d) |  |  |  |  |  |
| 162 | Customizable UPT UI | 2012-03-19 → 2012-03-21 (+2d) | 2012-04-06 → 2012-04-10 (+4d) |  |  |  |  |  |
| 165 | **XMI Handler** |  | 2011-10-05 → 2011-10-12 (+7d) | 35d? → 40d? |  | 132d → 127d |  |  |
| 166 | Test use of new XMI Handler modeling features with SIW and document results |  | 2011-09-21 → 2011-09-28 (+7d) |  |  | 132d → 127d |  |  |
| 167 | Coordinate official 1.1 release | 2011-09-22 → 2011-09-29 (+7d) | 2011-09-28 → 2011-10-05 (+7d) |  |  | 132d → 127d |  |  |
| 168 | Coordinate 1.2 release (tech stack upgrade)? | 2011-09-29 → 2011-10-06 (+7d) | 2011-10-05 → 2011-10-12 (+7d) |  |  | 132d → 127d |  |  |
| 171 | **Analysis** |  | 2011-11-09 → 2011-11-11 (+2d) | 164d → 166d | 67% → 62% |  |  |  |
| 186 | REST support for non-SDK applications - research | 2011-09-19 → 2011-09-28 (+9d) | 2011-09-30 → 2011-10-11 (+11d) |  |  | 135d → 130d | 72 → 185, 70 |  |
| 189 | Ideal architecture for separation of SDK and caGrid | 2011-11-07 → 2011-11-09 (+2d) | 2011-11-09 → 2011-11-11 (+2d) |  |  |  |  |  |
| 203 | **General support to date (only large tasks called out)** |  | 2011-11-10 → 2011-11-14 (+4d) | 213d? → 215d? | 91% → 88% |  |  |  |
| 225 | General support 9/12-9/16 | 2011-09-12 A | 2011-09-16 A |  | 0% → 100% | 145d → none |  | resources Greg [25%] → Greg [10%] |
| 229 | Document migration activities/issues moving from SDK 4.0 to 4.4 (using caDSR as an example) | 2011-11-10 → 2011-11-14 (+4d) | 2011-11-10 → 2011-11-14 (+4d) |  |  |  |  |  |
| 234 | **Project Management to date (only large tasks called out)** |  | 2011-09-16 → 2011-09-23 (+7d) | 132d → 137d |  | 145d → 142d |  |  |
| 251 | General PM 9/12-9/16 | 2011-09-12 A | 2011-09-16 A |  | 0% → 100% | 145d → none |  | resources Greg [25%] → Greg [20%] |

## Version 12 (saved 2011-09-27)

Note of the change: SVN-Revision: 1673

Last finish stays 2012-04-10. Complete tasks 139 → 146.

Added:

| ID | Task | Duration | Start | Finish | Predecessors | Constraint | Resources |
| --- | --- | --- | --- | --- | --- | --- | --- |
| 84 | CSM 4.2.3 - smoketest alternate distribution packages | 8d | 2011-09-21 | 2011-09-30 |  | start no earlier than 2011-09-21 | Greg [20%] |
| 85 | CSM 4.2.4 - smoketest alternate distribution packages | 5d | 2011-10-03 | 2011-10-07 | 84 | start no earlier than 2011-09-27 | Greg [20%] |
| 125 | CGMM (not in tech stack document) | 1d? | 2011-09-27 | 2011-09-27 |  | start no earlier than 2011-09-27 |  |
| 130 | **Ivy/Maven migration** | 22d? | 2011-09-26 | 2011-10-25 |  |  |  |
| 131 | SDK 4.5 | 20d? | 2011-09-26 | 2011-10-21 |  | start no earlier than 2011-09-26 | Dan [25%] |
| 132 | modifications to pending releases (?) | 1d? | 2011-10-24 | 2011-10-24 | 131 | start no earlier than 2011-09-27 |  |
| 133 | patch scripts for earlier releases | 1d? | 2011-10-25 | 2011-10-25 | 132 | start no earlier than 2011-09-27 |  |
| 136 | **REST API implementation** | 4d? | 2011-09-27 | 2011-09-30 |  |  |  |
| 137 | SDK 4.5 | 3d | 2011-09-28 | 2011-09-30 |  | start no earlier than 2011-09-28 | Prasad |
| 138 | future plan(?) | 1d? | 2011-09-27 | 2011-09-27 |  | start no earlier than 2011-09-27 |  |
| 201 | REST support - servlet vs JAXrs document - review and updates | 1d | 2011-09-27 | 2011-09-27 | 200 | start no earlier than 2011-09-27 | Prasad |
| 243 | General support 9/26-9/30 | 5d | 2011-09-26 | 2011-09-30 |  | start no earlier than 2011-09-26 | Greg [10%] |
| 269 | General PM 9/26-9/30 | 5d | 2011-09-26 | 2011-09-30 |  | start no earlier than 2011-09-26 | Greg [20%] |

Changed:

| ID | Task | Start | Finish | Duration | Complete | Total float | Predecessors | Other |
| --- | --- | --- | --- | --- | --- | --- | --- | --- |
| 62 | **2011 "future"** |  | 2011-09-27 → 2011-09-26 A (-1d) | 24d? → 23d | 80% → 100% | 13d → none |  |  |
| 65 | **SDK 4.5** |  | 2011-09-21 → 2011-09-23 A (+2d) | 17d? → 19d | 83% → 100% | 2d → none |  |  |
| 69 | JUnits - automation failing for XML data tests w/ ISO | 2011-09-19 A | 2011-09-21 → 2011-09-23 A (+2d) | 3d? → 5d | 0% → 100% | 2d → none |  |  |
| 70 | CLM 4.1.2 (Spring/Struts/Ant) | 2011-09-26 A | 2011-09-27 → 2011-09-26 A (-1d) | 2d → 1d | 0% → 100% | 13d → none |  | resources Prasad [50%] → Prasad |
| 81 | QA support (2011 "current") |  | 2011-09-23 A |  | 70% → 100% | 32d → none |  |  |
| 86 | --- QA and release activities need to be re-planned ---- |  |  |  |  | 40d → 42d |  | was named --- QA and release activities below need to be re-planned ---- |
| 141 | **UPT Improvement Plan** |  | 2011-10-21 → 2011-10-28 (+7d) | 156.25d? → 161.25d? |  | 10.75d → 7.75d |  |  |
| 146 | **Research on use of systems-hosted older versions** |  | 2011-10-03 → 2011-10-10 (+7d) | 79d? → 84d? |  | 10.75d → 7.75d |  |  |
| 151 | Determine why subsequent queries returned no results and re-submit |  | 2011-09-26 → 2011-10-03 (+7d) |  |  | 10.75d → 7.75d |  |  |
| 152 | Lead time and systems response (est.) | 2011-09-27 → 2011-10-04 (+7d) | 2011-10-03 → 2011-10-10 (+7d) |  |  | 10.75d → 7.75d |  |  |
| 153 | Follow up review of proposed features | 2011-10-04 → 2011-10-11 (+7d) | 2011-10-04 → 2011-10-11 (+7d) |  |  | 10.75d → 7.75d |  |  |
| 154 | Draft project plan (complete) | 2011-10-04 → 2011-10-11 (+7d) | 2011-10-06 → 2011-10-13 (+7d) |  |  | 10.75d → 7.75d |  |  |
| 155 | Review plan with user representatives and amend | 2011-10-06 → 2011-10-13 (+7d) | 2011-10-20 → 2011-10-27 (+7d) |  |  | 10.75d → 7.75d |  |  |
| 156 | Plan approval | 2011-10-20 → 2011-10-27 (+7d) | 2011-10-21 → 2011-10-28 (+7d) |  |  | 10.75d → 7.75d |  |  |
| 179 | **XMI Handler** |  | 2011-10-12 → 2011-10-19 (+7d) | 40d? → 45d? |  | 127d → 124d |  |  |
| 180 | Test use of new XMI Handler modeling features with SIW and document results |  | 2011-09-28 → 2011-10-05 (+7d) |  |  | 127d → 124d |  |  |
| 181 | Coordinate official 1.1 release | 2011-09-29 → 2011-10-06 (+7d) | 2011-10-05 → 2011-10-12 (+7d) |  |  | 127d → 124d |  |  |
| 182 | Coordinate 1.2 release (tech stack upgrade)? | 2011-10-06 → 2011-10-13 (+7d) | 2011-10-12 → 2011-10-19 (+7d) |  |  | 127d → 124d |  |  |
| 185 | **Analysis** |  |  |  | 62% → 69% |  |  |  |
| 199 | Investigate problem with caGrid-flavored CQL and SDK 4.4 w/ ISO data types despite workaround [canceled] |  | 2011-09-30 → 2011-07-22 A (-70d) | 10d → 5d | 50% → 100% | 137d → none |  | was named Investigate problem with caGrid-flavored CQL and SDK 4.4 w/ ISO data types despite workaround |
| 200 | REST support - servlet vs JAXrs document | 2011-09-21 A | 2011-09-23 A |  | 0% → 100% | 132d → none |  |  |
| 202 | REST support for non-SDK applications - research |  |  |  |  |  | 200, 70 → 70, 201 | resources Prasad [50%] → none |
| 203 | IVY repository use and transition to Maven - investigation |  | 2011-09-16 → 2011-09-20 (+4d) | 2d → 4d |  | 147d → 145d |  |  |
| 218 | **General support to date (only large tasks called out)** |  |  |  | 88% → 89% |  |  |  |
| 242 | General support 9/19-9/23 | 2011-09-19 A | 2011-09-23 A |  | 0% → 100% | 142d → none |  | resources Greg [25%] → Greg [10%] |
| 250 | **Project Management to date (only large tasks called out)** |  | 2011-09-23 → 2011-09-30 (+7d) | 137d → 142d |  | 142d → 137d |  |  |
| 268 | General PM 9/19-9/23 | 2011-09-19 A | 2011-09-23 A |  | 0% → 100% | 142d → none |  | resources Greg [25%] → Greg [20%] |

## Version 13 (saved 2011-10-11)

Note of the change: SVN-Revision: 1674

Last finish 2012-04-10 → 2012-04-11 (+1d). Complete tasks 146 → 156.

Added:

| ID | Task | Duration | Start | Finish | Predecessors | Constraint | Resources |
| --- | --- | --- | --- | --- | --- | --- | --- |
| 130 | Remove BDA dependencies - CSM 4.2.4 | 4d | 2011-10-04 A | 2011-10-07 A |  | start no earlier than 2011-10-04 | Prasad [50%] |
| 131 | Repository migration - CSM 4.2.4 | 4d | 2011-10-11 | 2011-10-14 |  | start no earlier than 2011-10-11 | Prasad |
| 132 | Repository and BDA - SDK 4.4.1 | 4d? | 2011-10-17 | 2011-10-20 | 131 | start no earlier than 2011-10-11 | Prasad |
| 133 | Repository and BDA - SDK 4.5 | 2d | 2011-10-21 | 2011-10-24 | 132 | start no earlier than 2011-10-11 | Prasad |
| 134 | Repository and BDA - CSM 4.2.3 (?) | 2d | 2011-10-25 | 2011-10-26 | 131, 133 | start no earlier than 2011-10-11 | Prasad |
| 142 | Requirements discussions | 5d | 2011-09-26 | 2011-09-30 |  | start no earlier than 2011-09-26 | Greg [10%] |
| 143 | JAX-RS Jersey vs Apache CXF comparison (test implementations) | 4d | 2011-09-28 A | 2011-10-03 A | 142 |  | Prasad |
| 144 | Document current state vs. and path towards "real" REST | 4d | 2011-10-04 A | 2011-10-07 A | 143 |  | Prasad [50%] |
| 145 | "real" REST (GET only) | 10d? | 2011-10-27 | 2011-11-09 | 144, 134 |  |  |
| 160 | Initial task sheet (TRB presentation prep) | 5d | 2011-10-03 | 2011-10-07 |  | start no earlier than 2011-10-03 | Greg [25%] |
| 209 | 508 compliance reviews | 25d? | 2011-09-26 A | 2011-10-31 |  | start no earlier than 2011-09-26 | Dan [25%] |
| 249 | General support 10/3-10/7 | 5d | 2011-10-03 A | 2011-10-07 A |  | start no earlier than 2011-09-26 |  |
| 250 | General support 10/11-10/14 | 4d | 2011-10-11 | 2011-10-14 |  | start no earlier than 2011-10-11 | Greg [10%] |
| 277 | General PM 10/3-10/7 | 5d | 2011-10-03 | 2011-10-07 |  | start no earlier than 2011-10-03 | Greg [25%] |
| 278 | General PM 10/11-10/14 | 5d | 2011-10-11 | 2011-10-17 |  | start no earlier than 2011-10-11 | Greg [20%] |

Removed: 73 (WebSSO?); 131 SDK 4.5; 137 SDK 4.5; 138 future plan(?); 152 Lead time and systems response (est.); 156 Plan approval

Changed:

| ID | Task | Start | Finish | Duration | Complete | Total float | Predecessors | Other |
| --- | --- | --- | --- | --- | --- | --- | --- | --- |
| 39 | **Technology stack upgrade to 2011 "current" and "future"** |  | 2011-11-08 → 2011-11-09 (+1d) |  | 71% → 74% |  |  |  |
| 70 | CLM 4.1.2 (Spring/Struts/Ant) |  |  |  |  |  | 65, 72, 140 → 65, 72 |  |
| 72 | Workbench 4.4.1 (supports 4.4.1 and 4.5) |  |  |  |  |  | 66 → none |  |
| 83 | CSM 4.2.3 - smoketest alternate distribution packages [stopped] | 2011-09-21 A | 2011-09-30 → 2011-09-23 A (-7d) | 8d → 3d | 0% → 100% | 22d → none |  | was named CSM 4.2.3 - smoketest alternate distribution packages |
| 84 | CSM 4.2.4 - smoketest alternate distribution packages [dropped] | 2011-10-03 → 2011-09-27 (-6d) | 2011-10-07 → 2011-09-27 (-10d) | 5d → 0d |  | 22d → 31d |  | was named CSM 4.2.4 - smoketest alternate distribution packages; resources Greg [20%] → none |
| 115 | **QA 2011 "future"** |  | 2011-10-21 → 2011-10-24 (+3d) |  |  |  |  |  |
| 118 | SDK 4.5 |  | 2011-10-21 → 2011-10-24 (+3d) |  |  |  |  |  |
| 119 | Release activities 2011 "future" - concurrent with QA | 2011-10-19 → 2011-10-20 (+1d) | 2011-10-21 → 2011-10-24 (+3d) |  |  |  |  |  |
| 120 | Release activities 2011 "future" - post QA | 2011-10-24 → 2011-10-25 (+1d) | 2011-10-28 → 2011-10-31 (+3d) |  |  |  |  |  |
| 121 | **QA for upgraded non-core applications (not listed in tech stacks)** | 2011-10-24 → 2011-10-25 (+1d) | 2011-10-26 → 2011-10-27 (+1d) |  |  |  |  |  |
| 122 | CGMM | 2011-10-24 → 2011-10-25 (+1d) | 2011-10-26 → 2011-10-27 (+1d) |  |  |  |  |  |
| 123 | Release activities for non-core applications | 2011-10-31 → 2011-11-01 (+1d) | 2011-11-08 → 2011-11-09 (+1d) |  |  |  |  |  |
| 129 | **Ivy/Maven migration** | 2011-09-26 → 2011-10-04 A (+8d) | 2011-10-25 → 2011-10-26 (+1d) | 22d? → 16d? | 0% → 22% |  |  |  |
| 135 | additional modifications to pending releases (?) | 2011-10-24 → 2011-10-04 (-20d) | 2011-10-24 → 2011-10-04 (-20d) |  |  | 120d → 135d | SDK 4.5 → none | was named modifications to pending releases (?); constraint start no earlier than 2011-09-27 → start no earlier than 2011-10-04 |
| 136 | patch scripts for earlier releases (?) | 2011-10-25 → 2011-10-04 (-21d) | 2011-10-25 → 2011-10-04 (-21d) |  |  | 120d → 135d | 135 → none | was named patch scripts for earlier releases; constraint start no earlier than 2011-09-27 → start no earlier than 2011-10-04 |
| 139 | **REST API analysis and implementation** | 2011-09-27 → 2011-09-21 A (-6d) | 2011-09-30 → 2011-11-09 (+40d) | 4d? → 35d? | 0% → 32% | 137d → 110d |  | was named REST API implementation |
| 140 | REST support - servlet vs JAXrs document |  |  |  |  |  | 72 → none |  |
| 141 | REST support - servlet vs JAXrs document - review and updates | 2011-09-27 A | 2011-09-27 A |  | 0% → 100% | 130d → none |  |  |
| 146 | REST support for non-SDK applications - research | 2011-09-28 → 2011-09-21 (-7d) | 2011-10-11 → 2011-10-04 (-7d) | 10d → 10d? |  | 130d → 135d | 70, 141 → none | constraint start no earlier than 2011-08-29 → start no earlier than 2011-09-21 |
| 149 | **UPT Improvement Plan** |  | 2011-10-28 → 2011-11-04 (+7d) | 161.25d? → 166d? | 74% → 70% | 7.75d → 3d |  |  |
| 154 | **Research on use of systems-hosted older versions [incomplete]** |  | 2011-10-10 → 2011-08-22 A (-49d) | 84d? → 50d? | 82% → 100% | 7.75d → none |  | was named Research on use of systems-hosted older versions |
| 159 | Determine why subsequent queries returned no results and re-submit [incomplete] |  | 2011-10-03 → 2011-08-22 A (-42d) | 6d → 5d | 83% → 100% | 7.75d → none |  | was named Determine why subsequent queries returned no results and re-submit |
| 161 | Revised task sheet (TRB presentation prep) |  | 2011-10-11 → 2011-10-14 (+3d) | 0.25d → 4d |  | 7.75d → 3d |  | was named Follow up review of proposed features; constraint start no earlier than 2011-06-01 → start no earlier than 2011-10-11; resources none → Greg [20%] |
| 162 | Draft project plan | 2011-10-11 → 2011-10-17 (+6d) | 2011-10-13 → 2011-10-21 (+8d) | 2d → 5d |  | 7.75d → 3d |  | was named Draft project plan (complete); resources Greg [25%] → Greg [20%] |
| 163 | Review plan with user representatives and amend | 2011-10-13 → 2011-10-24 (+11d) | 2011-10-27 → 2011-11-04 (+8d) |  |  | 7.75d → 2d |  |  |
| 166 | **UPT enhancements [changes expected]** | 2011-11-09 → 2011-11-10 (+1d) | 2012-04-10 → 2012-04-11 (+1d) |  |  |  |  |  |
| 167 | GF 30436 Better LDAP integration when adding users to UPT | 2011-11-09 → 2011-11-10 (+1d) | 2011-11-15 → 2011-11-16 (+1d) |  |  |  |  |  |
| 168 | GF 22524 Authentication - DataSource LoginModule | 2011-11-16 → 2011-11-17 (+1d) | 2011-11-18 → 2011-11-21 (+3d) |  |  |  |  |  |
| 169 | GF 1158/2830 Implement paging for UPT | 2011-11-21 → 2011-11-22 (+1d) | 2011-12-02 → 2011-12-05 (+3d) |  |  |  |  |  |
| 170 | GF 22540/29002/30435 Password changes | 2011-12-05 → 2011-12-06 (+1d) | 2011-12-16 → 2011-12-19 (+3d) |  |  |  |  |  |
| 171 | GF 15527 CSM username field length should be increased to 100 characters | 2011-12-19 → 2011-12-20 (+1d) | 2011-12-19 → 2011-12-20 (+1d) |  |  |  |  |  |
| 172 | GF 19369 Indicate UPT /CSM version names in the Application Header after login | 2011-12-20 → 2011-12-21 (+1d) | 2011-12-21 → 2011-12-22 (+1d) |  |  |  |  |  |
| 173 | GF 631/22236 Password recovery | 2011-12-22 → 2011-12-23 (+1d) | 2011-12-28 → 2011-12-29 (+1d) |  |  |  |  |  |
| 174 | GF 30019 User lockout on unsuccessful logins | 2011-12-29 → 2011-12-30 (+1d) | 2012-01-04 → 2012-01-05 (+1d) |  |  |  |  |  |
| 175 | GF 2913 Add an Active Flag for users | 2012-01-05 → 2012-01-06 (+1d) | 2012-01-11 → 2012-01-12 (+1d) |  |  |  |  |  |
| 176 | GF 24404 UPT GUI installer should validate database connection info | 2012-01-12 → 2012-01-13 (+1d) | 2012-01-16 → 2012-01-17 (+1d) |  |  |  |  |  |
| 177 | GF 30372 Change UPT install.properties file to note properties that must be replaced | 2012-01-17 → 2012-01-18 (+1d) | 2012-01-17 → 2012-01-18 (+1d) |  |  |  |  |  |
| 178 | GF 1154/30433 Synchronization between UPT and supported application | 2012-01-18 → 2012-01-19 (+1d) | 2012-02-07 → 2012-02-08 (+1d) |  |  |  |  |  |
| 179 | GF 24965 Documentation changes from CDL installation | 2012-02-08 → 2012-02-09 (+1d) | 2012-02-08 → 2012-02-09 (+1d) |  |  |  |  |  |
| 180 | GF 24116 Need stronger access control | 2012-02-09 → 2012-02-10 (+1d) | 2012-02-22 → 2012-02-23 (+1d) |  |  |  |  |  |
| 181 | GF 2914 Auto-email new user or associated user | 2012-02-23 → 2012-02-24 (+1d) | 2012-02-28 → 2012-02-29 (+1d) |  |  |  |  |  |
| 182 | User friendly UPT UI | 2012-02-29 → 2012-03-01 (+1d) | 2012-03-20 → 2012-03-21 (+1d) |  |  |  |  |  |
| 183 | Customizable UPT UI | 2012-03-21 → 2012-03-22 (+1d) | 2012-04-10 → 2012-04-11 (+1d) |  |  |  |  |  |
| 186 | **XMI Handler** |  | 2011-10-19 → 2011-09-01 (-48d) | 45d? → 12d? | 14% → 17% | 124d → 157d |  |  |
| 187 | Test use of new XMI Handler modeling features with SIW and document results [stopped] |  | 2011-10-05 → 2011-08-18 A (-48d) | 4d → 2d | 50% → 100% | 124d → none |  | was named Test use of new XMI Handler modeling features with SIW and document results |
| 188 | Coordinate official 1.1 release | 2011-10-06 → 2011-08-19 (-48d) | 2011-10-12 → 2011-08-25 (-48d) |  |  | 124d → 157d |  |  |
| 189 | Coordinate 1.2 release (tech stack upgrade)? | 2011-10-13 → 2011-08-26 (-48d) | 2011-10-19 → 2011-09-01 (-48d) |  |  | 124d → 157d |  |  |
| 192 | **Analysis** |  | 2011-11-11 → 2011-10-31 (-11d) | 166d → 156d? | 69% → 74% | 107d → 117d |  |  |
| 207 | IVY repository use and transition to Maven - investigation | 2011-09-15 A | 2011-09-20 A |  | 0% → 100% | 145d → none |  |  |
| 208 | Ideal architecture for separation of SDK and caGrid | 2011-11-09 → 2011-07-18 (-114d) | 2011-11-11 → 2011-07-20 (-114d) |  |  | 106d → 188d | 123 → none | resources Prasad [50%] → none |
| 223 | **General support to date (only large tasks called out)** |  | 2011-11-14 → 2011-10-14 (-31d) | 215d? → 193d? | 89% → 90% | 106d → 128d |  |  |
| 224 | **older completed tasks** |  | 2011-07-29 A → 2011-09-02 A (+35d) | 92d → 117d |  |  |  |  |
| 248 | General support 9/26-9/30 | 2011-09-26 A | 2011-09-30 A |  | 0% → 100% | 137d → none |  |  |
| 251 | caArray/UPT DB investigation (?) |  |  |  |  |  |  | was named caArray/UPT investigation (?) |
| 252 | Document migration activities/issues moving from SDK 4.0 to 4.4 (using caDSR as an example) | 2011-11-14 → 2011-07-05 (-132d) | 2011-11-14 → 2011-07-05 (-132d) |  |  | 106d → 199d | 208 → none | resources Prasad → none |
| 257 | **Project Management to date (only large tasks called out)** |  | 2011-09-30 → 2011-10-17 (+17d) | 142d → 152d | 96% → 90% | 137d → 127d |  |  |
| 276 | General PM 9/26-9/30 |  |  |  |  |  |  | resources Greg [20%] → Greg [30%] |

## Version 14 (saved 2011-10-18)

Note of the change: SVN-Revision: 1681

Last finish 2012-04-11 → 2012-04-12 (+1d). Complete tasks 156 → 167.

Added:

| ID | Task | Duration | Start | Finish | Predecessors | Constraint | Resources |
| --- | --- | --- | --- | --- | --- | --- | --- |
| 135 | Repository and BDA - Workbench | 1d | 2011-10-19 | 2011-10-19 | 134 | start no earlier than 2011-10-18 |  |
| 211 | 508 compliance review process | 4d | 2011-10-11 A | 2011-10-14 A |  | start no earlier than 2011-10-11 | Greg [10%] |
| 253 | SOAP UI utility for CTRP QA | 1d | 2011-10-17 A | 2011-10-17 A |  | start no earlier than 2011-10-17 | Prasad |
| 254 | General support 10/17-10/21 | 5d | 2011-10-17 | 2011-10-21 |  | start no earlier than 2011-10-17 | Greg [10%] |
| 283 | General PM 10/17-10/21 | 5d | 2011-10-17 | 2011-10-21 |  | start no earlier than 2011-10-17 | Greg [20%] |

Changed:

| ID | Task | Start | Finish | Duration | Complete | Total float | Predecessors | Other |
| --- | --- | --- | --- | --- | --- | --- | --- | --- |
| 129 | **Ivy/Maven migration** |  | 2011-10-26 → 2011-10-19 (-7d) | 16d? → 11d? | 22% → 67% | 120d → 125d |  |  |
| 131 | Repository migration - CSM 4.2.4 | 2011-10-11 A | 2011-10-14 → 2011-10-11 A (-3d) | 4d → 1d | 0% → 100% | 110d → none |  |  |
| 132 | Repository and BDA - CSM 4.2.3 | 2011-10-25 → 2011-10-12 A (-13d) | 2011-10-26 → 2011-10-12 A (-14d) | 2d → 1d | 0% → 100% | 110d → none | 131, 134 → 130, 131 | was named Repository and BDA - CSM 4.2.3 (?) |
| 133 | Repository and BDA - SDK 4.4.1 & 4.5 | 2011-10-17 → 2011-10-13 A (-4d) | 2011-10-20 → 2011-10-14 A (-6d) | 4d? → 2d | 0% → 100% | 110d → none | 131 → 132 | was named Repository and BDA - SDK 4.4.1 |
| 134 | Repository and BDA - CLM/LLT | 2011-10-21 → 2011-10-18 (-3d) | 2011-10-24 → 2011-10-18 (-6d) | 2d → 1d |  | 110d → 125d |  | was named Repository and BDA - SDK 4.5; constraint start no earlier than 2011-10-11 → start no earlier than 2011-10-18 |
| 140 | **REST API analysis and implementation** |  | 2011-11-09 → 2011-11-02 (-7d) | 35d? → 30d? | 32% → 46% | 110d → 115d |  |  |
| 143 | Requirements discussions | 2011-09-26 A | 2011-09-30 A |  | 0% → 100% | 137d → none |  |  |
| 146 | "real" REST (GET only) | 2011-10-27 → 2011-10-20 (-7d) | 2011-11-09 → 2011-11-02 (-7d) |  |  | 109d → 115d | 145, 132 → 143, 135 | resources none → Prasad |
| 150 | **UPT Improvement Plan** |  | 2011-11-04 → 2011-11-10 (+6d) | 166d? → 170d? | 70% → 76% | 3d → 0d |  |  |
| 161 | Initial task sheet (TRB presentation prep) | 2011-10-03 A | 2011-10-07 A |  | 0% → 100% | 22d → none |  |  |
| 162 | Revised task sheet (TRB presentation prep) | 2011-10-11 → 2011-10-17 (+6d) | 2011-10-14 → 2011-10-20 (+6d) |  |  | 3d → 0d |  | constraint start no earlier than 2011-10-11 → start no earlier than 2011-10-17 |
| 163 | Draft project plan | 2011-10-17 → 2011-10-21 (+4d) | 2011-10-21 → 2011-10-27 (+6d) |  |  | 3d → 0d |  |  |
| 164 | Review plan with user representatives and amend | 2011-10-24 → 2011-10-28 (+4d) | 2011-11-04 → 2011-11-10 (+6d) |  |  | 2d → 0d |  |  |
| 167 | **UPT enhancements [changes expected]** | 2011-11-10 → 2011-11-11 (+1d) | 2012-04-11 → 2012-04-12 (+1d) |  |  |  |  |  |
| 168 | GF 30436 Better LDAP integration when adding users to UPT | 2011-11-10 → 2011-11-11 (+1d) | 2011-11-16 → 2011-11-17 (+1d) |  |  |  |  |  |
| 169 | GF 22524 Authentication - DataSource LoginModule | 2011-11-17 → 2011-11-18 (+1d) | 2011-11-21 → 2011-11-22 (+1d) |  |  |  |  |  |
| 170 | GF 1158/2830 Implement paging for UPT | 2011-11-22 → 2011-11-23 (+1d) | 2011-12-05 → 2011-12-06 (+1d) |  |  |  |  |  |
| 171 | GF 22540/29002/30435 Password changes | 2011-12-06 → 2011-12-07 (+1d) | 2011-12-19 → 2011-12-20 (+1d) |  |  |  |  |  |
| 172 | GF 15527 CSM username field length should be increased to 100 characters | 2011-12-20 → 2011-12-21 (+1d) | 2011-12-20 → 2011-12-21 (+1d) |  |  |  |  |  |
| 173 | GF 19369 Indicate UPT /CSM version names in the Application Header after login | 2011-12-21 → 2011-12-22 (+1d) | 2011-12-22 → 2011-12-23 (+1d) |  |  |  |  |  |
| 174 | GF 631/22236 Password recovery | 2011-12-23 → 2011-12-26 (+3d) | 2011-12-29 → 2011-12-30 (+1d) |  |  |  |  |  |
| 175 | GF 30019 User lockout on unsuccessful logins | 2011-12-30 → 2012-01-02 (+3d) | 2012-01-05 → 2012-01-06 (+1d) |  |  |  |  |  |
| 176 | GF 2913 Add an Active Flag for users | 2012-01-06 → 2012-01-09 (+3d) | 2012-01-12 → 2012-01-13 (+1d) |  |  |  |  |  |
| 177 | GF 24404 UPT GUI installer should validate database connection info | 2012-01-13 → 2012-01-16 (+3d) | 2012-01-17 → 2012-01-18 (+1d) |  |  |  |  |  |
| 178 | GF 30372 Change UPT install.properties file to note properties that must be replaced | 2012-01-18 → 2012-01-19 (+1d) | 2012-01-18 → 2012-01-19 (+1d) |  |  |  |  |  |
| 179 | GF 1154/30433 Synchronization between UPT and supported application | 2012-01-19 → 2012-01-20 (+1d) | 2012-02-08 → 2012-02-09 (+1d) |  |  |  |  |  |
| 180 | GF 24965 Documentation changes from CDL installation | 2012-02-09 → 2012-02-10 (+1d) | 2012-02-09 → 2012-02-10 (+1d) |  |  |  |  |  |
| 181 | GF 24116 Need stronger access control | 2012-02-10 → 2012-02-13 (+3d) | 2012-02-23 → 2012-02-24 (+1d) |  |  |  |  |  |
| 182 | GF 2914 Auto-email new user or associated user | 2012-02-24 → 2012-02-27 (+3d) | 2012-02-29 → 2012-03-01 (+1d) |  |  |  |  |  |
| 183 | User friendly UPT UI | 2012-03-01 → 2012-03-02 (+1d) | 2012-03-21 → 2012-03-22 (+1d) |  |  |  |  |  |
| 184 | Customizable UPT UI | 2012-03-22 → 2012-03-23 (+1d) | 2012-04-11 → 2012-04-12 (+1d) |  |  |  |  |  |
| 193 | **Analysis** |  | 2011-10-31 → 2011-11-04 (+4d) | 156d? → 160d? | 74% → 75% | 117d → 114d |  |  |
| 210 | 508 compliance reviews |  | 2011-10-31 → 2011-11-04 (+4d) |  |  | 117d → 113d |  |  |
| 225 | **General support to date (only large tasks called out)** |  | 2011-10-14 → 2011-10-21 (+7d) | 193d? → 198d? |  | 128d → 124d |  |  |
| 252 | General support 10/11-10/14 | 2011-10-11 A | 2011-10-14 A |  | 0% → 100% | 128d → none |  | resources Greg [10%] → Dan [25%]; Greg [20%] |
| 261 | **Project Management to date (only large tasks called out)** |  | 2011-10-17 → 2011-10-21 (+4d) | 152d → 156d | 90% → 97% | 127d → 124d |  |  |
| 262 | **older completed tasks** |  | 2011-07-29 A → 2011-09-02 A (+35d) | 98d → 123d |  |  |  |  |
| 280 | General PM 9/26-9/30 | 2011-09-26 A | 2011-09-30 A |  | 0% → 100% | 137d → none |  |  |
| 281 | General PM 10/3-10/7 | 2011-10-03 A | 2011-10-07 A |  | 0% → 100% | 132d → none |  |  |
| 282 | General PM 10/11-10/14 | 2011-10-11 A | 2011-10-17 A |  | 0% → 100% | 127d → none |  |  |

## Version 15 (saved 2011-10-25)

Note of the change: SVN-Revision: 1692

Last finish 2012-04-12 → 2012-04-20 (+8d). Complete tasks 167 → 173.

Added:

| ID | Task | Duration | Start | Finish | Predecessors | Constraint | Resources |
| --- | --- | --- | --- | --- | --- | --- | --- |
| 135 | Repository and BDA - Workbench 4.5 (for future release) | 1d | 2011-10-21 A | 2011-10-21 A |  | start no earlier than 2011-10-21 | Prasad |
| 139 | Repository and BDA - ISO 21090 library | 1d? | 2011-10-24 | 2011-10-24 |  | start no earlier than 2011-10-24 |  |
| 164 | Revised task sheet (TRB presentation prep) | 1d | 2011-10-20 A | 2011-10-20 A |  | start no earlier than 2011-10-20 | Prasad |
| 166 | TRB approval | 0d | 2011-10-31 | 2011-10-31 | 165 | start no earlier than 2011-10-31 |  |
| 216 | Requirements documents - derived from user docs, existing reqs docs, and test cases (?) | 25d? | 2011-10-24 | 2011-11-25 |  | start no earlier than 2011-10-24 | Greg [20%] |
| 260 | General support 10/24-10/28 | 5d | 2011-10-24 | 2011-10-28 |  | start no earlier than 2011-10-24 | Greg [10%] |
| 290 | General PM 10/24-10/28 | 5d | 2011-10-24 | 2011-10-28 |  | start no earlier than 2011-10-24 | Greg [20%] |

Changed:

| ID | Task | Start | Finish | Duration | Complete | Total float | Predecessors | Other |
| --- | --- | --- | --- | --- | --- | --- | --- | --- |
| 129 | **Ivy/Maven migration** |  | 2011-10-19 → 2011-10-24 (+5d) | 11d? → 14d? | 67% → 77% | 125d → 129d |  |  |
| 134 | Repository and BDA - Workbench 4.4.1 | 2011-10-19 → 2011-10-18 A (-1d) | 2011-10-19 A | 1d → 2d | 0% → 100% | 125d → none | 136 → 133 | was named Repository and BDA - Workbench; resources none → Prasad |
| 136 | Repository and BDA - CLM/LLT | 2011-10-18 → 2011-10-24 A (+6d) | 2011-10-18 → 2011-10-24 (+6d) |  | 0% → 50% | 125d → 113d | 133 → none | constraint start no earlier than 2011-10-18 → start no earlier than 2011-10-24 |
| 142 | **REST API analysis and implementation** |  | 2011-11-02 → 2011-11-07 (+5d) | 30d? → 33d? |  | 115d → 113d |  |  |
| 148 | "real" REST (GET only) | 2011-10-20 → 2011-10-25 (+5d) | 2011-11-02 → 2011-11-07 (+5d) |  |  | 115d → 113d | 145, 134 → 145, 136, 134 |  |
| 152 | **UPT Improvement Plan** |  | 2011-11-10 → 2011-11-18 (+8d) | 170d? → 176d? | 76% → 81% |  |  |  |
| 165 | Revised task sheet (TRB presentation prep) | 2011-10-17 A | 2011-10-20 A |  | 0% → 100% | 0d → none |  |  |
| 167 | Draft project plan | 2011-10-21 → 2011-10-31 (+10d) | 2011-10-27 → 2011-11-04 (+8d) |  |  |  | 165 → 166 |  |
| 168 | Review plan with user representatives and amend | 2011-10-28 → 2011-11-07 (+10d) | 2011-11-10 → 2011-11-18 (+8d) |  |  |  |  |  |
| 171 | **UPT enhancements [changes expected]** | 2011-11-11 → 2011-11-21 (+10d) | 2012-04-12 → 2012-04-20 (+8d) |  |  |  |  |  |
| 172 | GF 30436 Better LDAP integration when adding users to UPT | 2011-11-11 → 2011-11-21 (+10d) | 2011-11-17 → 2011-11-25 (+8d) |  |  |  |  |  |
| 173 | GF 22524 Authentication - DataSource LoginModule | 2011-11-18 → 2011-11-28 (+10d) | 2011-11-22 → 2011-11-30 (+8d) |  |  |  |  |  |
| 174 | GF 1158/2830 Implement paging for UPT | 2011-11-23 → 2011-12-01 (+8d) | 2011-12-06 → 2011-12-14 (+8d) |  |  |  |  |  |
| 175 | GF 22540/29002/30435 Password changes | 2011-12-07 → 2011-12-15 (+8d) | 2011-12-20 → 2011-12-28 (+8d) |  |  |  |  |  |
| 176 | GF 15527 CSM username field length should be increased to 100 characters | 2011-12-21 → 2011-12-29 (+8d) | 2011-12-21 → 2011-12-29 (+8d) |  |  |  |  |  |
| 177 | GF 19369 Indicate UPT /CSM version names in the Application Header after login | 2011-12-22 → 2011-12-30 (+8d) | 2011-12-23 → 2012-01-02 (+10d) |  |  |  |  |  |
| 178 | GF 631/22236 Password recovery | 2011-12-26 → 2012-01-03 (+8d) | 2011-12-30 → 2012-01-09 (+10d) |  |  |  |  |  |
| 179 | GF 30019 User lockout on unsuccessful logins | 2012-01-02 → 2012-01-10 (+8d) | 2012-01-06 → 2012-01-16 (+10d) |  |  |  |  |  |
| 180 | GF 2913 Add an Active Flag for users | 2012-01-09 → 2012-01-17 (+8d) | 2012-01-13 → 2012-01-23 (+10d) |  |  |  |  |  |
| 181 | GF 24404 UPT GUI installer should validate database connection info | 2012-01-16 → 2012-01-24 (+8d) | 2012-01-18 → 2012-01-26 (+8d) |  |  |  |  |  |
| 182 | GF 30372 Change UPT install.properties file to note properties that must be replaced | 2012-01-19 → 2012-01-27 (+8d) | 2012-01-19 → 2012-01-27 (+8d) |  |  |  |  |  |
| 183 | GF 1154/30433 Synchronization between UPT and supported application | 2012-01-20 → 2012-01-30 (+10d) | 2012-02-09 → 2012-02-17 (+8d) |  |  |  |  |  |
| 184 | GF 24965 Documentation changes from CDL installation | 2012-02-10 → 2012-02-20 (+10d) | 2012-02-10 → 2012-02-20 (+10d) |  |  |  |  |  |
| 185 | GF 24116 Need stronger access control | 2012-02-13 → 2012-02-21 (+8d) | 2012-02-24 → 2012-03-05 (+10d) |  |  |  |  |  |
| 186 | GF 2914 Auto-email new user or associated user | 2012-02-27 → 2012-03-06 (+8d) | 2012-03-01 → 2012-03-09 (+8d) |  |  |  |  |  |
| 187 | User friendly UPT UI | 2012-03-02 → 2012-03-12 (+10d) | 2012-03-22 → 2012-03-30 (+8d) |  |  |  |  |  |
| 188 | Customizable UPT UI | 2012-03-23 → 2012-04-02 (+10d) | 2012-04-12 → 2012-04-20 (+8d) |  |  |  |  |  |
| 197 | **Analysis** |  | 2011-11-04 → 2011-11-25 (+21d) | 160d? → 175d? | 75% → 61% | 114d → 105d |  |  |
| 214 | 508 compliance reviews |  |  |  | 40% → 60% | 113d → 120d |  |  |
| 230 | **General support to date (only large tasks called out)** |  | 2011-10-21 → 2011-10-28 (+7d) | 198d? → 203d? |  | 124d → 125d |  |  |
| 231 | **older completed tasks** |  | 2011-09-02 A → 2011-09-30 A (+28d) | 117d → 136d |  |  |  |  |
| 259 | General support 10/17-10/21 | 2011-10-17 A | 2011-10-21 A |  | 0% → 100% | 124d → none |  |  |
| 267 | **Project Management to date (only large tasks called out)** |  | 2011-10-21 → 2011-10-28 (+7d) | 156d → 161d |  | 124d → 125d |  |  |
| 268 | **older completed tasks** |  | 2011-09-02 A → 2011-09-30 A (+28d) | 123d → 142d |  |  |  |  |
| 289 | General PM 10/17-10/21 | 2011-10-17 A | 2011-10-21 A |  | 0% → 100% | 124d → none |  |  |

## Version 16 (saved 2011-11-02)

Note of the change: SVN-Revision: 1693

Last finish stays 2012-04-20. Complete tasks 173 → 177.

Added:

| ID | Task | Duration | Start | Finish | Predecessors | Constraint | Resources |
| --- | --- | --- | --- | --- | --- | --- | --- |
| 165 | High level project plan | 5d | 2011-10-24 A | 2011-10-28 A | 164 | start no earlier than 2011-10-24 | Greg [10%] |
| 217 | Feasibility analysis of providing semantic information (metadata) with data | 5d? | 2011-11-15 | 2011-11-21 | 265 | start no earlier than 2011-11-01 |  |
| 218 | Feasibility analysis of providing an RDF interface | 5d? | 2011-11-22 | 2011-11-28 | 217 | start no earlier than 2011-11-01 |  |
| 219 | Feasibility analysis of providing security with SPARQL queries | 5d? | 2011-11-29 | 2011-12-05 | 218 | start no earlier than 2011-11-01 |  |
| 264 | General support 10/31-11/4 | 5d | 2011-10-31 | 2011-11-04 |  | start no earlier than 2011-10-31 | Greg [10%] |
| 265 | Patch scripts for repository migrations for released SDK versions | 5d? | 2011-11-08 | 2011-11-14 | 147 | start no earlier than 2011-11-01 | Prasad |
| 296 | General PM 10/31-11/4 | 5d | 2011-10-31 | 2011-11-04 |  | start no earlier than 2011-10-31 | Greg [20%] |

Removed: 138 patch scripts for earlier releases (?)

Changed:

| ID | Task | Start | Finish | Duration | Complete | Total float | Predecessors | Other |
| --- | --- | --- | --- | --- | --- | --- | --- | --- |
| 129 | **Ivy/Maven migration and BDA removal** |  |  |  | 77% → 86% |  |  | was named Ivy/Maven migration |
| 136 | Repository and BDA - CLM/LLT |  | 2011-10-24 A |  | 50% → 100% | 113d → none |  |  |
| 141 | **REST API analysis and implementation** |  |  |  | 46% → 59% | 113d → 119d |  |  |
| 147 | "real" REST implementation in SDK 4.5 | 2011-10-25 A |  |  | 0% → 50% | 113d → 99d | 144, 136, 134 → 144, 136 | was named "real" REST (GET only) |
| 151 | **UPT Improvement Plan** |  |  |  | 81% → 82% |  |  |  |
| 166 | TRB approval |  |  | 0d → 0d? |  |  | 164 → 165 |  |
| 197 | **Analysis** |  | 2011-11-25 → 2011-12-05 (+10d) | 175d? → 181d? | 61% → 55% | 105d → 99d |  |  |
| 214 | 508 compliance reviews |  | 2011-11-04 → 2011-11-11 (+7d) | 25d? → 30d? | 60% → 67% | 120d → 115d |  |  |
| 216 | Requirements documents - derived from user docs, existing reqs docs, and test cases (?) |  |  |  |  |  |  | resources Greg [20%] → none |
| 233 | **General support to date (only large tasks called out)** |  | 2011-10-28 → 2011-11-14 (+17d) | 203d? → 214d? | 90% → 88% | 125d → 114d |  |  |
| 263 | General support 10/24-10/28 | 2011-10-24 A | 2011-10-28 A |  | 0% → 100% | 125d → none |  |  |
| 272 | **Project Management to date (only large tasks called out)** |  | 2011-10-28 → 2011-11-04 (+7d) | 161d → 166d |  | 125d → 120d |  |  |
| 293 | General PM 10/11-10/14 |  | 2011-10-17 A → 2011-10-14 A (-3d) | 5d → 4d |  |  |  |  |
| 295 | General PM 10/24-10/28 | 2011-10-24 A | 2011-10-28 A |  | 0% → 100% | 125d → none |  | resources Greg [20%] → Greg [30%] |

## Version 17 (saved 2011-11-08)

Note of the change: SVN-Revision: 1700

Last finish 2012-04-20 → 2012-05-07 (+17d). Complete tasks 177 → 182.

Added:

| ID | Task | Duration | Start | Finish | Predecessors | Constraint | Resources |
| --- | --- | --- | --- | --- | --- | --- | --- |
| 148 | JAXB stream bug investigation (affects REST implementation) | 5d | 2011-10-31 A | 2011-11-04 A |  | start no earlier than 2011-10-31 | Dan [25%] |
| 151 | **Section 508 compliance** | 10d? | 2011-11-07 | 2011-11-18 |  |  |  |
| 152 | Analysis and report [need detailed tasks] | 10d? | 2011-11-07 | 2011-11-18 |  | start no earlier than 2011-11-07 | Dan [25%] |
| 153 | Apply proposed compliance changes to CSM/UPT 4.2.3 and 4.2.4 | 1d? | 2011-11-07 | 2011-11-07 |  | start no earlier than 2011-11-07 |  |
| 171 | Updated plan (work w/ QA on estimates, possible Jan release) | 6d? | 2011-11-03 A | 2011-11-10 | 170 | start no earlier than 2011-11-03 | Greg [10%] |
| 222 | Technology stack guidance on vendor/tech neutrality - analysis and outline | 3d | 2011-11-01 | 2011-11-03 |  | start no earlier than 2011-11-01 | Prasad; Greg [25%] |
| 223 | Technology stack guidance on vendor/tech neutrality - document | 3d | 2011-11-04 | 2011-11-08 | 222 |  | Prasad |
| 273 | General support 11/7-11/11 | 5d | 2011-11-07 | 2011-11-11 |  | must start on 2011-11-07 | Greg [10%] |
| 306 | General PM 11/7-11/11 | 5d | 2011-11-07 | 2011-11-11 |  | start no earlier than 2011-11-07 | Greg [20%] |

Removed: 300 508 compliance review and plan

Changed:

| ID | Task | Start | Finish | Duration | Complete | Total float | Predecessors | Other |
| --- | --- | --- | --- | --- | --- | --- | --- | --- |
| 84 | CSM 4.2.4 - smoketest alternate distribution packages [dropped] | 2011-09-27 A | 2011-09-27 A |  | 0% → 100% | 31d → none |  |  |
| 141 | **REST API analysis and implementation** |  | 2011-11-07 → 2011-11-15 (+8d) | 33d? → 39d? | 59% → 64% | 119d → 124d |  |  |
| 147 | "real" REST implementation in SDK 4.5 |  | 2011-11-07 → 2011-11-15 (+8d) |  |  | 99d → 104d |  |  |
| 156 | **UPT Improvement Plan** |  | 2011-11-18 → 2011-12-05 (+17d) | 176d? → 187d? | 82% → 72% |  |  |  |
| 172 | TRB approval | 2011-10-31 → 2011-11-01 (+1d) | 2011-10-31 → 2011-11-14 (+14d) | 0d? → 10d? |  |  | 170 → 171FF+2d, 170 |  |
| 173 | Draft project plan [old task, may remove] | 2011-10-31 → 2011-11-15 (+15d) | 2011-11-04 → 2011-11-21 (+17d) |  |  |  |  | was named Draft project plan |
| 174 | Review plan with user representatives and amend [still relevant?] | 2011-11-07 → 2011-11-22 (+15d) | 2011-11-18 → 2011-12-05 (+17d) |  |  |  |  | was named Review plan with user representatives and amend |
| 177 | **UPT enhancements [changes expected]** | 2011-11-21 → 2011-12-06 (+15d) | 2012-04-20 → 2012-05-07 (+17d) |  |  |  |  |  |
| 178 | GF 30436 Better LDAP integration when adding users to UPT | 2011-11-21 → 2011-12-06 (+15d) | 2011-11-25 → 2011-12-12 (+17d) |  |  |  |  |  |
| 179 | GF 22524 Authentication - DataSource LoginModule | 2011-11-28 → 2011-12-13 (+15d) | 2011-11-30 → 2011-12-15 (+15d) |  |  |  |  |  |
| 180 | GF 1158/2830 Implement paging for UPT | 2011-12-01 → 2011-12-16 (+15d) | 2011-12-14 → 2011-12-29 (+15d) |  |  |  |  |  |
| 181 | GF 22540/29002/30435 Password changes | 2011-12-15 → 2011-12-30 (+15d) | 2011-12-28 → 2012-01-12 (+15d) |  |  |  |  |  |
| 182 | GF 15527 CSM username field length should be increased to 100 characters | 2011-12-29 → 2012-01-13 (+15d) | 2011-12-29 → 2012-01-13 (+15d) |  |  |  |  |  |
| 183 | GF 19369 Indicate UPT /CSM version names in the Application Header after login | 2011-12-30 → 2012-01-16 (+17d) | 2012-01-02 → 2012-01-17 (+15d) |  |  |  |  |  |
| 184 | GF 631/22236 Password recovery | 2012-01-03 → 2012-01-18 (+15d) | 2012-01-09 → 2012-01-24 (+15d) |  |  |  |  |  |
| 185 | GF 30019 User lockout on unsuccessful logins | 2012-01-10 → 2012-01-25 (+15d) | 2012-01-16 → 2012-01-31 (+15d) |  |  |  |  |  |
| 186 | GF 2913 Add an Active Flag for users | 2012-01-17 → 2012-02-01 (+15d) | 2012-01-23 → 2012-02-07 (+15d) |  |  |  |  |  |
| 187 | GF 24404 UPT GUI installer should validate database connection info | 2012-01-24 → 2012-02-08 (+15d) | 2012-01-26 → 2012-02-10 (+15d) |  |  |  |  |  |
| 188 | GF 30372 Change UPT install.properties file to note properties that must be replaced | 2012-01-27 → 2012-02-13 (+17d) | 2012-01-27 → 2012-02-13 (+17d) |  |  |  |  |  |
| 189 | GF 1154/30433 Synchronization between UPT and supported application | 2012-01-30 → 2012-02-14 (+15d) | 2012-02-17 → 2012-03-05 (+17d) |  |  |  |  |  |
| 190 | GF 24965 Documentation changes from CDL installation | 2012-02-20 → 2012-03-06 (+15d) | 2012-02-20 → 2012-03-06 (+15d) |  |  |  |  |  |
| 191 | GF 24116 Need stronger access control | 2012-02-21 → 2012-03-07 (+15d) | 2012-03-05 → 2012-03-20 (+15d) |  |  |  |  |  |
| 192 | GF 2914 Auto-email new user or associated user | 2012-03-06 → 2012-03-21 (+15d) | 2012-03-09 → 2012-03-26 (+17d) |  |  |  |  |  |
| 193 | User friendly UPT UI | 2012-03-12 → 2012-03-27 (+15d) | 2012-03-30 → 2012-04-16 (+17d) |  |  |  |  |  |
| 194 | Customizable UPT UI | 2012-04-02 → 2012-04-17 (+15d) | 2012-04-20 → 2012-05-07 (+17d) |  |  |  |  |  |
| 203 | **Analysis** |  | 2011-12-05 → 2011-12-13 (+8d) | 181d? → 187d? | 55% → 57% | 99d → 104d |  |  |
| 220 | 508 compliance reviews [incomplete - moved to new section] |  | 2011-11-11 → 2011-10-28 A (-14d) | 30d? → 20d? | 67% → 100% | 115d → none |  | was named 508 compliance reviews |
| 225 | Feasibility analysis of providing semantic information (metadata) with data | 2011-11-15 → 2011-11-23 (+8d) | 2011-11-21 → 2011-11-29 (+8d) |  |  | 99d → 112d |  |  |
| 226 | Feasibility analysis of providing an RDF interface | 2011-11-22 → 2011-11-30 (+8d) | 2011-11-28 → 2011-12-06 (+8d) |  |  | 99d → 112d |  |  |
| 227 | Feasibility analysis of providing security with SPARQL queries | 2011-11-29 → 2011-12-07 (+8d) | 2011-12-05 → 2011-12-13 (+8d) |  |  | 99d → 112d |  |  |
| 241 | **General support to date (only large tasks called out)** |  | 2011-11-14 → 2011-11-22 (+8d) | 214d? → 220d? |  | 114d → 119d |  |  |
| 272 | General support 10/31-11/4 | 2011-10-31 A | 2011-11-04 A |  | 0% → 100% | 120d → none |  | resources Greg [10%] → none |
| 274 | Patch scripts for repository migrations for released SDK versions | 2011-11-08 → 2011-11-16 (+8d) | 2011-11-14 → 2011-11-22 (+8d) |  |  | 99d → 104d |  |  |
| 281 | **Project Management to date (only large tasks called out)** |  | 2011-11-04 → 2011-11-11 (+7d) | 166d → 171d |  | 120d → 126d |  |  |
| 305 | General PM 10/31-11/4 | 2011-10-31 A | 2011-11-04 A |  | 0% → 100% | 120d → none |  | resources Greg [20%] → Greg [30%] |

## Version 18 (saved 2011-11-22)

Note of the change: SVN-Revision: 1701

Last finish 2012-05-07 → 2012-01-10 (-118d). Complete tasks 182 → 196.

Added:

| ID | Task | Duration | Start | Finish | Predecessors | Constraint | Resources |
| --- | --- | --- | --- | --- | --- | --- | --- |
| 106 | UPT automation support | 1d | 2011-11-04 A | 2011-11-04 A |  | start no earlier than 2011-11-04 | Prasad |
| 107 | QA [undefined] | 25d | 2011-11-21 | 2011-12-28 |  | start no earlier than 2011-11-21 |  |
| 108 | (QA support) | 25d | 2011-11-21 | 2011-12-28 | 107SS | start no earlier than 2011-11-21 |  |
| 109 | SDK 4.5 documentation updates (REST enhancements and 4.2.3 features) | 1d? | 2011-11-21 | 2011-11-21 |  | start no earlier than 2011-11-21 | Doc Team |
| 110 | **Release activities** | 8d | 2011-12-29 | 2012-01-10 | 107 |  |  |
| 111 | Final tag and repository updates with smoke tests | 1d | 2011-12-29 | 2011-12-29 |  | start no earlier than 2011-11-21 |  |
| 112 | QA report and sign-off | 1d | 2011-12-30 | 2011-12-30 | 111 | start no earlier than 2011-11-21 |  |
| 113 | User documentation publication | 5d | 2011-12-29 | 2012-01-05 | 109 | start no earlier than 2011-11-21 |  |
| 114 | Wiki page updates | 1d | 2011-12-29 | 2011-12-29 |  | start no earlier than 2011-11-21 |  |
| 115 | Software bundle created (zip file) | 1d | 2012-01-03 | 2012-01-03 | 112 | start no earlier than 2011-11-21 |  |
| 116 | GForge website updated (upload software bundle, release notes, documentation) | 1d | 2012-01-04 | 2012-01-04 | 115 | start no earlier than 2011-11-21 |  |
| 117 | Workbench deployment on stage and production | 5d | 2012-01-03 | 2012-01-09 | 112 | start no earlier than 2011-11-21 |  |
| 118 | Javadocs deployment | 3d | 2012-01-03 | 2012-01-05 | 112 | start no earlier than 2011-11-21 |  |
| 119 | NCICB website updates (including Download Center) | 3d | 2012-01-05 | 2012-01-09 | 116 | start no earlier than 2011-11-21 |  |
| 120 | Release notes posted | 1d | 2011-12-29 | 2011-12-29 |  | start no earlier than 2011-11-21 |  |
| 121 | Release announcement | 1d | 2012-01-10 | 2012-01-10 | 113, 114, 115, 116, 117, 118, 119, 120FF | start no earlier than 2011-11-21 |  |
| 144 | real REST implementation in SDK 4.5 - Junits | 5d? | 2011-11-28 | 2011-12-02 |  | start no earlier than 2011-11-28 | Greg [25%] |
| 149 | (WAVE-based analysis and fixes for SDK 4.5 UI done under earlier work) | 0d | 2011-10-28 A | 2011-10-28 A |  | start no earlier than 2011-10-28 |  |
| 150 | Manual and WAVE analysis of UPT (checklist/report) | 9d | 2011-11-07 A | 2011-11-17 A |  | start no earlier than 2011-11-07 | Dan [15%] |
| 151 | Manual analysis of SDK (checklist/report) | 3d | 2011-11-23 | 2011-11-29 |  | start no earlier than 2011-11-23 | Dan [25%] |
| 152 | Manual analysis of Workbench | 3d | 2011-11-30 | 2011-12-02 | 151 | start no earlier than 2011-11-21 | Dan [25%] |
| 154 | Apply proposed compliance changes to SDK UI? | 2d | 2011-12-13 | 2011-12-14 | 153 | start no earlier than 2011-11-21 | Dan [25%] |
| 155 | **Review collateral (readme, installer, etc.)** | 6d | 2011-12-15 | 2011-12-22 | 154 |  |  |
| 156 | CSM | 2d | 2011-12-15 | 2011-12-16 |  | start no earlier than 2011-11-21 | Dan [25%] |
| 157 | SDK | 2d | 2011-12-19 | 2011-12-20 | 156 | start no earlier than 2011-11-21 | Dan [25%] |
| 158 | CLM | 2d | 2011-12-21 | 2011-12-22 | 157 | start no earlier than 2011-11-21 | Dan [25%] |
| 159 | Convert CSM manual to WIKI | 10d | 2011-12-19 | 2012-01-03 |  | start no earlier than 2011-12-19 | Doc Team |
| 178 | QA support and planning meetings | 3d | 2011-11-08 A | 2011-11-10 A |  | start no earlier than 2011-11-08 | Greg [10%] |
| 179 | Updated plan (no QA or release, with smaller tasks and tracker nos.) | 4d | 2011-11-10 A | 2011-11-22 |  | start no earlier than 2011-11-10 | Greg [25%] |
| 208 | Technology stack guidance on vendor/tech neutrality - document | 3d | 2011-11-16 A | 2011-11-18 A |  | start no earlier than 2011-11-16 | Greg [25%] |
| 258 | General support 11/14-11/18 | 5d | 2011-11-14 A | 2011-11-18 A |  | start no earlier than 2011-11-14 | Greg [10%]; Dan [10%] |
| 259 | General support 11/21-11/23 | 3d | 2011-11-21 | 2011-11-23 |  | start no earlier than 2011-11-21 | Greg [10%]; Dan [25%] |
| 260 | General support 11/28-12/2 | 5d | 2011-11-28 | 2011-12-02 |  | start no earlier than 2011-11-28 | Greg [10%] |
| 290 | General PM 11/14-11/18 | 5d | 2011-11-14 A | 2011-11-18 A |  | start no earlier than 2011-11-14 | Greg [20%] |
| 291 | General PM 11/21-11/23 | 3d | 2011-11-21 | 2011-11-23 |  | start no earlier than 2011-11-21 | Greg [25%] |
| 292 | General PM 11/28-12/2 | 5d | 2011-11-28 | 2011-12-02 |  | start no earlier than 2011-11-28 | Greg [15%] |
| 293 | Project Summary Report | 10d | 2011-12-27 | 2012-01-10 |  | start no earlier than 2011-12-27 | Greg [50%] |

Removed: 85 --- QA and release activities need to be re-planned ----; 96 backward compatibility testing; 97 CLM 4.1.1; 98 CSM/CLM test report; 110 testing with caGrid 1.4; 111 documentation; 112 Workbench; 113 Release activities 2011 current - concurrent with QA; 114 Release activities 2011 "current" - post QA; 115 QA 2011 "future"; 116 CSM/UPT 4.2.4; 117 CLM/LLT 4.1.2; 118 SDK 4.5; 119 Release activities 2011 "future" - concurrent with QA; 120 Release activities 2011 "future" - post QA; 121 QA for upgraded non-core applications (not listed in tech stacks); 122 CGMM; 123 Release activities for non-core applications; 124 CGMM (not in tech stack document); 125 (Target release date - 2010 "current"); 126 (Target release date - 2010 "future"); 152 Analysis and report [need detailed tasks]; 172 TRB approval; 173 Draft project plan [old task, may remove]; 174 Review plan with user representatives and amend [still relevant?]; 177 UPT enhancements [changes expected]; 178 GF 30436 Better LDAP integration when adding users to UPT; 179 GF 22524 Authentication - DataSource LoginModule; 180 GF 1158/2830 Implement paging for UPT; 181 GF 22540/29002/30435 Password changes; 182 GF 15527 CSM username field length should be increased to 100 characters; 183 GF 19369 Indicate UPT /CSM version names in the Application Header after login; 184 GF 631/22236 Password recovery; 185 GF 30019 User lockout on unsuccessful logins; 186 GF 2913 Add an Active Flag for users; 187 GF 24404 UPT GUI installer should validate database connection info; 188 GF 30372 Change UPT install.properties file to note properties that must be replaced; 189 GF 1154/30433 Synchronization between UPT and supported application; 190 GF 24965 Documentation changes from CDL installation; 191 GF 24116 Need stronger access control; 192 GF 2914 Auto-email new user or associated user; 193 User friendly UPT UI; 194 Customizable UPT UI

Changed:

| ID | Task | Start | Finish | Duration | Complete | Total float | Predecessors | Other |
| --- | --- | --- | --- | --- | --- | --- | --- | --- |
| 39 | **Technology stack upgrade to 2011 "current" and "future"** |  | 2011-11-09 → 2012-01-10 (+62d) | 125d? → 165d? | 74% → 75% | 18d → 0d |  |  |
| 85 | **QA 2011 "current" [stopped]** |  | 2011-09-23 → 2011-09-02 A (-21d) | 54d? → 40d? | 84% → 100% | 23d → none |  | was named QA 2011 "current" |
| 86 | **CSM 4.2.3** |  | 2011-09-08 → 2011-09-02 A (-6d) | 43d → 40d | 88% → 100% | 30d → none |  |  |
| 94 | API testing [stopped] |  | 2011-09-02 A |  | 80% → 100% | 12d → none |  | was named API testing |
| 95 | **SDK 4.4.1** |  | 2011-09-09 → 2011-09-02 A (-7d) | 42.5d? → 38.5d? | 92% → 100% | 25d → none |  |  |
| 136 | **REST API analysis and implementation** |  | 2011-11-15 → 2011-12-16 (+31d) | 39d? → 60d? | 64% → 74% | 124d → 15d |  |  |
| 142 | "real" REST implementation in SDK 4.5 (w/o Junits) |  | 2011-11-15 → 2011-11-18 A (+3d) | 10d? → 7d | 50% → 100% | 104d → none |  | was named "real" REST implementation in SDK 4.5 |
| 145 | REST support for non-SDK applications - research | 2011-09-21 → 2011-12-12 (+82d) | 2011-10-04 → 2011-12-16 (+73d) | 10d? → 5d? |  | 142d → 0d | none → 261 | constraint start no earlier than 2011-09-21 → start no earlier than 2011-11-21; resources none → Prasad |
| 148 | **Section 508 compliance** | 2011-11-07 → 2011-10-28 A (-10d) | 2011-11-18 → 2012-01-03 (+46d) | 10d? → 44d | 0% → 23% | 121d → 5d |  |  |
| 153 | Apply proposed compliance changes to CSM/UPT 4.2.3 and 4.2.4 | 2011-11-07 → 2011-12-05 (+28d) | 2011-11-07 → 2011-12-12 (+35d) | 1d? → 6d |  | 119d → 11d | none → 152 | resources none → Dan [25%] |
| 162 | **UPT Improvement Plan** |  | 2011-12-05 → 2011-11-22 (-13d) | 187d? → 178d? | 72% → 98% | 0d → 31d |  |  |
| 177 | Updated plan (work w/ QA on estimates, possible Jan release) [stopped] |  | 2011-11-10 → 2011-11-07 A (-3d) | 6d? → 3d | 50% → 100% | 0d → none |  | was named Updated plan (work w/ QA on estimates, possible Jan release) |
| 188 | **Analysis** |  | 2011-12-13 → 2012-01-10 (+28d) | 187d? → 203d? | 57% → 84% | 104d → 0d |  |  |
| 206 | Technology stack guidance on vendor/tech neutrality - analysis and outline | 2011-11-01 A | 2011-11-03 A |  | 0% → 100% | 129d → none |  |  |
| 207 | Technology stack guidance on vendor/tech neutrality - document | 2011-11-04 → 2011-11-07 A (+3d) | 2011-11-08 → 2011-11-16 A (+8d) | 3d → 8d | 0% → 100% | 137d → none |  | constraint none → start no earlier than 2011-11-07 |
| 209 | Feasibility analysis of providing semantic information (metadata) with data | 2011-11-23 → 2011-12-19 (+26d) | 2011-11-29 → 2011-12-23 (+24d) |  |  | 112d → 0d | 261 → 145 | resources none → Prasad |
| 210 | Feasibility analysis of providing an RDF interface | 2011-11-30 → 2011-12-27 (+27d) | 2011-12-06 → 2012-01-03 (+28d) |  |  | 112d → 0d |  | resources none → Prasad |
| 211 | Feasibility analysis of providing security with SPARQL queries | 2011-12-07 → 2012-01-04 (+28d) | 2011-12-13 → 2012-01-10 (+28d) |  |  | 112d → 0d |  | resources none → Prasad |
| 225 | **General support to date (only large tasks called out)** | 2011-01-13 A → 2011-03-22 A (+68d) | 2011-11-22 → 2011-12-09 (+17d) | 220d? → 183d? | 88% → 94% | 119d → 20d |  |  |
| 257 | General support 11/7-11/11 | 2011-11-07 A | 2011-11-11 A |  | 0% → 100% | 0d → none |  | resources Greg [10%] → none |
| 261 | Patch scripts for repository migrations for released SDK versions | 2011-11-16 → 2011-12-05 (+19d) | 2011-11-22 → 2011-12-09 (+17d) |  |  | 104d → 0d | 142 → none | constraint start no earlier than 2011-11-01 → start no earlier than 2011-12-05 |
| 264 | **Project Management to date (only large tasks called out)** |  | 2011-11-11 → 2012-01-10 (+60d) | 171d → 209d | 97% → 90% | 126d → 0d |  |  |
| 289 | General PM 11/7-11/11 | 2011-11-07 A | 2011-11-11 A |  | 0% → 100% | 126d → none |  | resources Greg [20%] → Greg [25%] |
| 300 | Requirements documents - derived from user docs, existing reqs docs, and test cases (?) | 2011-10-24 → 2011-01-13 (-284d) | 2011-11-25 → 2011-01-13 (-316d) | 25d? → 1d? |  | 124d → 250d |  | constraint start no earlier than 2011-10-24 → start no earlier than 2011-01-13 |
| 301 | caArray/UPT DB investigation (?) | 2011-09-26 → 2011-01-13 (-256d) | 2011-09-30 → 2011-01-13 (-260d) | 5d? → 1d? |  | 155d → 250d |  | constraint start no earlier than 2011-09-26 → start no earlier than 2011-01-13 |
| 302 | Ideal architecture for separation of SDK and caGrid | 2011-07-18 → 2011-01-13 (-186d) | 2011-07-20 → 2011-01-13 (-188d) | 3d → 1d? |  | 214d → 250d |  | constraint start no earlier than 2011-07-18 → start no earlier than 2011-01-13 |
| 303 | Write SDK product support FAQ’s and post on KC |  | 2011-01-19 → 2011-01-13 (-6d) | 5d? → 1d? |  | 334d → 250d |  |  |
| 304 | Write CSM product support FAQ’s and post on KC |  | 2011-01-17 → 2011-01-13 (-4d) | 3d? → 1d? |  | 336d → 250d |  |  |
| 305 | Document migration activities/issues moving from SDK 4.0 to 4.4 (using caDSR as an example) | 2011-07-05 → 2011-01-13 (-173d) | 2011-07-05 → 2011-01-13 (-173d) |  |  | 217d → 250d |  | constraint start no earlier than 2011-07-05 → start no earlier than 2011-01-13 |

## Version 19 (saved 2011-11-29)

Note of the change: SVN-Revision: 1702

Last finish stays 2012-01-10. Complete tasks 196 → 198.

Changed:

| ID | Task | Start | Finish | Duration | Complete | Total float | Other |
| --- | --- | --- | --- | --- | --- | --- | --- |
| 144 | real REST implementation in SDK 4.5 - Junits | 2011-11-28 → 2011-12-05 (+7d) | 2011-12-02 → 2011-12-09 (+7d) |  |  | 25d → 20d | constraint start no earlier than 2011-11-28 → start no earlier than 2011-12-05 |
| 151 | Manual analysis of SDK (checklist/report) | 2011-11-23 → 2011-12-05 (+12d) | 2011-11-29 → 2011-12-07 (+8d) |  |  | 11d → 5d | constraint start no earlier than 2011-11-23 → start no earlier than 2011-12-05 |
| 152 | Manual analysis of Workbench | 2011-11-30 → 2011-12-08 (+8d) | 2011-12-02 → 2011-12-12 (+10d) |  |  | 11d → 5d |  |
| 153 | Apply proposed compliance changes to CSM/UPT 4.2.3 and 4.2.4 | 2011-12-05 → 2011-12-13 (+8d) | 2011-12-12 → 2011-12-20 (+8d) |  |  | 11d → 5d |  |
| 154 | Apply proposed compliance changes to SDK UI? | 2011-12-13 → 2011-12-21 (+8d) | 2011-12-14 → 2011-12-22 (+8d) |  |  | 11d → 5d |  |
| 155 | **Review collateral (readme, installer, etc.)** | 2011-12-15 → 2011-12-23 (+8d) | 2011-12-22 → 2012-01-03 (+12d) |  |  | 11d → 5d |  |
| 156 | CSM | 2011-12-15 → 2011-12-23 (+8d) | 2011-12-16 → 2011-12-27 (+11d) |  |  | 11d → 5d |  |
| 157 | SDK | 2011-12-19 → 2011-12-28 (+9d) | 2011-12-20 → 2011-12-29 (+9d) |  |  | 11d → 5d |  |
| 158 | CLM | 2011-12-21 → 2011-12-30 (+9d) | 2011-12-22 → 2012-01-03 (+12d) |  |  | 11d → 5d |  |
| 162 | **UPT Improvement Plan** |  | 2011-11-22 → 2011-12-13 (+21d) | 178d? → 191d? |  | 31d → 18d |  |
| 179 | Updated plan (no QA or release, with smaller tasks and tracker nos.) |  | 2011-11-22 → 2011-12-13 (+21d) |  |  | 31d → 18d |  |
| 225 | **General support to date (only large tasks called out)** |  |  |  | 94% → 95% |  |  |
| 259 | General support 11/21-11/23 | 2011-11-21 A | 2011-11-23 A |  | 0% → 100% | 30d → none | resources Greg [10%]; Dan [25%] → Greg [40%]; Dan [25%] |
| 264 | **Project Management to date (only large tasks called out)** |  |  |  | 90% → 92% |  |  |
| 291 | General PM 11/21-11/23 | 2011-11-21 A | 2011-11-23 → 2011-11-29 A (+6d) | 3d → 5d | 0% → 100% | 30d → none | resources Greg [25%] → Greg [10%] |

## Version 20 (saved 2011-12-09)

Note of the change: SVN-Revision: 1703

Last finish 2012-01-10 → 2012-01-13 (+3d). Complete tasks 198 → 201.

Added:

| ID | Task | Duration | Start | Finish | Predecessors | Constraint | Resources |
| --- | --- | --- | --- | --- | --- | --- | --- |
| 109 | General support | 21d | 2011-12-05 | 2012-01-04 |  | start no earlier than 2011-12-05 | Prasad [15%] |
| 110 | QA - UPT installation | 1d | 2011-11-29 | 2011-11-29 |  | start no earlier than 2011-11-29 | Dan [75%]; Greg [15%] |
| 123 | Buffer | 3d | 2012-01-10 | 2012-01-12 | 115, 116, 117, 118, 119, 120, 121, 122FF | start no earlier than 2011-11-21 |  |
| 125 | CLM 4.1.1 Released | 0d | 2012-01-13 | 2012-01-13 | 124 | start no earlier than 2011-12-05 |  |
| 126 | CLM 4.1.2 Released | 0d | 2012-01-13 | 2012-01-13 | 124 | start no earlier than 2011-12-05 |  |
| 127 | CSM 4.2.3 Released | 0d | 2012-01-13 | 2012-01-13 | 124 | start no earlier than 2011-12-05 |  |
| 128 | CSM 4.2.4 Released | 0d | 2012-01-13 | 2012-01-13 | 124 | start no earlier than 2011-12-05 |  |
| 129 | SDK 4.4.1 Released | 0d | 2012-01-13 | 2012-01-13 | 124 | start no earlier than 2011-12-05 |  |
| 130 | SDK 4.5 Released | 0d | 2012-01-13 | 2012-01-13 | 124 | start no earlier than 2011-12-05 |  |
| 131 | Workbench 4.4.1 Released | 0d | 2012-01-13 | 2012-01-13 | 124 | start no earlier than 2011-12-05 |  |
| 269 | caTissue support 11/28-12/2 | 5d | 2011-11-28 A | 2011-12-02 A |  | start no earlier than 2011-11-28 | Dan [25%]; Greg [25%] |
| 270 | General support 12/5-12/9 | 5d | 2011-12-05 | 2011-12-09 |  | start no earlier than 2011-12-05 | Prasad [25%] |
| 272 | Convert doc links from Gforge to JIRA | 3d? | 2012-01-03 | 2012-01-05 |  | start no earlier than 2012-01-03 |  |
| 304 | General PM 12/5-12/9 | 5d | 2011-12-05 | 2011-12-09 |  | start no earlier than 2011-12-05 | Greg [15%] |

Removed: 210 Feasibility analysis of providing an RDF interface; 211 Feasibility analysis of providing security with SPARQL queries

Changed:

| ID | Task | Start | Finish | Duration | Complete | Total float | Predecessors | Other |
| --- | --- | --- | --- | --- | --- | --- | --- | --- |
| 39 | **Technology stack upgrade to 2011 "current" and "future"** |  | 2012-01-10 → 2012-01-13 (+3d) | 165d? → 168d? |  |  |  |  |
| 107 | QA |  |  |  |  |  |  | was named QA [undefined] |
| 108 | **(QA support)** | 2011-11-21 → 2011-11-29 (+8d) | 2011-12-28 → 2012-01-04 (+7d) |  |  | 8d → 7d |  | constraint start no earlier than 2011-11-21 → none |
| 112 | **Release activities** |  | 2012-01-10 → 2012-01-13 (+3d) | 8d → 11d? |  |  |  |  |
| 124 | Release announcement | 2012-01-10 → 2012-01-13 (+3d) | 2012-01-10 → 2012-01-13 (+3d) | 1d → 1d? |  |  | 115, 116, 117, 118, 119, 120, 121, 122FF → 123 | constraint start no earlier than 2011-11-21 → start no earlier than 2011-12-05 |
| 146 | **REST API analysis and implementation** |  | 2011-12-16 → 2011-12-23 (+7d) | 60d? → 65d? |  | 15d → 13d |  |  |
| 154 | real REST implementation in SDK 4.5 - Junits |  |  | 5d? → 5d |  | 20d → 23d |  | resources Greg [25%] → Prasad [60%] |
| 155 | REST support for non-SDK applications - research | 2011-12-12 → 2011-12-19 (+7d) | 2011-12-16 → 2011-12-23 (+7d) |  |  | 0d → 8d |  | resources Prasad → Prasad [85%] |
| 198 | **Analysis** |  | 2012-01-10 → 2012-01-03 (-7d) | 203d? → 198d? | 84% → 94% | 0d → 8d |  |  |
| 219 | Feasibility analysis of providing semantic information (metadata) with data | 2011-12-19 → 2011-12-27 (+8d) | 2011-12-23 → 2012-01-03 (+11d) |  |  | 0d → 8d |  | resources Prasad → Prasad [85%] |
| 233 | **General support to date (only large tasks called out)** |  | 2011-12-09 → 2012-01-05 (+27d) | 183d? → 200d? | 95% → 94% | 20d → 6d |  |  |
| 267 | General support 11/21-11/23 |  |  |  |  |  |  | resources Greg [40%]; Dan [25%] → Dan [25%]; Greg [40%] |
| 268 | General support 11/28-12/2 | 2011-11-28 A | 2011-12-02 A |  | 0% → 100% | 25d → none |  | resources Greg [10%] → none |
| 271 | Patch scripts for repository migrations for released SDK versions | 2011-12-05 → 2011-12-12 (+7d) | 2011-12-09 → 2011-12-16 (+7d) |  |  | 0d → 8d |  | constraint start no earlier than 2011-12-05 → start no earlier than 2011-12-12; resources Prasad → Prasad [85%] |
| 275 | **Project Management to date (only large tasks called out)** |  | 2012-01-10 → 2011-12-16 (-25d) | 209d → 194d |  | 0d → 18d |  |  |
| 302 | General PM 11/21-11/23 |  | 2011-11-29 A → 2011-11-23 A (-6d) | 5d → 3d |  |  |  |  |
| 303 | General PM 11/28-12/2 | 2011-11-28 A | 2011-12-02 A |  | 0% → 100% | 25d → none |  |  |
| 305 | Project Summary Report | 2011-12-27 → 2011-12-05 (-22d) | 2012-01-10 → 2011-12-16 (-25d) |  |  | 0d → 18d |  | constraint start no earlier than 2011-12-27 → start no earlier than 2011-12-05; resources Greg [50%] → Greg [35%] |

## Version 21 (saved 2011-12-19)

Note of the change: SVN-Revision: 1706

Last finish stays 2012-01-13. Complete tasks 201 → 206.

Added:

| ID | Task | Duration | Start | Finish | Constraint | Resources |
| --- | --- | --- | --- | --- | --- | --- |
| 271 | ApplicationService discussion/document | 5d | 2011-12-05 A | 2011-12-09 A | start no earlier than 2011-12-05 | Prasad [60%]; Dan [25%]; Greg [15%] |
| 272 | General support 12/12-12/16 | 5d | 2011-12-12 | 2011-12-16 | start no earlier than 2011-12-12 |  |
| 306 | Research trackers by CBIIT project | 2d | 2011-12-02 A | 2011-12-05 A | start no earlier than 2011-12-02 | Greg [50%] |
| 308 | General PM 12/12-12/16 | 5d | 2011-12-12 | 2011-12-16 | start no earlier than 2011-12-12 | Greg [15%] |

Changed:

| ID | Task | Start | Finish | Duration | Complete | Total float | Other |
| --- | --- | --- | --- | --- | --- | --- | --- |
| 146 | **REST API analysis and implementation** |  | 2011-12-23 → 2012-01-03 (+11d) | 65d? → 70d? |  | 13d → 8d |  |
| 154 | real REST implementation in SDK 4.5 - Junits | 2011-12-05 → 2011-12-12 (+7d) | 2011-12-09 → 2011-12-16 (+7d) |  |  | 23d → 18d | constraint start no earlier than 2011-12-05 → start no earlier than 2011-12-12; resources Prasad [60%] → Prasad [85%] |
| 155 | REST support for non-SDK applications - research | 2011-12-19 → 2011-12-27 (+8d) | 2011-12-23 → 2012-01-03 (+11d) |  |  | 8d → 3d |  |
| 158 | **Section 508 compliance** |  | 2012-01-03 → 2012-01-10 (+7d) | 44d → 49d |  | 8d → 3d |  |
| 161 | Manual analysis of SDK (checklist/report) | 2011-12-05 → 2011-12-12 (+7d) | 2011-12-07 → 2011-12-14 (+7d) |  |  | 8d → 3d | constraint start no earlier than 2011-12-05 → start no earlier than 2011-12-12 |
| 162 | Manual analysis of Workbench | 2011-12-08 → 2011-12-15 (+7d) | 2011-12-12 → 2011-12-19 (+7d) |  |  | 8d → 3d |  |
| 163 | Apply proposed compliance changes to CSM/UPT 4.2.3 and 4.2.4 | 2011-12-13 → 2011-12-20 (+7d) | 2011-12-20 → 2011-12-28 (+8d) |  |  | 8d → 3d |  |
| 164 | Apply proposed compliance changes to SDK UI? | 2011-12-21 → 2011-12-29 (+8d) | 2011-12-22 → 2011-12-30 (+8d) |  |  | 8d → 3d |  |
| 165 | **Review collateral (readme, installer, etc.)** | 2011-12-23 → 2012-01-03 (+11d) | 2012-01-03 → 2012-01-10 (+7d) |  |  | 8d → 3d |  |
| 166 | CSM | 2011-12-23 → 2012-01-03 (+11d) | 2011-12-27 → 2012-01-04 (+8d) |  |  | 8d → 3d |  |
| 167 | SDK | 2011-12-28 → 2012-01-05 (+8d) | 2011-12-29 → 2012-01-06 (+8d) |  |  | 8d → 3d |  |
| 168 | CLM | 2011-12-30 → 2012-01-09 (+10d) | 2012-01-03 → 2012-01-10 (+7d) |  |  | 8d → 3d |  |
| 172 | **UPT Improvement Plan** |  | 2011-12-13 → 2011-11-11 A (-32d) | 191d? → 171d? | 98% → 100% | 21d → none |  |
| 189 | Updated plan (no QA or release, with smaller tasks and tracker nos.) [incomplete] |  | 2011-12-13 → 2011-11-11 A (-32d) | 4d → 2d | 50% → 100% | 21d → none | was named Updated plan (no QA or release, with smaller tasks and tracker nos.) |
| 198 | **Analysis** |  | 2012-01-03 → 2012-01-10 (+7d) | 198d? → 203d? |  | 8d → 3d |  |
| 219 | Feasibility analysis of providing semantic information (metadata) with data | 2011-12-27 → 2012-01-04 (+8d) | 2012-01-03 → 2012-01-10 (+7d) |  |  | 8d → 3d |  |
| 269 | caTissue support 11/28-12/2 |  |  |  |  |  | resources Dan [25%]; Greg [25%] → Dan [25%]; Greg [35%] |
| 270 | General support 12/5-12/9 | 2011-12-05 A | 2011-12-09 A |  | 0% → 100% | 23d → none |  |
| 273 | Patch scripts for repository migrations for released SDK versions | 2011-12-12 → 2011-12-19 (+7d) | 2011-12-16 → 2011-12-23 (+7d) |  |  | 8d → 3d | constraint start no earlier than 2011-12-12 → start no earlier than 2011-12-19 |
| 277 | **Project Management to date (only large tasks called out)** |  | 2011-12-16 → 2011-12-23 (+7d) | 194d → 199d |  | 18d → 13d |  |
| 307 | General PM 12/5-12/9 | 2011-12-05 A | 2011-12-09 A |  | 0% → 100% | 23d → none | resources Greg [15%] → Greg [20%] |
| 309 | Project Summary Report | 2011-12-05 → 2011-12-12 (+7d) | 2011-12-16 → 2011-12-23 (+7d) |  |  | 18d → 13d | constraint start no earlier than 2011-12-05 → start no earlier than 2011-12-12 |

## Version 22 (saved 2011-12-20)

Note of the change: SVN-Revision: 1711

Last finish 2012-01-13 → 2012-01-20 (+7d). Complete tasks 206 → 209.

Added:

| ID | Task | Duration | Start | Finish | Constraint | Resources |
| --- | --- | --- | --- | --- | --- | --- |
| 273 | General support 12/19-12/23 | 5d | 2011-12-19 | 2011-12-23 | start no earlier than 2011-12-19 |  |
| 310 | General PM 12/19-12/23 | 5d | 2011-12-19 | 2011-12-23 | start no earlier than 2011-12-19 | Greg [20%] |

Changed:

| ID | Task | Start | Finish | Duration | Complete | Total float | Predecessors | Other |
| --- | --- | --- | --- | --- | --- | --- | --- | --- |
| 146 | **REST API analysis and implementation** |  | 2012-01-03 → 2012-01-13 (+10d) | 70d? → 78d? |  | 8d → 0d |  |  |
| 154 | real REST implementation in SDK 4.5 - Junits | 2011-12-12 → 2011-12-22 (+10d) | 2011-12-16 → 2011-12-29 (+13d) |  |  | 18d → 0d |  | constraint start no earlier than 2011-12-12 → start no earlier than 2011-12-22 |
| 155 | REST support for non-SDK applications - research | 2011-12-27 → 2012-01-09 (+13d) | 2012-01-03 → 2012-01-13 (+10d) |  |  | 3d → 0d |  |  |
| 158 | **Section 508 compliance** |  | 2012-01-10 → 2012-01-12 (+2d) | 49d → 51d? | 23% → 24% | 3d → 6d |  |  |
| 161 | Manual analysis of SDK (checklist/report) | 2011-12-12 A | 2011-12-14 A |  | 0% → 100% | 3d → none |  |  |
| 162 | Apply proposed compliance changes to CSM/UPT 4.2.3 and 4.2.4 | 2011-12-20 → 2011-12-12 (-8d) | 2011-12-28 → 2011-12-21 (-7d) | 6d → 8d |  | 3d → 20d | 164 → none | constraint start no earlier than 2011-11-07 → start no earlier than 2011-12-12; resources Dan [25%] → Prasad [75%]; Greg [25%] |
| 163 | Apply proposed compliance changes to SDK UI | 2011-12-29 → 2011-12-15 (-14d) | 2011-12-30 → 2011-12-29 (-1d) | 2d → 10d? |  | 3d → 6d | 162 → 161 | was named Apply proposed compliance changes to SDK UI? |
| 164 | Manual analysis of Workbench | 2011-12-15 → 2011-12-30 (+15d) | 2011-12-19 → 2012-01-04 (+16d) |  |  | 3d → 6d | 161 → 163 |  |
| 165 | **Review collateral (readme, installer, etc.)** | 2012-01-03 → 2012-01-05 (+2d) | 2012-01-10 → 2012-01-12 (+2d) |  |  | 3d → 6d | 163 → 164 |  |
| 166 | CSM | 2012-01-03 → 2012-01-05 (+2d) | 2012-01-04 → 2012-01-06 (+2d) |  |  | 3d → 6d |  |  |
| 167 | SDK | 2012-01-05 → 2012-01-09 (+4d) | 2012-01-06 → 2012-01-10 (+4d) |  |  | 3d → 6d |  |  |
| 168 | CLM | 2012-01-09 → 2012-01-11 (+2d) | 2012-01-10 → 2012-01-12 (+2d) |  |  | 3d → 6d |  |  |
| 198 | **Analysis** |  | 2012-01-10 → 2012-01-20 (+10d) | 203d? → 211d? |  | 3d → 0d |  |  |
| 219 | Feasibility analysis of providing semantic information (metadata) with data | 2012-01-04 → 2012-01-16 (+12d) | 2012-01-10 → 2012-01-20 (+10d) |  |  | 3d → 0d |  |  |
| 233 | **General support to date (only large tasks called out)** |  | 2012-01-05 → 2012-01-06 (+1d) | 200d? → 201d? |  | 6d → 10d |  |  |
| 234 | **older completed tasks** |  | 2011-09-30 A → 2011-11-04 A (+35d) | 136d → 160d |  |  |  |  |
| 272 | General support 12/12-12/16 | 2011-12-12 A | 2011-12-16 A |  | 0% → 100% | 18d → none |  | resources none → Prasad [10%] |
| 274 | Patch scripts for repository migrations for released SDK versions | 2011-12-19 → 2011-12-30 (+11d) | 2011-12-23 → 2012-01-06 (+14d) |  |  | 3d → 0d | none → 154 |  |
| 278 | **Project Management to date (only large tasks called out)** |  | 2011-12-23 → 2012-01-06 (+14d) | 199d → 207d | 92% → 93% | 13d → 10d |  |  |
| 279 | **older completed tasks** |  | 2011-09-30 A → 2011-11-04 A (+35d) | 142d → 166d |  |  |  |  |
| 309 | General PM 12/12-12/16 | 2011-12-12 A | 2011-12-16 A |  | 0% → 100% | 18d → none |  | resources Greg [15%] → Greg [20%] |
| 311 | Project Summary Report | 2011-12-12 → 2011-12-22 (+10d) | 2011-12-23 → 2012-01-06 (+14d) |  |  | 13d → 10d |  | constraint start no earlier than 2011-12-12 → start no earlier than 2011-12-22 |

## Version 23 (saved 2012-01-06)

Note of the change: SVN-Revision: 1712

Last finish 2012-01-20 → 2012-01-26 (+6d). Complete tasks 209 → 218.

Added:

| ID | Task | Duration | Start | Finish | Predecessors | Constraint | Resources |
| --- | --- | --- | --- | --- | --- | --- | --- |
| 161 | Investigate SDK compliance issues (primarily tree control) | 2d | 2011-12-15 A | 2011-12-16 A | 160 |  | Dan [35%] |
| 163 | UPT compliance re-check | 2d | 2011-12-22 A | 2011-12-23 A | 162 |  | Dan [50%] |
| 164 | SDK compliance estimates | 1d | 2012-01-04 | 2012-01-04 |  | start no earlier than 2012-01-04 | Dan [25%] |
| 220 | NCCCP Data Curation Tool review and estimates | 4d | 2011-12-22 A | 2011-12-28 A |  | start no earlier than 2011-12-22 | Prasad [35%] |
| 221 | Security SDK vulnerability & UPT estimates | 4d | 2011-12-29 | 2012-01-04 |  | start no earlier than 2011-12-29 | Prasad [35%] |
| 276 | General support 12/27-12/30 | 4d | 2011-12-27 A | 2011-12-30 A |  | start no earlier than 2011-12-27 |  |
| 277 | General support 1/3-1/6 | 4d | 2012-01-03 | 2012-01-06 |  | start no earlier than 2012-01-03 |  |
| 278 | General support 1/9-1/13 | 5d | 2012-01-09 | 2012-01-13 |  | start no earlier than 2012-01-09 |  |
| 279 | Patch scripts for repository migrations for released SDK versions - protoype 4.2 | 5d | 2011-12-22 | 2011-12-29 |  | start no earlier than 2011-12-22 | Prasad [50%] |
| 317 | General PM 12/27-12/30 | 4d | 2011-12-27 A | 2011-12-30 A |  | start no earlier than 2011-12-27 | Greg [20%] |
| 318 | General PM 1/3-1/6 | 4d | 2012-01-03 | 2012-01-06 |  | start no earlier than 2012-01-03 | Greg [20%] |
| 319 | General PM 1/9-1/13 | 5d | 2012-01-09 | 2012-01-13 |  | start no earlier than 2012-01-09 | Greg [20%] |

Removed: 163 Apply proposed compliance changes to SDK UI

Changed:

| ID | Task | Start | Finish | Duration | Complete | Total float | Predecessors | Other |
| --- | --- | --- | --- | --- | --- | --- | --- | --- |
| 39 | **Technology stack upgrade to 2011 "current" and "future"** |  |  |  | 75% → 81% | 5d → 9d |  |  |
| 108 | **(QA support)** | 2011-11-29 A | 2012-01-04 → 2012-01-12 (+8d) | 25d → 31d | 0% → 81% | 12d → 10d |  |  |
| 109 | General support | 2011-12-05 A | 2012-01-04 → 2012-01-12 (+8d) | 21d → 27d | 0% → 80% | 7d → 10d |  |  |
| 110 | QA - UPT installation | 2011-11-29 A | 2011-11-29 A |  | 0% → 100% | 31d → none |  |  |
| 146 | **REST API analysis and implementation** |  | 2012-01-13 → 2012-01-20 (+7d) | 78d? → 83d | 74% → 85% | 0d → 4d |  |  |
| 154 | real REST implementation in SDK 4.5 - Junits | 2011-12-22 → 2012-01-16 (+25d) | 2011-12-29 → 2012-01-20 (+22d) |  |  | 0d → 4d |  | constraint start no earlier than 2011-12-22 → start no earlier than 2012-01-16 |
| 157 | **Section 508 compliance** |  | 2012-01-12 → 2012-01-26 (+14d) | 51d? → 61d | 24% → 55% | 6d → 0d |  |  |
| 162 | Apply proposed compliance changes to CSM/UPT 4.2.3 and 4.2.4 | 2011-12-12 A | 2011-12-21 A |  | 0% → 100% | 20d → none |  |  |
| 165 | Manual analysis of Workbench ? | 2011-12-30 → 2012-01-16 (+17d) | 2012-01-04 → 2012-01-18 (+14d) |  |  | 6d → 0d | Apply proposed compliance changes to SDK UI → none | was named Manual analysis of Workbench; constraint start no earlier than 2011-11-21 → start no earlier than 2012-01-16; resources Dan [25%] → none |
| 166 | **Review collateral (readme, installer, etc.)** | 2012-01-05 → 2012-01-19 (+14d) | 2012-01-12 → 2012-01-26 (+14d) |  |  | 6d → 0d |  |  |
| 167 | CSM | 2012-01-05 → 2012-01-19 (+14d) | 2012-01-06 → 2012-01-20 (+14d) |  |  | 6d → 0d |  |  |
| 168 | SDK | 2012-01-09 → 2012-01-23 (+14d) | 2012-01-10 → 2012-01-24 (+14d) |  |  | 6d → 0d |  |  |
| 169 | CLM | 2012-01-11 → 2012-01-25 (+14d) | 2012-01-12 → 2012-01-26 (+14d) |  |  | 6d → 0d |  |  |
| 199 | **Analysis** |  | 2012-01-20 → 2012-01-04 (-16d) | 211d? → 199d? | 94% → 95% | 0d → 16d |  |  |
| 235 | **General support to date (only large tasks called out)** |  | 2012-01-06 → 2012-01-18 (+12d) | 201d? → 209d? | 94% → 89% | 10d → 6d |  |  |
| 275 | General support 12/19-12/23 | 2011-12-19 A | 2011-12-23 A |  | 0% → 100% | 18d → none |  |  |
| 280 | Patch scripts for repository migrations for released SDK versions | 2011-12-30 → 2012-01-05 (+6d) | 2012-01-06 → 2012-01-18 (+12d) | 5d? → 10d? |  | 0d → 6d | 154 → 279 | constraint start no earlier than 2011-12-19 → start no earlier than 2012-01-05; resources Prasad [85%] → Dan [25%] |
| 284 | **Project Management to date (only large tasks called out)** |  | 2012-01-06 → 2012-01-13 (+7d) | 207d → 212d | 93% → 91% | 10d → 9d |  |  |
| 316 | General PM 12/19-12/23 | 2011-12-19 A | 2011-12-23 A |  | 0% → 100% | 18d → none |  |  |
| 333 | Feasibility analysis of providing semantic information (metadata) with data | 2012-01-16 → 2011-01-13 (-368d) | 2012-01-20 → 2011-01-13 (-372d) | 5d? → 1d? |  | 0d → 262d | 334 → none | constraint start no earlier than 2011-11-01 → start no earlier than 2011-01-13; resources Prasad [85%] → none |
| 334 | REST support for non-SDK applications - research | 2012-01-09 → 2011-01-13 (-361d) | 2012-01-13 → 2011-01-13 (-365d) | 5d? → 1d? |  | 0d → 262d | 280 → none | constraint start no earlier than 2011-11-21 → start no earlier than 2011-01-13; resources Prasad [85%] → none |

## Version 24 (saved 2012-01-12)

Note of the change: SVN-Revision: 1720

Last finish stays 2012-01-26. Complete tasks 218 → 224.

Added:

| ID | Task | Duration | Start | Finish | Predecessors | Constraint | Resources |
| --- | --- | --- | --- | --- | --- | --- | --- |
| 111 | JBoss automated deployments on RHEL 5 server | 5d? | 2012-01-05 | 2012-01-11 |  | must start on 2012-01-05 | Prasad [75%] |
| 166 | SDK compliance improvements | 7d? | 2012-01-12 | 2012-01-20 | 165 | start no earlier than 2012-01-12 | Prasad [75%] |
| 321 | caCORE Tools Project Info spreadsheet | 4d | 2012-01-03 A | 2012-01-06 A |  | start no earlier than 2012-01-03 | Greg [20%] |

Changed:

| ID | Task | Start | Finish | Duration | Complete | Total float | Predecessors | Other |
| --- | --- | --- | --- | --- | --- | --- | --- | --- |
| 39 | **Technology stack upgrade to 2011 "current" and "future"** |  |  |  | 81% → 80% |  |  |  |
| 108 | **(QA support)** |  |  | 31d → 31d? | 81% → 68% |  |  |  |
| 147 | **REST API analysis and implementation** |  | 2012-01-20 → 2012-01-26 (+6d) | 83d → 87d | 85% → 88% | 4d → 0d |  |  |
| 155 | real REST implementation in SDK 4.5 - Junits | 2012-01-16 → 2012-01-23 (+7d) | 2012-01-20 → 2012-01-26 (+6d) | 5d → 4d |  | 4d → 0d | none → 166 | resources Prasad [85%] → Prasad [75%] |
| 158 | **Section 508 compliance** |  |  | 61d → 61d? | 55% → 49% |  |  |  |
| 165 | SDK compliance estimates | 2012-01-04 A | 2012-01-04 A |  | 0% → 100% | 16d → none |  |  |
| 201 | **Analysis** |  | 2012-01-04 A |  | 95% → 100% | 16d → none |  |  |
| 223 | Security SDK vulnerability & UPT estimates | 2011-12-29 A | 2012-01-04 A |  | 0% → 100% | 16d → none |  |  |
| 237 | **General support to date (only large tasks called out)** |  |  |  | 89% → 93% |  |  |  |
| 238 | **older completed tasks** |  | 2011-11-04 A → 2011-12-02 A (+28d) | 160d → 178d |  |  |  |  |
| 279 | Patch scripts for repository migrations for released SDK versions - protoype 4.2 | 2011-12-22 A | 2011-12-29 A |  | 0% → 100% | 9d → none |  |  |
| 280 | General support 1/3-1/6 | 2012-01-03 A | 2012-01-06 A |  | 0% → 100% | 14d → none |  | resources none → Prasad [10%]; Greg [10%] |
| 281 | General support 1/9-1/13 |  |  |  |  |  |  | resources none → Prasad [10%] |
| 286 | **Project Management to date (only large tasks called out)** |  |  |  | 91% → 93% |  |  |  |
| 287 | **older completed tasks** |  | 2011-11-04 A → 2011-12-02 A (+28d) | 166d → 184d |  |  |  |  |
| 320 | General PM 1/3-1/6 | 2012-01-03 A | 2012-01-06 A |  | 0% → 100% | 14d → none |  |  |
| 322 | General PM 1/9-1/13 |  |  |  |  |  |  | resources Greg [20%] → Greg [15%] |
| 323 | Project Summary Report |  | 2012-01-06 → 2012-01-13 (+7d) | 10d → 11d |  | 14d → 9d |  |  |

## Version 25 (saved 2012-01-17)

Note of the change: SVN-Revision: 1722

Last finish 2012-01-26 → 2012-01-31 (+5d). Complete tasks 224 → 233.

Added:

| ID | Task | Duration | Start | Finish | Predecessors | Constraint | Resources |
| --- | --- | --- | --- | --- | --- | --- | --- |
| 112 | UPT security improvements | 4d | 2012-01-11 | 2012-01-17 | 115SF | start no earlier than 2012-01-11 | Prasad |
| 113 | **CSM 4.2.3 and SDK 4.4.1 Final QA and Release** | 266d? | 2011-01-13 | 2012-01-31 |  |  |  |
| 114 | **CSM 4.2.3** | 16d | 2012-01-10 | 2012-01-31 |  |  |  |
| 115 | Code freeze | 0d | 2012-01-17 | 2012-01-17 |  | must start on 2012-01-17 |  |
| 116 | QA | 15d | 2012-01-10 | 2012-01-30 |  | start no earlier than 2012-01-10 |  |
| 117 | QA report | 1d | 2012-01-31 | 2012-01-31 | 116 | start no earlier than 2012-01-31 |  |
| 118 | **Documentation and release activities** | 5d | 2012-01-24 | 2012-01-30 |  | finish no later than 2012-01-30 |  |
| 119 | User documentation publication (?) | 5d | 2012-01-24 | 2012-01-30 |  | as late as possible |  |
| 126 | **SDK 4.4.1** | 16d? | 2012-01-10 | 2012-01-31 |  |  |  |
| 127 | Explanation of code affected by Section 508 improvements | 1d? | 2012-01-12 | 2012-01-12 |  | start no earlier than 2012-01-12 |  |
| 128 | Code freeze | 0d | 2012-01-24 | 2012-01-24 |  | must start on 2012-01-24 |  |
| 129 | QA | 15d | 2012-01-10 | 2012-01-30 |  | start no earlier than 2012-01-10 |  |
| 130 | QA report | 1d | 2012-01-31 | 2012-01-31 | 129 | start no earlier than 2012-01-31 |  |
| 131 | **Documentation and release activities** | 5d | 2012-01-24 | 2012-01-30 |  | finish no later than 2012-01-30 |  |
| 132 | User documentation publication (?) | 5d | 2012-01-24 | 2012-01-30 |  | as late as possible |  |
| 133 | Software bundle created (zip file) | 1d | 2012-01-24 | 2012-01-24 |  | as late as possible |  |
| 134 | GForge website updated (upload software bundle, release notes, documentation) | 1d | 2012-01-25 | 2012-01-25 | 133 | as late as possible |  |
| 135 | Javadocs deployment | 3d | 2012-01-26 | 2012-01-30 |  | as late as possible |  |
| 136 | NCICB website updates (including Download Center) | 3d | 2012-01-26 | 2012-01-30 | 134 | as late as possible |  |
| 137 | Release notes posted | 1d | 2012-01-30 | 2012-01-30 | 187 | as late as possible |  |
| 138 | Wiki page updates | 1d | 2012-01-30 | 2012-01-30 |  | as late as possible |  |
| 139 | Prepare Release Announcement | 1d? | 2011-01-13 | 2011-01-13 |  |  |  |
| 140 | Remove restrictions on hidden documents and files | 1d | 2012-01-31 | 2012-01-31 | 141FF | start no earlier than 2012-01-12 |  |
| 141 | Release Announcement | 0d | 2012-01-31 | 2012-01-31 | 114FF, 126FF, 139 | start no earlier than 2012-01-12 |  |
| 142 | **Delivery of non-QA'd components** | 5d? | 2012-01-25 | 2012-01-31 |  | finish no later than 2012-01-31 |  |
| 144 | **Release notes prepared** | 1d | 2012-01-26 | 2012-01-26 |  |  |  |
| 145 | CLM 4.1.1 | 1d | 2012-01-26 | 2012-01-26 |  | as late as possible |  |
| 146 | CLM 4.1.2 | 1d | 2012-01-26 | 2012-01-26 |  | as late as possible |  |
| 147 | CSM 4.2.4 | 1d | 2012-01-26 | 2012-01-26 |  | as late as possible |  |
| 148 | SDK 4.5 | 1d | 2012-01-26 | 2012-01-26 |  | as late as possible |  |
| 149 | Workbench 4.4.1 | 1d | 2012-01-26 | 2012-01-26 |  | as late as possible |  |
| 150 | Document describing release candidates (candidates, source and doc locations, unit test summaries, known issues, notes, etc.) | 1d | 2012-01-27 | 2012-01-27 | 144 | start no earlier than 2012-01-12 |  |
| 151 | (Notes on mechanics of releasing components) | 1d | 2012-01-30 | 2012-01-30 | 150 | start no earlier than 2012-01-12 |  |
| 299 | General support 1/16-1/20 | 5d | 2012-01-16 | 2012-01-20 |  | start no earlier than 2012-01-16 |  |
| 301 | Review and testing of 4.2 overlay | 4d | 2012-01-05 A | 2012-01-10 A |  | start no earlier than 2012-01-05 | Dan [25%] |
| 302 | Investigate 4.1 | 1d | 2012-01-11 A | 2012-01-11 A |  | start no earlier than 2012-01-11 | Dan [25%] |
| 303 | 4.3 and 4.4 overlays | 5d | 2012-01-12 A | 2012-01-18 |  | start no earlier than 2012-01-12 | Dan [25%] |
| 304 | General support 1/23-1/27 | 5d | 2012-01-23 | 2012-01-27 |  | start no earlier than 2012-01-23 |  |
| 305 | General support 1/30-1/31 | 2d | 2012-01-30 | 2012-01-31 |  | start no earlier than 2012-01-30 |  |
| 346 | General PM 1/17-1/20 | 4d | 2012-01-17 | 2012-01-20 |  | start no earlier than 2012-01-17 | Greg [15%] |
| 347 | General PM 1/23-1/27 | 5d | 2012-01-23 | 2012-01-27 |  | start no earlier than 2012-01-23 | Greg [15%] |
| 348 | General PM 1/30-1/31 | 2d | 2012-01-30 | 2012-01-31 |  | start no earlier than 2012-01-30 | Greg [15%] |
| 363 | Repository and BDA retirement - ISO 21090 library (?) | 1d? | 2011-01-13 | 2011-01-13 |  | start no earlier than 2011-01-13 |  |

Removed: 113 Release activities; 114 Final tag and repository updates with smoke tests; 115 QA report and sign-off; 116 User documentation publication; 120 Workbench deployment on stage and production; 124 Buffer; 125 Release announcement; 126 CLM 4.1.1 Released; 127 CLM 4.1.2 Released; 128 CSM 4.2.3 Released; 129 CSM 4.2.4 Released; 130 SDK 4.4.1 Released; 131 SDK 4.5 Released; 132 Workbench 4.4.1 Released; 143 additional modifications to pending releases (?); 144 Repository and BDA - ISO 21090 library

Changed:

| ID | Task | Start | Finish | Duration | Complete | Total float | Predecessors | Other |
| --- | --- | --- | --- | --- | --- | --- | --- | --- |
| 39 | **Technology stack upgrade to 2011 "current" and "future"** | 2011-05-13 A → 2011-01-13 A (-120d) | 2012-01-13 → 2012-01-31 (+18d) | 168d? → 266d? | 80% → 77% | 9d → 0d |  |  |
| 107 | QA | 2011-11-21 A | 2011-12-28 A |  | 0% → 100% | 9d → none |  |  |
| 108 | **(QA support)** |  | 2012-01-12 → 2012-01-17 (+5d) | 31d? → 33d | 68% → 88% | 10d → 6d |  |  |
| 109 | General support |  | 2012-01-12 → 2012-01-10 A (-2d) | 27d → 25d | 80% → 100% | 10d → none |  |  |
| 111 | JBoss automated deployments on RHEL 5 server | 2012-01-05 A | 2012-01-11 → 2012-01-10 A (-1d) | 5d? → 4d | 0% → 100% | 0d → none |  |  |
| 120 | Software bundle created (zip file) | 2012-01-03 → 2012-01-24 (+21d) | 2012-01-03 → 2012-01-24 (+21d) |  |  | 9d → 0d | QA report and sign-off → none | constraint start no earlier than 2011-11-21 → as late as possible |
| 121 | GForge website updated (upload software bundle, release notes, documentation) | 2012-01-04 → 2012-01-25 (+21d) | 2012-01-04 → 2012-01-25 (+21d) |  |  | 9d → 0d |  | constraint start no earlier than 2011-11-21 → as late as possible |
| 122 | Javadocs deployment | 2012-01-03 → 2012-01-26 (+23d) | 2012-01-05 → 2012-01-30 (+25d) |  |  | 11d → 0d | QA report and sign-off → none | constraint start no earlier than 2011-11-21 → as late as possible |
| 123 | NCICB website updates (including Download Center) | 2012-01-05 → 2012-01-26 (+21d) | 2012-01-09 → 2012-01-30 (+21d) |  |  | 9d → 0d |  | constraint start no earlier than 2011-11-21 → as late as possible |
| 124 | Release notes posted | 2011-12-29 → 2012-01-30 (+32d) | 2011-12-29 → 2012-01-30 (+32d) |  |  | 18d → 0d | none → 186 | constraint start no earlier than 2011-11-21 → as late as possible |
| 125 | Wiki page updates | 2011-12-29 → 2012-01-30 (+32d) | 2011-12-29 → 2012-01-30 (+32d) |  |  | 15d → 0d |  | constraint start no earlier than 2011-11-21 → as late as possible |
| 143 | SDK 4.5 documentation updates (REST enhancements and 4.2.3 features) | 2011-11-21 → 2012-01-25 (+65d) | 2011-11-21 → 2012-01-31 (+71d) | 1d? → 5d? |  | 35d → 0d |  | constraint start no earlier than 2011-11-21 → as late as possible |
| 154 | **Ivy/Maven migration and BDA removal** |  | 2011-10-24 A | 14d? → 14d | 86% → 100% | 64d → none |  |  |
| 161 | Repository and BDA - CLM/LLT 4.1.1 & 4.1.2 |  |  |  |  |  |  | was named Repository and BDA - CLM/LLT |
| 164 | **REST API analysis and implementation** |  | 2012-01-26 → 2012-01-27 (+1d) | 87d → 88d | 88% → 99% | 0d → 2d |  |  |
| 172 | real REST implementation in SDK 4.5 - Junits [doc as known issue for delivery] | 2012-01-23 → 2012-01-27 (+4d) | 2012-01-26 → 2012-01-27 (+1d) | 4d → 0d |  | 0d → 2d | 183 → 150 | was named real REST implementation in SDK 4.5 - Junits; constraint start no earlier than 2012-01-16 → start no earlier than 2012-01-12; resources Prasad [75%] → none |
| 175 | **Section 508 compliance** |  | 2012-01-26 → 2012-01-31 (+5d) | 61d? → 64d? | 49% → 40% |  |  |  |
| 183 | SDK compliance improvements | 2012-01-12 → 2012-01-17 (+5d) | 2012-01-20 → 2012-01-24 (+4d) | 7d? → 5d |  | 0d → 6d | 182 → 182, 112, 128SF | resources Prasad [75%] → Prasad |
| 184 | Manual analysis of Workbench [doc as known issue for delivery] | 2012-01-16 → 2012-01-30 (+14d) | 2012-01-18 → 2012-01-30 (+12d) | 3d → 1d |  | 0d → 1d | none → 150 | was named Manual analysis of Workbench ? |
| 185 | **Review collateral (readme, installer, etc.)** | 2012-01-19 → 2012-01-26 (+7d) | 2012-01-26 → 2012-01-31 (+5d) | 6d → 4d |  |  | 184 → none |  |
| 186 | CSM 4.2.3 | 2012-01-19 → 2012-01-26 (+7d) | 2012-01-20 → 2012-01-27 (+7d) |  |  |  |  | was named CSM; constraint start no earlier than 2011-11-21 → as late as possible; resources Dan [25%] → none |
| 187 | SDK 4.4.1 | 2012-01-23 → 2012-01-26 (+3d) | 2012-01-24 → 2012-01-27 (+3d) |  |  |  | 186 → none | was named SDK; constraint start no earlier than 2011-11-21 → as late as possible; resources Dan [25%] → none |
| 188 | Other components [doc as known issue for delivery] | 2012-01-25 → 2012-01-30 (+5d) | 2012-01-26 → 2012-01-31 (+5d) |  |  |  | 187 → 150 | was named CLM; resources Dan [25%] → none |
| 189 | Convert CSM manual to WIKI |  | 2012-01-03 → 2012-01-24 (+21d) | 10d → 25d? |  | 17d → 5d |  |  |
| 248 | **SDK 4.1.3 - GF 27529 patch to 4.1.2 (for caBIO)** |  | 2011-03-14 A |  | 0% → 100% | 221d → none |  |  |
| 250 | QA [low priority] [deferred indefinitely] | 2011-03-14 A | 2011-03-14 A |  | 0% → 100% | 221d → none |  |  |
| 251 | Gforge post [no longer applicable] | 2011-03-14 A | 2011-03-14 A |  | 0% → 100% | 221d → none |  |  |
| 254 | **General support to date (only large tasks called out)** |  | 2012-01-18 → 2012-01-31 (+13d) | 209d? → 218d | 93% → 94% | 6d → 0d |  |  |
| 298 | General support 1/9-1/13 | 2012-01-09 A | 2012-01-13 A |  | 0% → 100% | 9d → none |  | resources Prasad [10%] → Dan [20%]; Greg [10%] |
| 300 | **Patch scripts for repository migrations for released SDK versions** | 2012-01-05 A |  | 10d? → 10d | 0% → 75% | 6d → 9d | 296 → none | constraint start no earlier than 2012-01-05 → none |
| 308 | **Project Management to date (only large tasks called out)** |  | 2012-01-13 → 2012-01-31 (+18d) | 212d → 224d | 93% → 91% | 9d → 0d |  |  |
| 344 | General PM 1/9-1/13 | 2012-01-09 A | 2012-01-13 A |  | 0% → 100% | 9d → none |  | resources Greg [15%] → Greg [40%] |
| 345 | Project Summary Report |  | 2012-01-13 → 2012-01-23 (+10d) |  |  | 9d → 6d |  |  |
| 364 | Convert doc links from Gforge to JIRA | 2012-01-03 → 2011-01-13 (-355d) | 2012-01-05 → 2011-01-13 (-357d) | 3d? → 1d? |  | 15d → 265d |  | constraint start no earlier than 2012-01-03 → start no earlier than 2011-01-13 |

## Version 26 (saved 2012-01-24)

Note of the change: SVN-Revision: 1744

Last finish stays 2012-01-31. Complete tasks 233 → 242.

Added:

| ID | Task | Duration | Start | Finish | Predecessors | Constraint | Resources |
| --- | --- | --- | --- | --- | --- | --- | --- |
| 76 | **QA support 2011 "current" [stopped]** | 50d | 2011-07-18 A | 2011-09-27 A |  |  |  |
| 114 | **Configurable UPT enhancements (caArray - after 4.2.3 code freeze)** | 5d | 2012-01-19 A | 2012-01-25 |  |  |  |
| 115 | Design | 1d | 2012-01-19 A | 2012-01-19 A |  | start no earlier than 2012-01-19 |  |
| 116 | Implementation on top of CSM 4.2.3 code base | 2d | 2012-01-20 A | 2012-01-25 | 115 | start no earlier than 2012-01-19 |  |
| 119 | Automated installation and UI testing for UPT completed on earlier release candidates | 0d | 2012-01-17 A | 2012-01-17 A |  | start no earlier than 2012-01-17 |  |
| 122 | AppScan | 4d? | 2012-01-20 | 2012-01-25 |  | start no earlier than 2012-01-20 |  |
| 133 | Installation, smoke testing, and limited functional testing completed on earlier release candidates | 0d | 2012-01-24 A | 2012-01-24 A |  | start no earlier than 2012-01-24 |  |
| 220 | Release coordination [deferred] | 0d | 2012-01-24 A | 2012-01-24 A |  | start no earlier than 2012-01-24 |  |
| 351 | Support tracker confirmations | 4d | 2012-01-19 | 2012-01-27 |  | start no earlier than 2012-01-19 | Greg [15%] |
| 370 | 4.2.1 overlay | 1d? | 2011-01-13 | 2011-01-13 |  | start no earlier than 2011-01-13 |  |
| 371 | XMI Handler - Coordinate official 1.1 release | 1d? | 2011-01-13 | 2011-01-13 |  | start no earlier than 2011-01-13 |  |
| 372 | XMI Handler - Coordinate 1.2 release (tech stack upgrade)? | 1d? | 2011-01-13 | 2011-01-13 |  | start no earlier than 2011-01-13 |  |

Removed: 127 Explanation of code affected by Section 508 improvements; 214 Coordinate official 1.1 release; 215 Coordinate 1.2 release (tech stack upgrade)?

Changed:

| ID | Task | Start | Finish | Duration | Complete | Total float | Predecessors | Other |
| --- | --- | --- | --- | --- | --- | --- | --- | --- |
| 39 | **Technology stack upgrade to 2011 "current" and "future"** |  |  |  | 77% → 83% |  |  |  |
| 109 | **(QA support)** |  | 2012-01-17 → 2012-01-10 A (-7d) | 33d → 29d | 88% → 100% | 6d → none |  |  |
| 113 | UPT security improvements | 2012-01-11 A | 2012-01-17 → 2012-01-16 A (-1d) |  | 0% → 100% | 6d → none |  |  |
| 117 | **CSM 4.2.3 and SDK 4.4.1 Final QA and Release** | 2011-01-13 A |  |  |  |  |  |  |
| 118 | **CSM 4.2.3** | 2012-01-10 → 2012-01-17 A (+7d) |  | 16d → 11d? |  |  |  |  |
| 120 | Code freeze | 2012-01-17 A | 2012-01-17 A |  | 0% → 100% | 0d → none |  |  |
| 121 | QA - installation testing and functional testing | 2012-01-10 → 2012-01-24 (+14d) |  | 15d → 5d |  |  |  | was named QA; constraint start no earlier than 2012-01-10 → start no earlier than 2012-01-24 |
| 123 | QA report |  |  |  |  |  | 121 → 122, 121 |  |
| 124 | **Documentation and release activities** |  | 2012-01-30 → 2012-01-31 (+1d) | 5d → 6d |  |  |  | constraint finish no later than 2012-01-30 → none |
| 125 | User documentation (wiki) enhancements and review (primarily installation notes and caArray enhancement) |  |  |  |  | 0d → 1d | none → 195FS-5d | was named User documentation publication (?); constraint as late as possible → start no earlier than 2012-01-24 |
| 126 | Software bundle created (zip file) | 2012-01-24 → 2012-01-25 (+1d) | 2012-01-24 → 2012-01-25 (+1d) |  |  |  | none → 120 |  |
| 127 | GForge website updated (upload software bundle, release notes, documentation) | 2012-01-25 → 2012-01-26 (+1d) | 2012-01-25 → 2012-01-26 (+1d) |  |  |  |  |  |
| 128 | Javadocs deployment | 2012-01-26 → 2012-01-27 (+1d) | 2012-01-30 → 2012-01-31 (+1d) |  |  |  |  |  |
| 129 | NCICB website updates (including Download Center) | 2012-01-26 → 2012-01-27 (+1d) | 2012-01-30 → 2012-01-31 (+1d) |  |  |  |  |  |
| 130 | Release notes posted | 2012-01-30 → 2012-01-31 (+1d) | 2012-01-30 → 2012-01-31 (+1d) |  |  |  |  |  |
| 131 | Wiki page updates | 2012-01-30 → 2012-01-31 (+1d) | 2012-01-30 → 2012-01-31 (+1d) |  |  |  |  |  |
| 132 | **SDK 4.4.1** | 2012-01-10 → 2012-01-24 A (+14d) |  | 16d? → 6d |  |  |  |  |
| 135 | QA - installation and limited functional testing | 2012-01-10 → 2012-01-25 (+15d) |  | 15d → 4d |  |  |  | was named QA; constraint start no earlier than 2012-01-10 → start no earlier than 2012-01-25 |
| 138 | User documentation enhancements and review (primarily for section 508 compliance UI changes) |  |  |  |  |  |  | was named User documentation publication (?) |
| 139 | Software bundle created (zip file) |  |  |  |  |  | none → 134 |  |
| 181 | **Section 508 compliance** |  |  |  | 40% → 85% |  |  |  |
| 189 | SDK 4.4.1 compliance improvements | 2012-01-17 A |  |  | 0% → 80% | 6d → 5d |  | was named SDK compliance improvements; constraint start no earlier than 2012-01-12 → start no earlier than 2012-01-17 |
| 192 | CSM 4.2.3 | 2012-01-26 → 2012-01-27 (+1d) | 2012-01-27 → 2012-01-30 (+3d) |  |  |  |  |  |
| 195 | Convert CSM manual to WIKI | 2011-12-19 A |  |  | 0% → 96% |  |  |  |
| 218 | **XMI Handler** |  | 2011-09-01 → 2012-01-24 A (+145d) | 12d? → 108d | 17% → 100% | 102d → none |  |  |
| 258 | **General support to date (only large tasks called out)** |  |  |  | 94% → 97% |  |  |  |
| 303 | General support 1/16-1/20 | 2012-01-16 A | 2012-01-20 A |  | 0% → 100% | 7d → none |  | resources none → Greg [10%] |
| 304 | **Patch scripts for repository migrations for released SDK versions** |  | 2012-01-18 A |  | 75% → 100% | 9d → none |  |  |
| 307 | 4.3 and 4.4 overlays |  | 2012-01-18 A |  | 50% → 100% | 9d → none |  |  |
| 312 | **Project Management to date (only large tasks called out)** |  |  |  | 91% → 94% |  |  |  |
| 349 | General PM 1/17-1/20 | 2012-01-17 A | 2012-01-20 A |  | 0% → 100% | 7d → none |  | resources Greg [15%] → Greg [30%] |
| 350 | Project Summary Report | 2011-12-22 A | 2012-01-23 → 2012-01-25 (+2d) | 11d → 10d | 0% → 70% | 6d → 4d |  |  |
| 352 | General PM 1/23-1/27 |  |  |  |  |  |  | resources Greg [15%] → Greg [25%] |
| 353 | General PM 1/30-1/31 |  |  |  |  |  |  | resources Greg [15%] → Greg [35%] |
| 356 | **Other unplanned and deferred** |  |  |  |  |  |  | was named Other unplanned |
| 357 | ECCF compliance review and plan [not applicable] |  |  |  |  |  |  | was named ECCF compliance review and plan |

## Version 27 (saved 2012-02-01)

Note of the change: SVN-Revision: 1754

Last finish stays 2012-01-31. Complete tasks 242 → 269.

Added:

| ID | Task | Duration | Start | Finish | Constraint | Resources |
| --- | --- | --- | --- | --- | --- | --- |
| 130 | Post Tomcat installation instructions on KC | 1d? | 2012-01-30 A | 2012-01-30 A | start no earlier than 2012-01-30 |  |
| 151 | Merge recent CSM 4.2.3 and SDK 4.4.1 changes (to CSM 4.2.4 and SDK 4.5) | 1d? | 2012-01-30 | 2012-01-30 | start no earlier than 2012-01-30 |  |
| 310 | Additional testing and bug fixes | 2d | 2012-01-24 A | 2012-01-25 A | start no earlier than 2012-01-24 | Dan [50%] |

Changed:

| ID | Task | Start | Finish | Duration | Complete | Total float | Other |
| --- | --- | --- | --- | --- | --- | --- | --- |
| 39 | **Technology stack upgrade to 2011 "current" and "future"** |  |  |  | 83% → 95% |  |  |
| 114 | **Configurable UPT enhancements (caArray - after 4.2.3 code freeze)** |  | 2012-01-25 → 2012-01-26 A (+1d) | 5d → 6d | 67% → 100% | 4d → none |  |
| 115 | Design |  |  |  |  |  | resources none → Prasad |
| 116 | Implementation on top of CSM 4.2.3 code base |  | 2012-01-25 → 2012-01-26 A (+1d) | 2d → 3d | 50% → 100% | 4d → none | resources none → Prasad |
| 117 | **CSM 4.2.3 and SDK 4.4.1 Final QA and Release** |  |  |  | 0% → 88% |  |  |
| 118 | **CSM 4.2.3** |  |  |  | 0% → 92% |  |  |
| 121 | QA - installation testing and functional testing | 2012-01-24 A | 2012-01-30 A |  | 0% → 100% | 0d → none |  |
| 122 | AppScan | 2012-01-20 A | 2012-01-25 A |  | 0% → 100% | 3d → none |  |
| 124 | **Documentation and release activities** | 2012-01-24 A |  | 6d → 6d? | 0% → 94% |  |  |
| 125 | User documentation (wiki) enhancements and review (primarily installation notes and caArray enhancement) | 2012-01-24 A | 2012-01-30 → 2012-01-29 A (-1d) |  | 0% → 100% | 1d → none | constraint start no earlier than 2012-01-24 → finish no earlier than 2012-01-29; resources none → Greg [20%] |
| 126 | Software bundle created (zip file) | 2012-01-25 A | 2012-01-25 A |  | 0% → 100% | 0d → none |  |
| 127 | GForge website updated (upload software bundle, release notes, documentation) | 2012-01-26 → 2012-01-31 (+5d) | 2012-01-26 → 2012-01-31 (+5d) |  |  |  |  |
| 128 | Javadocs deployment | 2012-01-27 A | 2012-01-31 A |  | 0% → 100% | 0d → none |  |
| 129 | NCICB website updates (including Download Center) | 2012-01-27 A | 2012-01-31 A |  | 0% → 100% | 0d → none |  |
| 131 | Release notes posted | 2012-01-31 A | 2012-01-31 A |  | 0% → 100% | 0d → none |  |
| 132 | Wiki page updates | 2012-01-31 A | 2012-01-31 A |  | 0% → 100% | 0d → none |  |
| 133 | **SDK 4.4.1** |  |  |  | 0% → 90% |  |  |
| 135 | Code freeze | 2012-01-24 A | 2012-01-24 A |  | 0% → 100% | 0d → none |  |
| 136 | QA - installation and limited functional testing | 2012-01-25 A | 2012-01-30 A |  | 0% → 100% | 0d → none |  |
| 138 | **Documentation and release activities** | 2012-01-24 A |  |  | 0% → 93% |  |  |
| 139 | User documentation enhancements and review (primarily for section 508 compliance UI changes) | 2012-01-24 A | 2012-01-30 → 2012-01-29 A (-1d) |  | 0% → 100% | 0d → none | constraint as late as possible → finish no earlier than 2012-01-29; resources none → Greg [20%] |
| 140 | Software bundle created (zip file) | 2012-01-24 A | 2012-01-24 A |  | 0% → 100% | 0d → none |  |
| 141 | GForge website updated (upload software bundle, release notes, documentation) | 2012-01-25 → 2012-01-30 (+5d) | 2012-01-25 → 2012-01-30 (+5d) |  |  |  |  |
| 142 | Javadocs deployment | 2012-01-26 A | 2012-01-30 A |  | 0% → 100% | 0d → none |  |
| 143 | NCICB website updates (including Download Center) | 2012-01-26 A | 2012-01-30 A |  | 0% → 100% | 0d → none |  |
| 144 | Release notes posted | 2012-01-30 A | 2012-01-30 A |  | 0% → 100% | 0d → none |  |
| 145 | Wiki page updates | 2012-01-30 A | 2012-01-30 A |  | 0% → 100% | 0d → none |  |
| 183 | **Section 508 compliance** |  |  |  | 85% → 89% |  |  |
| 191 | SDK 4.4.1 compliance improvements |  | 2012-01-24 A |  | 80% → 100% | 5d → none |  |
| 193 | **Review collateral (readme, installer, etc.)** | 2012-01-26 → 2012-01-30 (+4d) |  | 4d → 2d |  |  |  |
| 194 | CSM 4.2.3 | 2012-01-27 → 2012-01-30 (+3d) | 2012-01-30 → 2012-01-31 (+1d) |  |  |  |  |
| 195 | SDK 4.4.1 | 2012-01-26 → 2012-01-30 (+4d) | 2012-01-27 → 2012-01-31 (+4d) |  |  |  |  |
| 197 | Convert CSM manual to WIKI |  | 2012-01-24 A |  | 96% → 100% | 5d → none |  |
| 260 | **General support to date (only large tasks called out)** |  | 2012-01-31 A |  | 97% → 100% | 0d → none |  |
| 306 | **Patch scripts for repository migrations for released SDK versions** |  | 2012-01-18 A → 2012-01-25 A (+7d) | 10d → 15d |  |  | resources Dan [25%] → none |
| 311 | General support 1/23-1/27 | 2012-01-23 A | 2012-01-27 A |  | 0% → 100% | 2d → none |  |
| 312 | General support 1/30-1/31 | 2012-01-30 A | 2012-01-31 A |  | 0% → 100% | 0d → none | resources none → Prasad [75%] |
| 315 | **Project Management to date (only large tasks called out)** |  | 2012-01-31 A |  | 94% → 100% | 0d → none |  |
| 353 | Project Summary Report |  | 2012-01-25 → 2012-01-31 A (+6d) | 10d → 15d | 70% → 100% | 4d → none |  |
| 354 | Support tracker confirmations | 2012-01-19 A | 2012-01-27 → 2012-01-31 A (+4d) | 4d → 5d | 0% → 100% | 2d → none |  |
| 355 | General PM 1/23-1/27 | 2012-01-23 A | 2012-01-27 A |  | 0% → 100% | 2d → none |  |
| 356 | General PM 1/30-1/31 | 2012-01-30 A | 2012-01-31 A |  | 0% → 100% | 0d → none | resources Greg [35%] → Greg [50%] |
